# 010101010010101001010101001010100101

How a schedule from MS Project MPX changed from version to version. A marks actual dates.

## Version 1 (saved 2019-08-19)

| ID | Task |
| --- | --- |
| 1 | CASA DE CAMPO |
| 2 | CASA DE CAMPO |
| 3 | NEGOCIACIÓN |
| 4 | Compra de terreno |
| 5 | Legalización |
| 6 | DISEÑO |
| 7 | Planos |
| 8 | Levantamiento de información |
| 9 | Elaboración planos |
| 10 | Permisos |
| 11 | Permisos Ambientales |
| 12 | Permisos de construcción |
| 13 | Permisos comunitarios |
| 14 | CONSTRUCCIÓN |
| 15 | Equipo y Materiales |
| 16 | Investigación |
| 17 | Compra |
| 18 | Entrega |
| 19 | Ejecución |
| 20 | Adecuación terreno |
| 21 | Limpieza y desbroce |
| 22 | Nivelación |
| 23 | Cerramiento |
| 24 | Acometidas |
| 25 | Estructura |
| 26 | Cimentación |
| 27 | Excavación |
| 28 | Fundición |
| 29 | Columnas |
| 30 | Encofrado |
| 31 | Fundición |
| 32 | Paredes |
| 33 | Levantamiento |
| 34 | manposteria |
| 35 | Instalación eléctrica |
| 36 | Ductos |
| 37 | Cables |
| 38 | Instalación sanitaria |
| 39 | Líneas desague |
| 40 | Tuberias AP |
| 41 | ENTREGA |
| 42 | Aceptación del producto |

## Version 2 (saved 2019-08-20)

Note of the change: up

Added:

| ID | Task |
| --- | --- |
| 3 | FASE 1: Implementación de Módulos de Servicio al Cliente (SC) y Atención al Ciudadano (AC) |
| 4 | ETAPA 1: Preparación del Proyecto e Instalación del SIIM - Módulos SC y AC |
| 5 | Actividades de Gestión del Proyecto |
| 14 | Entrega e Instalación del Software |
| 16 | 1 Dirección de Desarrollo Territorial (No incluye Catastro) |
| 17 | 4 Dirección de Justicia y Vigilancia |
| 18 | 5 Dirección de Desarrollo Humano y Social |
| 19 | 8.3 Rentas |
| 20 | 8.4 Tesorería |
| 21 | 9.1 Mercados |
| 22 | 9.2 Cementerio |
| 23 | 9.3 Camal |
| 24 | 10 Registro de la Propiedad y Mercantil |
| 25 | 11 Administración de bomberos |
| 26 | 12 CRM para ciudadanos. Ventanilla Única |
| 27 | 15.1 BI Desarrollo Territorial |
| 28 | 15.5 BI Obras Públicas Municipales |
| 29 | 15.7 BI Registro de la Propiedad y Mercantil |
| 30 | 16.1 Consultas Portal Web |
| 31 | 16.2 Aplicación para móviles (APP) |
| 32 | Entrega de Software |
| 33 | Revisar la ETAPA del Proyecto |
| 34 | HITO: FINALIZACION ETAPA 1 |
| 40 | Conducir Sesiones de Requerimientos |
| 41 | Crear Documento de Características del Entidad |
| 42 | Revisar el Documento de Características del Entidad |
| 43 | Revisar el Documento de Características del Entidad |
| 44 | Revisar el Plan del Proyecto |
| 45 | Revisar la ETAPA del Proyecto |
| 46 | HITO: FINALIZACION ETAPA 2 |
| 47 | ETAPA 3: Migración de Datos, Configuración y Pruebas de Operación - Módulos SC y AC |
| 48 | Gestión General del Proyecto |
| 49 | Planificar cambio Organizacional |
| 50 | Planificar Entrenamiento a Usuarios Finales |
| 51 | Definir y Preparar la Migración de Datos |
| 52 | Configuración del Sistema en Producción |
| 53 | Instalar el SIIM en Producción |
| 54 | Configurar Inicialización del Sistema |
| 55 | Realizar la Migración de Datos |
| 56 | Desarrollar Adaptaciones al Software |
| 57 | Configuración del Sistema en base al Documento de Características del Entidad |
| 58 | Configurar Interfaces |
| 59 | Configurar Usuarios y Autorizaciones |
| 60 | Gestión del Cambio Organizacional |
| 61 | Conducir la comunicación de la Gestión de Cambios (si es aplicable) |
| 62 | Pruebas de validación/aceptación del Sistema |
| 63 | Mantener la Lista Maestra de Procesos de Entidad |
| 64 | Conducir Talleres de Validación |
| 65 | 1 Dirección de Desarrollo Territorial (No incluye Catastro) |
| 66 | 4 Dirección de Justicia y Vigilancia |
| 67 | 5 Dirección de Desarrollo Humano y Social |
| 68 | 8.3 Rentas |
| 69 | 8.4 Tesorería |
| 70 | 9.1 Mercados |
| 71 | 9.2 Cementerio |
| 72 | 9.3 Camal |
| 73 | 10 Registro de la Propiedad y Mercantil |
| 74 | 11 Administración de bomberos |
| 75 | 12 CRM para ciudadanos. Ventanilla Única |
| 76 | 15.1 BI Desarrollo Territorial |
| 77 | 15.5 BI Obras Públicas Municipales |
| 78 | 15.7 BI Registro de la Propiedad y Mercantil |
| 79 | 16.1 Consultas Portal Web |
| 80 | 16.2 Aplicación para móviles (APP) |
| 81 | Pruebas de Aceptacion Sistema |
| 82 | Definir casos de prueba y alcance |
| 83 | Preparar ambiente de pruebas |
| 84 | Ejecutar el plan de pruebas de Aceptacion del Sistema |
| 85 | 1 Dirección de Desarrollo Territorial (No incluye Catastro) |
| 86 | 4 Dirección de Justicia y Vigilancia |
| 87 | 5 Dirección de Desarrollo Humano y Social |
| 88 | 8.3 Rentas |
| 89 | 8.4 Tesorería |
| 90 | 9.1 Mercados |
| 91 | 9.2 Cementerio |
| 92 | 9.3 Camal |
| 93 | 10 Registro de la Propiedad y Mercantil |
| 94 | 11 Administración de bomberos |
| 95 | 12 CRM para ciudadanos. Ventanilla Única |
| 96 | 15.1 BI Desarrollo Territorial |
| 97 | 15.5 BI Obras Públicas Municipales |
| 98 | 15.7 BI Registro de la Propiedad y Mercantil |
| 99 | 16.1 Consultas Portal Web |
| 100 | 16.2 Aplicación para móviles (APP) |
| 101 | Revisar los resultados de las pruebas y necesidades de cambios |
| 102 | Planificar Salida a Producción y Soporte |
| 103 | Definir Plan de Salida a Producción |
| 104 | Planificar Estrategia de Soporte |
| 105 | Planificar Administración del Sistema |
| 106 | Revisar la ETAPA del Proyecto |
| 107 | HITO: FINALIZACION ETAPA 3 |
| 108 | ETAPA 4: Preparación Final previo Despliegue en Producción - Módulos SC y AC |
| 109 | Gestión General del Proyecto |
| 110 | Confirmar el Plan de Entrenamiento |
| 111 | Finalizar plan de Salida a Producción |
| 112 | Entrenamiento en Modulos de Areas Funcionales Fase 1 |
| 113 | Entrenamiento de Usuarios Funcionales y Certificación de Procesos |
| 114 | 1 Dirección de Desarrollo Territorial (No incluye Catastro) |
| 115 | 4 Dirección de Justicia y Vigilancia |
| 116 | 5 Dirección de Desarrollo Humano y Social |
| 117 | 8.3 Rentas |
| 118 | 8.4 Tesorería |
| 119 | 9.1 Mercados |
| 120 | 9.2 Cementerio |
| 121 | 9.3 Camal |
| 122 | 10 Registro de la Propiedad y Mercantil |
| 123 | 11 Administración de bomberos |
| 124 | 12 CRM para ciudadanos. Ventanilla Única |
| 125 | 15.1 BI Desarrollo Territorial |
| 126 | 15.5 BI Obras Públicas Municipales |
| 127 | 15.7 BI Registro de la Propiedad y Mercantil |
| 128 | 16.1 Consultas Portal Web |
| 129 | 16.2 Aplicación para móviles (APP) |
| 130 | Entrenamiento de Usuario Técnicos |
| 131 | Preparación del Sistema |
| 132 | Completar la Administración del Sistema |
| 133 | Comprobación de la Puesta a Producción |
| 134 | Transición |
| 135 | Finalizar Procesamiento de Sistemas Legados |
| 136 | Realizar la Salida a Producción - Carga Inicial y Configuración Inicial |
| 137 | Revisar la ETAPA del Proyecto |
| 138 | HITO: FINALIZACION ETAPA 4 |
| 139 | ETAPA 5: Despliegue en Producción y Soporte Técnico - Módulos SC y AC |
| 140 | Soporte en Producción |
| 141 | Soporte durante la Salida a Producción |
| 142 | Resolver incidentes críticos |
| 143 | Entregar el soporte y Administración al cliente |
| 144 | Mejora Continua |
| 145 | Monitoreo del Sistema y Acompañamiento ETAPA1 |
| 146 | Ajustes y Configuraciones finales al Software acorde a necesidades Entidad |
| 147 | Cierre de la ETAPA 5 |
| 148 | Reunión de Cierre de la ETAPA 5 |
| 149 | HITO: FIN DE LA ETAPA 5 |
| 150 | ETAPA 6: Estabilización, Apoyo Emisión 2019 y Desarrollo de funcionalidades no establecidas en el Alcance Contractual |
| 151 | Depuración de Errores de Calidad de Información fuente migrada (Base Oracle) |
| 152 | Soporte y Mantenimiento de Módulos de la Fase 1 |
| 153 | Adaptaciones a Software para incluir Nuevas funcionalidades no contempladas en alcance proyecto |
| 154 | Implementación de Licencia temporal de Modulo de Catastro Urbano SIIM |
| 155 | Migración de información de Emisión de Impuestos de Catastro Urbano 2019 |
| 156 | Creación de interfaces mediante ETLs para integración entre Sistema Oracle y SIIM para la recaudación de Impuestos 2019 de Catastro Urbano |
| 157 | Soporte en Recaudación de Impuestos de Catastro urbano y mejoras 2019 |
| 158 | Cierre de la FASE 1 |
| 159 | Reunión de Cierre de la FASE 1 |
| 160 | HITO: FIN DE LA FASE 1 |
| 161 | FASE 2: Implementación de Módulos de Planificación de Recursos Institucionales - PRI |
| 162 | ETAPA 1: Instalación del SIIM - Módulos PRI |
| 163 | Entrega e Instalación del Software |
| 164 | Instalar SIIM en Servidor |
| 165 | Instalar Módulos PRI |
| 166 | 2.1 Administración Técnica |
| 167 | 2.2 Salud Ocupacional y Riesgos |
| 168 | 3.2 Adquisiciones |
| 169 | 6.1 Administración de Bienes |
| 170 | 8.1 Contabilidad |
| 171 | 8.2 Presupuestos |
| 172 | 13 CRM para Urbanizaciones |
| 173 | 14 Dirección de Planificación Institucional (Incluye control de proyectos de Obras Públicas |
| 174 | 15.6 Servicios Corporativos |
| 175 | 15.8 BI Planificación Institucional |
| 176 | Entrega de Software |
| 177 | Revisar la ETAPA del Proyecto |
| 178 | HITO: FINALIZACION ETAPA 1 |
| 179 | ETAPA 2: Levantamiento de Características Institucionales - Módulos PRI |
| 180 | Actividades de Gestión del Proyecto |
| 181 | Revisión del Plan del Proyecto |
| 182 | Programar talleres de requerimientos de Entidad |
| 183 | Sesiones de Requerimientos del Entidad |
| 184 | Conducir Sesiones de Requerimientos |
| 185 | Crear Documento de Características del Entidad |
| 186 | Revisar el Documento de Características del Entidad |
| 187 | Revisar el Documento de Características del Entidad |
| 188 | Revisar el Plan del Proyecto |
| 189 | Revisar la ETAPA del Proyecto |
| 190 | HITO: FINALIZACION ETAPA 2 |
| 191 | ETAPA 3: Migración de Datos, Configuración y Pruebas de Operación de Módulos - Módulos PRI |
| 192 | Gestión General del Proyecto |
| 193 | Planificar cambio Organizacional |
| 194 | Planificar Entrenamiento a Usuarios Finales |
| 195 | Definir y Preparar la Migración de Datos |
| 196 | Configuración del Sistema en Producción |
| 197 | Instalar el SIIM en Producción |
| 198 | Configurar Inicialización del Sistema |
| 199 | Realizar la Migración de Datos |
| 200 | Desarrollar Adaptaciones al Software |
| 201 | Configuración del Sistema en base al Documento de Características del Entidad |
| 202 | Configurar Interfaces |
| 203 | Configurar Usuarios y Autorizaciones |
| 204 | Gestión del Cambio Organizacional |
| 205 | Conducir la comunicación de la Gestión de Cambios (si es aplicable) |
| 206 | Pruebas de validación del Sistema |
| 207 | Mantener la Lista Maestra de Procesos de Entidad |
| 208 | Conducir Talleres de Validación |
| 209 | 2.1 Administración Técnica |
| 210 | 2.2 Salud Ocupacional y Riesgos |
| 211 | 3.2 Adquisiciones |
| 212 | 6.1 Administración de Bienes |
| 213 | 8.1 Contabilidad |
| 214 | 8.2 Presupuestos |
| 215 | 13 CRM para Urbanizaciones |
| 216 | 14 Dirección de Planificación Institucional (Incluye control de proyectos de Obras Públicas) |
| 217 | 15.6 BI Servicios Corporativos |
| 218 | 15.8 BI Planificación Institucional |
| 219 | Pruebas de aceptacion del Sistema |
| 220 | Definir casos de prueba y alcance |
| 221 | Preparar ambiente de pruebas |
| 222 | Ejecutar el plan de pruebas |
| 223 | 2.1 Administración Técnica |
| 224 | 2.2 Salud Ocupacional y Riesgos |
| 225 | 3.2 Adquisiciones |
| 226 | 6.1 Administración de Bienes |
| 227 | 8.1 Contabilidad |
| 228 | 8.2 Presupuestos |
| 229 | 13 CRM para Urbanizaciones |
| 230 | 14 Dirección de Planificación Institucional (Incluye control de proyectos de Obras Públicas) |
| 231 | 15.6 BI Servicios Corporativos |
| 232 | 15.8 BI Planificación Institucional |
| 233 | Revisar los resultados de las pruebas y necesidades de cambios |
| 234 | Planificar Salida a Producción y Soporte |
| 235 | Definir Plan de Salida a Producción |
| 236 | Planificar Estrategia de Soporte |
| 237 | Planificar Administración del Sistema |
| 238 | Revisar la ETAPA del Proyecto |
| 239 | HITO: FINALIZACION ETAPA 3 |
| 240 | ETAPA 4: Preparación Final previo Despliegue en Producción - Módulos PRI |
| 241 | Gestión General del Proyecto |
| 242 | Confirmar el Plan de Entrenamiento |
| 243 | Finalizar plan de Salida a Producción |
| 244 | Entrenamiento |
| 245 | Entrenamiento de Usuarios Funcionales y Certificación de Procesos |
| 246 | 2.1 Administración Técnica |
| 247 | 2.2 Salud Ocupacional y Riesgos |
| 248 | 3.2 Adquisiciones |
| 249 | 6.1 Administración de Bienes |
| 250 | 8.1 Contabilidad |
| 251 | 8.2 Presupuestos |
| 252 | 13 CRM para Urbanizaciones |
| 253 | 14 Dirección de Planificación Institucional (Incluye control de proyectos de Obras Públicas) |
| 254 | 15.6 BI Servicios Corporativos |
| 255 | 15.8 BI Planificación Institucional |
| 256 | Entrenamiento de Usuario Técnicos |
| 257 | Preparación del Sistema |
| 258 | Completar la Administración del Sistema |
| 259 | Comprobación de la Puesta a Producción |
| 260 | Transición |
| 261 | Finalizar Procesamiento de Sistemas Legados |
| 262 | Realizar la Salida a Producción - Carga Inicial y Configuración Inicial |
| 263 | Revisar la ETAPA del Proyecto |
| 264 | HITO: FINALIZACION ETAPA 4 |
| 265 | ETAPA 5: Despliegue en Producción y Soporte Técnico - Módulos PRI |
| 266 | Soporte en Producción |
| 267 | Soporte durante la Salida a Producción |
| 268 | Resolver incidentes críticos |
| 269 | Entregar el soporte y Administración al cliente |
| 270 | Mejora Continua |
| 271 | Monitoreo del Sistema y Acompañamiento ETAPA2 |
| 272 | Ajustes y Configuraciones finales al Software acorde a necesidades Entidad |
| 273 | Cierre de la FASE 2 |
| 274 | Reunión de Cierre de la FASE 2 |
| 275 | HITO: FIN DE LA FASE 2 |
| 276 | FASE 3: Implementación de Módulos de Planificación de Recursos Institucionales - PRI |
| 277 | ETAPA 1: Instalación del SIIM - Módulos PRI |
| 278 | Entrega e Instalación del Software |
| 279 | Instalar SIIM en Servidor |
| 280 | Instalar Módulos PRI |
| 281 | Entrega de Software |
| 282 | Revisar la ETAPA del Proyecto |
| 283 | HITO: FINALIZACION ETAPA 1 |
| 284 | ETAPA 2: Levantamiento de Características Institucionales - Módulos PRI |
| 285 | Actividades de Gestión del Proyecto |
| 286 | Revisión del Plan del Proyecto |
| 287 | Programar talleres de requerimientos de Entidad |
| 288 | Sesiones de Requerimientos del Entidad |
| 289 | Conducir Sesiones de Requerimientos |
| 290 | Crear Documento de Características del Entidad |
| 291 | Revisar el Documento de Características del Entidad |
| 292 | Revisar el Documento de Características del Entidad |
| 293 | Revisar el Plan del Proyecto |
| 294 | Revisar la ETAPA del Proyecto |
| 295 | HITO: FINALIZACION ETAPA 2 |
| 296 | ETAPA 3: Migración de Datos, Configuración y Pruebas de Operación de Módulos - Módulos PRI |
| 297 | Gestión General del Proyecto |
| 298 | Planificar cambio Organizacional |
| 299 | Planificar Entrenamiento a Usuarios Finales |
| 300 | Definir y Preparar la Migración de Datos |
| 301 | Configuración del Sistema en Producción |
| 302 | Instalar el SIIM en Producción |
| 303 | Configurar Inicialización del Sistema |
| 304 | Realizar la Migración de Datos |
| 305 | Desarrollar Adaptaciones al Software |
| 306 | Configuración del Sistema en base al Documento de Características del Entidad |
| 307 | Configurar Interfaces |
| 308 | Configurar Usuarios y Autorizaciones |
| 309 | Gestión del Cambio Organizacional |
| 310 | Conducir la comunicación de la Gestión de Cambios (si es aplicable) |
| 311 | Pruebas de validación/aceptación del Sistema |
| 312 | Mantener la Lista Maestra de Procesos de Entidad |
| 313 | Conducir Talleres de Validación |
| 314 | 3.1 Compras Públicas |
| 315 | 6.2 Servicios Generales |
| 316 | 8.5 Gestión Jurídica - Financiera |
| 317 | 15.2 BI Financiero |
| 318 | 15.3 BI Administración del Talento Humano |
| 319 | 15.4 BI Compras Públicas |
| 320 | 15.9 Tablero de Control |
| 321 | Pruebas de aceptacion del Sistema |
| 322 | Definir casos de prueba y alcance |
| 323 | Preparar ambiente de pruebas |
| 324 | Ejecutar el plan de pruebas |
| 325 | 3.1 Compras Públicas |
| 326 | 6.2 Servicios Generales |
| 327 | 8.5 Gestión Jurídica - Financiera |
| 328 | 15.2 BI Financiero |
| 329 | 15.3 BI Administración del Talento Humano |
| 330 | 15.4 BI Compras Públicas |
| 331 | 15.9 Tablero de Control |
| 332 | Revisar los resultados de las pruebas y necesidades de cambios |
| 333 | Planificar Salida a Producción y Soporte |
| 334 | Definir Plan de Salida a Producción |
| 335 | Planificar Estrategia de Soporte |
| 336 | Planificar Administración del Sistema |
| 337 | Revisar la ETAPA del Proyecto |
| 338 | HITO: FINALIZACION ETAPA 3 |
| 339 | ETAPA 4: Preparación Final previo Despliegue en Producción - Módulos PRI |
| 340 | Gestión General del Proyecto |
| 341 | Confirmar el Plan de Entrenamiento |
| 342 | Finalizar plan de Salida a Producción |
| 343 | Entrenamiento |
| 344 | Entrenamiento de Usuarios Funcionales y Certificación de Procesos |
| 345 | 3.1 Compras Públicas |
| 346 | 6.2 Servicios Generales |
| 347 | 8.5 Gestión Jurídica - Financiera |
| 348 | 15.2 BI Financiero |
| 349 | 15.3 BI Administración del Talento Humano |
| 350 | 15.4 BI Compras Públicas |
| 351 | 15.9 Tablero de Control |
| 352 | Entrenamiento de Usuario Técnicos |
| 353 | Preparación del Sistema |
| 354 | Completar la Administración del Sistema |
| 355 | Comprobación de la Puesta a Producción |
| 356 | Transición |
| 357 | Finalizar Procesamiento de Sistemas Legados |
| 358 | Realizar la Salida a Producción - Carga Inicial y Configuración Inicial |
| 359 | Revisar la ETAPA del Proyecto |
| 360 | HITO: FINALIZACION ETAPA 4 |
| 361 | ETAPA 5: Despliegue en Producción y Soporte Técnico - Módulos PRI |
| 362 | Soporte en Producción |
| 363 | Soporte durante la Salida a Producción |
| 364 | Resolver incidentes críticos |
| 365 | Entregar el soporte y Administración al cliente |
| 366 | Mejora Continua |
| 367 | Monitoreo del Sistema y Acompañamiento |
| 368 | Ajustes y Configuraciones finales al Software acorde a necesidades Entidad |
| 369 | Cierre de la FASE 3 y Proyecto |
| 370 | Reunión de Cierre de la FASE 3 y Proyecto |
| 371 | HITO: FIN DE LA FASE 3 y Proyecto |

Removed: 2 CASA DE CAMPO; 3 NEGOCIACIÓN; 4 Compra de terreno; 7 Planos; 8 Levantamiento de información; 9 Elaboración planos; 10 Permisos; 11 Permisos Ambientales; 12 Permisos de construcción; 13 Permisos comunitarios; 14 CONSTRUCCIÓN; 15 Equipo y Materiales; 16 Investigación; 30 Encofrado; 31 Fundición; 32 Paredes; 33 Levantamiento; 34 manposteria; 35 Instalación eléctrica; 36 Ductos; 37 Cables; 38 Instalación sanitaria; 39 Líneas desague; 40 Tuberias AP; 41 ENTREGA; 42 Aceptación del producto

Changed:

| ID | Task | Other |
| --- | --- | --- |
| 1 | 20190122- Plan del Proyecto de Implementacion del SIIM Daule | was named CASA DE CAMPO |
| 2 | Programa de Implementación SIIM | was named Legalización |
| 6 | Revisión de Información de Contrato y Anexos | was named DISEÑO |
| 7 | Definir la Organización del Proyecto | was named Compra |
| 8 | Kick-off Interno del Proyecto | was named Entrega |
| 9 | Preparación del kick-off del Proyecto | was named Ejecución |
| 10 | Comunicación con el Cliente | was named Adecuación terreno |
| 11 | Crear la presentación del kick-off | was named Limpieza y desbroce |
| 12 | Reunión de Kick-off | was named Nivelación |
| 13 | Realizar la reunión de kick-off | was named Cerramiento |
| 15 | Instalar SIIM en Servidor | was named Cimentación |
| 35 | ETAPA 2: Levantamiento de Características Institucionales - Módulos SC y AC | was named Acometidas |
| 36 | Actividades de Gestión del Proyecto | was named Estructura |
| 37 | Revisión del Plan del Proyecto | was named Excavación |
| 38 | Programar talleres de requerimientos de Entidad | was named Fundición |
| 39 | Sesiones de Requerimientos del Entidad | was named Columnas |

## Version 3 (saved 2019-08-21)

Note of the change: up

Last finish none → 2019-07-10.

Changed:

| ID | Task | Start | Finish | Predecessors |
| --- | --- | --- | --- | --- |
| 1 | 20190122- Plan del Proyecto de Implementacion del SIIM Daule | none → 2018-07-16 A | none → 2019-07-10 A |  |
| 2 | Programa de Implementación SIIM | none → 2018-07-16 A | none → 2019-07-10 A |  |
| 3 | FASE 1: Implementación de Módulos de Servicio al Cliente (SC) y Atención al Ciudadano (AC) | none → 2018-07-16 A | none → 2019-01-25 A |  |
| 4 | ETAPA 1: Preparación del Proyecto e Instalación del SIIM - Módulos SC y AC | none → 2018-07-16 A | none → 2018-07-25 A |  |
| 5 | Actividades de Gestión del Proyecto | none → 2018-07-16 A | none → 2018-07-18 A |  |
| 6 | Revisión de Información de Contrato y Anexos | none → 2018-07-16 A | none → 2018-07-16 A |  |
| 7 | Definir la Organización del Proyecto | none → 2018-07-16 A | none → 2018-07-17 A | none → 6FF |
| 8 | Kick-off Interno del Proyecto | none → 2018-07-17 A | none → 2018-07-18 A | none → 7FF |
| 9 | Preparación del kick-off del Proyecto | none → 2018-07-18 A | none → 2018-07-19 A |  |
| 10 | Comunicación con el Cliente | none → 2018-07-18 A | none → 2018-07-18 A | none → 8FF |
| 11 | Crear la presentación del kick-off | none → 2018-07-18 A | none → 2018-07-19 A | none → 10FF |
| 12 | Reunión de Kick-off | none → 2018-07-19 A | none → 2018-07-19 A |  |
| 13 | Realizar la reunión de kick-off | none → 2018-07-19 A | none → 2018-07-19 A | none → 11FF |
| 14 | Entrega e Instalación del Software | none → 2018-07-19 A | none → 2018-07-25 A |  |
| 15 | Instalar SIIM en Servidor | none → 2018-07-19 A | none → 2018-07-24 A | none → 12FF |
| 16 | 1 Dirección de Desarrollo Territorial (No incluye Catastro) | none → 2018-07-19 A | none → 2018-07-19 A |  |
| 17 | 4 Dirección de Justicia y Vigilancia | none → 2018-07-19 A | none → 2018-07-19 A | none → 16FF |
| 18 | 5 Dirección de Desarrollo Humano y Social | none → 2018-07-19 A | none → 2018-07-20 A | none → 17FF |
| 19 | 8.3 Rentas | none → 2018-07-20 A | none → 2018-07-20 A | none → 18FF |
| 20 | 8.4 Tesorería | none → 2018-07-20 A | none → 2018-07-20 A | none → 19FF |
| 21 | 9.1 Mercados | none → 2018-07-20 A | none → 2018-07-20 A | none → 20FF |
| 22 | 9.2 Cementerio | none → 2018-07-20 A | none → 2018-07-20 A | none → 21FF |
| 23 | 9.3 Camal | none → 2018-07-20 A | none → 2018-07-20 A | none → 22FF |
| 24 | 10 Registro de la Propiedad y Mercantil | none → 2018-07-20 A | none → 2018-07-23 A | none → 23FF |
| 25 | 11 Administración de bomberos | none → 2018-07-23 A | none → 2018-07-23 A | none → 24FF |
| 26 | 12 CRM para ciudadanos. Ventanilla Única | none → 2018-07-23 A | none → 2018-07-23 A | none → 25FF |
| 27 | 15.1 BI Desarrollo Territorial | none → 2018-07-23 A | none → 2018-07-23 A | none → 26FF |
| 28 | 15.5 BI Obras Públicas Municipales | none → 2018-07-23 A | none → 2018-07-24 A | none → 27FF |
| 29 | 15.7 BI Registro de la Propiedad y Mercantil | none → 2018-07-24 A | none → 2018-07-24 A | none → 28FF |
| 30 | 16.1 Consultas Portal Web | none → 2018-07-24 A | none → 2018-07-24 A | none → 29FF |
| 31 | 16.2 Aplicación para móviles (APP) | none → 2018-07-24 A | none → 2018-07-24 A | none → 30FF |
| 32 | Entrega de Software | none → 2018-07-24 A | none → 2018-07-25 A | none → 15FF |
| 33 | Revisar la ETAPA del Proyecto | none → 2018-07-25 A | none → 2018-07-25 A | none → 14FF |
| 34 | HITO: FINALIZACION ETAPA 1 | none → 2018-07-25 A | none → 2018-07-25 A | none → 33FF |
| 35 | ETAPA 2: Levantamiento de Características Institucionales - Módulos SC y AC | none → 2018-07-25 A | none → 2018-08-13 A | none → 4FF |
| 36 | Actividades de Gestión del Proyecto | none → 2018-07-25 A | none → 2018-07-26 A |  |
| 37 | Revisión del Plan del Proyecto | none → 2018-07-25 A | none → 2018-07-26 A | none → 33FF |
| 38 | Programar talleres de requerimientos de Entidad | none → 2018-07-26 A | none → 2018-07-26 A | none → 37FF |
| 39 | Sesiones de Requerimientos del Entidad | none → 2018-07-26 A | none → 2018-08-10 A |  |
| 40 | Conducir Sesiones de Requerimientos | none → 2018-07-26 A | none → 2018-08-08 A | none → 38FF |
| 41 | Crear Documento de Características del Entidad | none → 2018-08-08 A | none → 2018-08-10 A | none → 40FF |
| 42 | Revisar el Documento de Características del Entidad | none → 2018-08-10 A | none → 2018-08-10 A |  |
| 43 | Revisar el Documento de Características del Entidad | none → 2018-08-10 A | none → 2018-08-10 A | none → 41FF |
| 44 | Revisar el Plan del Proyecto | none → 2018-08-10 A | none → 2018-08-10 A | none → 43FF |
| 45 | Revisar la ETAPA del Proyecto | none → 2018-08-10 A | none → 2018-08-13 A | none → 42FF |
| 46 | HITO: FINALIZACION ETAPA 2 | none → 2018-08-13 A | none → 2018-08-13 A | none → 45FF |
| 47 | ETAPA 3: Migración de Datos, Configuración y Pruebas de Operación - Módulos SC y AC | none → 2018-08-13 A | none → 2018-10-22 A | none → 35FF |
| 48 | Gestión General del Proyecto | none → 2018-08-13 A | none → 2018-08-14 A |  |
| 49 | Planificar cambio Organizacional | none → 2018-08-13 A | none → 2018-08-14 A | none → 45FF |
| 50 | Planificar Entrenamiento a Usuarios Finales | none → 2018-08-14 A | none → 2018-08-14 A | none → 49FF |
| 51 | Definir y Preparar la Migración de Datos | none → 2018-08-14 A | none → 2018-08-14 A | none → 49FF |
| 52 | Configuración del Sistema en Producción | none → 2018-08-14 A | none → 2018-10-22 A |  |
| 53 | Instalar el SIIM en Producción | none → 2018-08-14 A | none → 2018-08-15 A | none → 51FF |
| 54 | Configurar Inicialización del Sistema | none → 2018-08-15 A | none → 2018-08-16 A | none → 53FF |
| 55 | Realizar la Migración de Datos | none → 2018-08-16 A | none → 2018-10-22 A | none → 54FF |
| 56 | Desarrollar Adaptaciones al Software | none → 2018-08-16 A | none → 2018-08-28 A | none → 54FF |
| 57 | Configuración del Sistema en base al Documento de Características del Entidad | none → 2018-08-28 A | none → 2018-08-31 A | none → 56FF |
| 58 | Configurar Interfaces | none → 2018-08-31 A | none → 2018-09-03 A | none → 57FF |
| 59 | Configurar Usuarios y Autorizaciones | none → 2018-09-03 A | none → 2018-09-04 A | none → 58FF |
| 60 | Gestión del Cambio Organizacional | none → 2018-09-04 A | none → 2018-09-05 A |  |
| 61 | Conducir la comunicación de la Gestión de Cambios (si es aplicable) | none → 2018-09-04 A | none → 2018-09-05 A | none → 59FF |
| 62 | Pruebas de validación/aceptación del Sistema | none → 2018-09-05 A | none → 2018-09-10 A |  |
| 63 | Mantener la Lista Maestra de Procesos de Entidad | none → 2018-09-05 A | none → 2018-09-05 A | none → 61FF |
| 64 | Conducir Talleres de Validación | none → 2018-09-05 A | none → 2018-09-10 A | none → 63FF |
| 65 | 1 Dirección de Desarrollo Territorial (No incluye Catastro) | none → 2018-09-05 A | none → 2018-09-05 A |  |
| 66 | 4 Dirección de Justicia y Vigilancia | none → 2018-09-05 A | none → 2018-09-05 A | none → 65FF |
| 67 | 5 Dirección de Desarrollo Humano y Social | none → 2018-09-05 A | none → 2018-09-05 A | none → 66FF |
| 68 | 8.3 Rentas | none → 2018-09-05 A | none → 2018-09-06 A | none → 67FF |
| 69 | 8.4 Tesorería | none → 2018-09-06 A | none → 2018-09-06 A | none → 68FF |
| 70 | 9.1 Mercados | none → 2018-09-06 A | none → 2018-09-06 A | none → 69FF |

| ID | Task | Start | Finish | Predecessors |
| --- | --- | --- | --- | --- |
| 71 | 9.2 Cementerio | none → 2018-09-06 A | none → 2018-09-06 A | none → 70FF |
| 72 | 9.3 Camal | none → 2018-09-06 A | none → 2018-09-06 A | none → 71FF |
| 73 | 10 Registro de la Propiedad y Mercantil | none → 2018-09-06 A | none → 2018-09-07 A | none → 72FF |
| 74 | 11 Administración de bomberos | none → 2018-09-07 A | none → 2018-09-07 A | none → 73FF |
| 75 | 12 CRM para ciudadanos. Ventanilla Única | none → 2018-09-07 A | none → 2018-09-07 A | none → 74FF |
| 76 | 15.1 BI Desarrollo Territorial | none → 2018-09-07 A | none → 2018-09-07 A | none → 75FF |
| 77 | 15.5 BI Obras Públicas Municipales | none → 2018-09-07 A | none → 2018-09-07 A | none → 76FF |
| 78 | 15.7 BI Registro de la Propiedad y Mercantil | none → 2018-09-07 A | none → 2018-09-07 A | none → 77FF |
| 79 | 16.1 Consultas Portal Web | none → 2018-09-07 A | none → 2018-09-07 A | none → 78FF |
| 80 | 16.2 Aplicación para móviles (APP) | none → 2018-09-07 A | none → 2018-09-10 A | none → 79FF |
| 81 | Pruebas de Aceptacion Sistema | none → 2018-09-10 A | none → 2018-09-14 A |  |
| 82 | Definir casos de prueba y alcance | none → 2018-09-10 A | none → 2018-09-10 A | none → 80FF, 31FF |
| 83 | Preparar ambiente de pruebas | none → 2018-09-10 A | none → 2018-09-11 A | none → 82FF |
| 84 | Ejecutar el plan de pruebas de Aceptacion del Sistema | none → 2018-09-11 A | none → 2018-09-13 A | none → 83FF |
| 85 | 1 Dirección de Desarrollo Territorial (No incluye Catastro) | none → 2018-09-11 A | none → 2018-09-11 A |  |
| 86 | 4 Dirección de Justicia y Vigilancia | none → 2018-09-11 A | none → 2018-09-11 A | none → 85FF |
| 87 | 5 Dirección de Desarrollo Humano y Social | none → 2018-09-11 A | none → 2018-09-11 A | none → 86FF |
| 88 | 8.3 Rentas | none → 2018-09-11 A | none → 2018-09-12 A | none → 87FF |
| 89 | 8.4 Tesorería | none → 2018-09-12 A | none → 2018-09-12 A | none → 88FF |
| 90 | 9.1 Mercados | none → 2018-09-12 A | none → 2018-09-12 A | none → 89FF |
| 91 | 9.2 Cementerio | none → 2018-09-12 A | none → 2018-09-12 A | none → 90FF |
| 92 | 9.3 Camal | none → 2018-09-12 A | none → 2018-09-12 A | none → 91FF |
| 93 | 10 Registro de la Propiedad y Mercantil | none → 2018-09-12 A | none → 2018-09-12 A | none → 92FF |
| 94 | 11 Administración de bomberos | none → 2018-09-12 A | none → 2018-09-13 A | none → 93FF |
| 95 | 12 CRM para ciudadanos. Ventanilla Única | none → 2018-09-13 A | none → 2018-09-13 A | none → 94FF |
| 96 | 15.1 BI Desarrollo Territorial | none → 2018-09-13 A | none → 2018-09-13 A | none → 95FF |
| 97 | 15.5 BI Obras Públicas Municipales | none → 2018-09-13 A | none → 2018-09-13 A | none → 96FF |
| 98 | 15.7 BI Registro de la Propiedad y Mercantil | none → 2018-09-13 A | none → 2018-09-13 A | none → 97FF |
| 99 | 16.1 Consultas Portal Web | none → 2018-09-13 A | none → 2018-09-13 A | none → 98FF |
| 100 | 16.2 Aplicación para móviles (APP) | none → 2018-09-13 A | none → 2018-09-13 A | none → 99FF |
| 101 | Revisar los resultados de las pruebas y necesidades de cambios | none → 2018-09-13 A | none → 2018-09-14 A | none → 100FF, 80FF, 31FF |
| 102 | Planificar Salida a Producción y Soporte | none → 2018-09-14 A | none → 2018-09-17 A |  |
| 103 | Definir Plan de Salida a Producción | none → 2018-09-14 A | none → 2018-09-17 A | none → 101FF |
| 104 | Planificar Estrategia de Soporte | none → 2018-09-14 A | none → 2018-09-17 A | none → 101FF |
| 105 | Planificar Administración del Sistema | none → 2018-09-14 A | none → 2018-09-17 A | none → 101FF |
| 106 | Revisar la ETAPA del Proyecto | none → 2018-09-17 A | none → 2018-09-17 A | none → 102FF |
| 107 | HITO: FINALIZACION ETAPA 3 | none → 2018-09-17 A | none → 2018-09-17 A | none → 106FF |
| 108 | ETAPA 4: Preparación Final previo Despliegue en Producción - Módulos SC y AC | none → 2018-09-17 A | none → 2018-10-11 A |  |
| 109 | Gestión General del Proyecto | none → 2018-09-17 A | none → 2018-09-18 A |  |
| 110 | Confirmar el Plan de Entrenamiento | none → 2018-09-17 A | none → 2018-09-18 A | none → 106FF |
| 111 | Finalizar plan de Salida a Producción | none → 2018-09-18 A | none → 2018-09-18 A | none → 110FF |
| 112 | Entrenamiento en Modulos de Areas Funcionales Fase 1 | none → 2018-09-18 A | none → 2018-10-08 A | none → 109FF |
| 113 | Entrenamiento de Usuarios Funcionales y Certificación de Procesos | none → 2018-09-18 A | none → 2018-10-02 A | none → 111FF |
| 114 | 1 Dirección de Desarrollo Territorial (No incluye Catastro) | none → 2018-09-18 A | none → 2018-09-19 A |  |
| 115 | 4 Dirección de Justicia y Vigilancia | none → 2018-09-19 A | none → 2018-09-20 A | none → 114FF |
| 116 | 5 Dirección de Desarrollo Humano y Social | none → 2018-09-20 A | none → 2018-09-21 A | none → 115FF |
| 117 | 8.3 Rentas | none → 2018-09-21 A | none → 2018-09-21 A | none → 116FF |
| 118 | 8.4 Tesorería | none → 2018-09-21 A | none → 2018-09-24 A | none → 117FF |
| 119 | 9.1 Mercados | none → 2018-09-24 A | none → 2018-09-25 A | none → 118FF |
| 120 | 9.2 Cementerio | none → 2018-09-25 A | none → 2018-09-25 A | none → 119FF |
| 121 | 9.3 Camal | none → 2018-09-25 A | none → 2018-09-26 A | none → 120FF |
| 122 | 10 Registro de la Propiedad y Mercantil | none → 2018-09-26 A | none → 2018-09-26 A | none → 121FF |
| 123 | 11 Administración de bomberos | none → 2018-09-27 A | none → 2018-09-27 A | none → 122FF |
| 124 | 12 CRM para ciudadanos. Ventanilla Única | none → 2018-09-27 A | none → 2018-09-28 A | none → 123FF |
| 125 | 15.1 BI Desarrollo Territorial | none → 2018-09-28 A | none → 2018-09-28 A | none → 124FF |
| 126 | 15.5 BI Obras Públicas Municipales | none → 2018-09-28 A | none → 2018-10-01 A | none → 125FF |
| 127 | 15.7 BI Registro de la Propiedad y Mercantil | none → 2018-10-01 A | none → 2018-10-01 A | none → 126FF |
| 128 | 16.1 Consultas Portal Web | none → 2018-10-01 A | none → 2018-10-02 A | none → 127FF |
| 129 | 16.2 Aplicación para móviles (APP) | none → 2018-10-02 A | none → 2018-10-02 A | none → 128FF |
| 130 | Entrenamiento de Usuario Técnicos | none → 2018-10-02 A | none → 2018-10-08 A | none → 129FF, 100FF, 80FF, 31FF |
| 131 | Preparación del Sistema | none → 2018-10-08 A | none → 2018-10-09 A | none → 112FF |
| 132 | Completar la Administración del Sistema | none → 2018-10-08 A | none → 2018-10-08 A |  |
| 133 | Comprobación de la Puesta a Producción | none → 2018-10-08 A | none → 2018-10-09 A | none → 132FF |
| 134 | Transición | none → 2018-10-09 A | none → 2018-10-11 A | none → 131FF |
| 135 | Finalizar Procesamiento de Sistemas Legados | none → 2018-10-09 A | none → 2018-10-09 A |  |
| 136 | Realizar la Salida a Producción - Carga Inicial y Configuración Inicial | none → 2018-10-09 A | none → 2018-10-11 A | none → 135FF |
| 137 | Revisar la ETAPA del Proyecto | none → 2018-10-11 A | none → 2018-10-11 A | none → 134FF |
| 138 | HITO: FINALIZACION ETAPA 4 | none → 2018-10-11 A | none → 2018-10-11 A | none → 137FF |
| 139 | ETAPA 5: Despliegue en Producción y Soporte Técnico - Módulos SC y AC | none → 2018-10-11 A | none → 2018-11-16 A | none → 108FF |
| 140 | Soporte en Producción | none → 2018-10-11 A | none → 2018-11-16 A |  |

| ID | Task | Start | Finish | Predecessors |
| --- | --- | --- | --- | --- |
| 141 | Soporte durante la Salida a Producción | none → 2018-10-11 A | none → 2018-11-16 A | none → 137FF |
| 142 | Resolver incidentes críticos | none → 2018-10-11 A | none → 2018-11-05 A | none → 137FF |
| 143 | Entregar el soporte y Administración al cliente | none → 2018-10-11 A | none → 2018-10-12 A |  |
| 144 | Mejora Continua | none → 2018-10-11 A | none → 2018-10-24 A |  |
| 145 | Monitoreo del Sistema y Acompañamiento ETAPA1 | none → 2018-10-11 A | none → 2018-10-24 A | none → 137FF |
| 146 | Ajustes y Configuraciones finales al Software acorde a necesidades Entidad | none → 2018-10-11 A | none → 2018-10-24 A | none → 137FF |
| 147 | Cierre de la ETAPA 5 | none → 2018-10-24 A | none → 2018-10-24 A |  |
| 148 | Reunión de Cierre de la ETAPA 5 | none → 2018-10-24 A | none → 2018-10-24 A | none → 144FF |
| 149 | HITO: FIN DE LA ETAPA 5 | none → 2018-10-24 A | none → 2018-10-24 A | none → 148FF |
| 150 | ETAPA 6: Estabilización, Apoyo Emisión 2019 y Desarrollo de funcionalidades no establecidas en el Alcance Contractual | none → 2018-11-16 A | none → 2019-01-25 A |  |
| 151 | Depuración de Errores de Calidad de Información fuente migrada (Base Oracle) | none → 2018-11-16 A | none → 2018-12-24 A | none → 139FF |
| 152 | Soporte y Mantenimiento de Módulos de la Fase 1 | none → 2018-11-16 A | none → 2018-12-24 A | none → 139FF |
| 153 | Adaptaciones a Software para incluir Nuevas funcionalidades no contempladas en alcance proyecto | none → 2018-11-16 A | none → 2018-12-24 A | none → 139FF |
| 154 | Implementación de Licencia temporal de Modulo de Catastro Urbano SIIM | none → 2018-12-03 A | none → 2018-12-26 A |  |
| 155 | Migración de información de Emisión de Impuestos de Catastro Urbano 2019 | none → 2018-12-03 A | none → 2018-12-26 A |  |
| 156 | Creación de interfaces mediante ETLs para integración entre Sistema Oracle y SIIM para la recaudación de Impuestos 2019 de Catastro Urbano | none → 2018-12-03 A | none → 2018-12-26 A |  |
| 157 | Soporte en Recaudación de Impuestos de Catastro urbano y mejoras 2019 | none → 2018-12-26 A | none → 2019-01-25 A | none → 156FF |
| 158 | Cierre de la FASE 1 | none → 2019-01-25 A | none → 2019-01-25 A |  |
| 159 | Reunión de Cierre de la FASE 1 | none → 2019-01-25 A | none → 2019-01-25 A | none → 157FF |
| 160 | HITO: FIN DE LA FASE 1 | none → 2019-01-25 A | none → 2019-01-25 A | none → 159FF |
| 161 | FASE 2: Implementación de Módulos de Planificación de Recursos Institucionales - PRI | none → 2019-01-25 A | none → 2019-05-14 A |  |
| 162 | ETAPA 1: Instalación del SIIM - Módulos PRI | none → 2019-01-25 A | none → 2019-01-31 A |  |
| 163 | Entrega e Instalación del Software | none → 2019-01-25 A | none → 2019-01-30 A |  |
| 164 | Instalar SIIM en Servidor | none → 2019-01-25 A | none → 2019-01-30 A |  |
| 165 | Instalar Módulos PRI | none → 2019-01-25 A | none → 2019-01-30 A | none → 150FF |
| 166 | 2.1 Administración Técnica | none → 2019-01-25 A | none → 2019-01-25 A |  |
| 167 | 2.2 Salud Ocupacional y Riesgos | none → 2019-01-25 A | none → 2019-01-28 A | none → 166FF |
| 168 | 3.2 Adquisiciones | none → 2019-01-28 A | none → 2019-01-28 A | none → 167FF |
| 169 | 6.1 Administración de Bienes | none → 2019-01-28 A | none → 2019-01-28 A | none → 168FF |
| 170 | 8.1 Contabilidad | none → 2019-01-28 A | none → 2019-01-28 A | none → 169FF |
| 171 | 8.2 Presupuestos | none → 2019-01-28 A | none → 2019-01-29 A | none → 170FF |
| 172 | 13 CRM para Urbanizaciones | none → 2019-01-29 A | none → 2019-01-29 A | none → 171FF |
| 173 | 14 Dirección de Planificación Institucional (Incluye control de proyectos de Obras Públicas | none → 2019-01-29 A | none → 2019-01-29 A | none → 172FF |
| 174 | 15.6 Servicios Corporativos | none → 2019-01-29 A | none → 2019-01-29 A | none → 173FF |
| 175 | 15.8 BI Planificación Institucional | none → 2019-01-29 A | none → 2019-01-30 A | none → 174FF |
| 176 | Entrega de Software | none → 2019-01-30 A | none → 2019-01-30 A | none → 164FF |
| 177 | Revisar la ETAPA del Proyecto | none → 2019-01-30 A | none → 2019-01-31 A | none → 163FF |
| 178 | HITO: FINALIZACION ETAPA 1 | none → 2019-01-31 A | none → 2019-01-31 A | none → 177FF |
| 179 | ETAPA 2: Levantamiento de Características Institucionales - Módulos PRI | none → 2019-01-31 A | none → 2019-02-11 A | none → 162FF |
| 180 | Actividades de Gestión del Proyecto | none → 2019-01-31 A | none → 2019-01-31 A |  |
| 181 | Revisión del Plan del Proyecto | none → 2019-01-31 A | none → 2019-01-31 A |  |
| 182 | Programar talleres de requerimientos de Entidad | none → 2019-01-31 A | none → 2019-01-31 A | none → 181FF |
| 183 | Sesiones de Requerimientos del Entidad | none → 2019-01-31 A | none → 2019-02-08 A | none → 180FF |
| 184 | Conducir Sesiones de Requerimientos | none → 2019-01-31 A | none → 2019-02-07 A |  |
| 185 | Crear Documento de Características del Entidad | none → 2019-02-07 A | none → 2019-02-08 A | none → 184FF |
| 186 | Revisar el Documento de Características del Entidad | none → 2019-02-08 A | none → 2019-02-08 A | none → 183FF |
| 187 | Revisar el Documento de Características del Entidad | none → 2019-02-08 A | none → 2019-02-08 A |  |
| 188 | Revisar el Plan del Proyecto | none → 2019-02-08 A | none → 2019-02-08 A | none → 187FF |
| 189 | Revisar la ETAPA del Proyecto | none → 2019-02-08 A | none → 2019-02-11 A | none → 186FF |
| 190 | HITO: FINALIZACION ETAPA 2 | none → 2019-02-11 A | none → 2019-02-11 A | none → 189FF |
| 191 | ETAPA 3: Migración de Datos, Configuración y Pruebas de Operación de Módulos - Módulos PRI | none → 2019-02-11 A | none → 2019-03-25 A | none → 179FF |
| 192 | Gestión General del Proyecto | none → 2019-02-11 A | none → 2019-02-13 A |  |
| 193 | Planificar cambio Organizacional | none → 2019-02-11 A | none → 2019-02-12 A |  |
| 194 | Planificar Entrenamiento a Usuarios Finales | none → 2019-02-12 A | none → 2019-02-12 A | none → 193FF |
| 195 | Definir y Preparar la Migración de Datos | none → 2019-02-12 A | none → 2019-02-13 A | none → 194FF |
| 196 | Configuración del Sistema en Producción | none → 2019-02-13 A | none → 2019-03-08 A | none → 192FF |
| 197 | Instalar el SIIM en Producción | none → 2019-02-13 A | none → 2019-02-13 A |  |
| 198 | Configurar Inicialización del Sistema | none → 2019-02-13 A | none → 2019-02-14 A | none → 197FF |
| 199 | Realizar la Migración de Datos | none → 2019-02-14 A | none → 2019-03-01 A | none → 198FF |
| 200 | Desarrollar Adaptaciones al Software | none → 2019-03-01 A | none → 2019-03-05 A | none → 199FF |
| 201 | Configuración del Sistema en base al Documento de Características del Entidad | none → 2019-03-05 A | none → 2019-03-06 A | none → 200FF |
| 202 | Configurar Interfaces | none → 2019-03-06 A | none → 2019-03-07 A | none → 201FF |
| 203 | Configurar Usuarios y Autorizaciones | none → 2019-03-07 A | none → 2019-03-08 A | none → 202FF |
| 204 | Gestión del Cambio Organizacional | none → 2019-03-08 A | none → 2019-03-08 A | none → 196FF |
| 205 | Conducir la comunicación de la Gestión de Cambios (si es aplicable) | none → 2019-03-08 A | none → 2019-03-08 A |  |
| 206 | Pruebas de validación del Sistema | none → 2019-03-08 A | none → 2019-03-14 A | none → 204FF |
| 207 | Mantener la Lista Maestra de Procesos de Entidad | none → 2019-03-08 A | none → 2019-03-11 A |  |
| 208 | Conducir Talleres de Validación | none → 2019-03-11 A | none → 2019-03-14 A | none → 207FF |
| 209 | 2.1 Administración Técnica | none → 2019-03-11 A | none → 2019-03-11 A |  |
| 210 | 2.2 Salud Ocupacional y Riesgos | none → 2019-03-11 A | none → 2019-03-11 A | none → 209FF |

| ID | Task | Start | Finish | Predecessors |
| --- | --- | --- | --- | --- |
| 211 | 3.2 Adquisiciones | none → 2019-03-11 A | none → 2019-03-12 A | none → 210FF |
| 212 | 6.1 Administración de Bienes | none → 2019-03-12 A | none → 2019-03-12 A | none → 211FF |
| 213 | 8.1 Contabilidad | none → 2019-03-12 A | none → 2019-03-13 A | none → 212FF |
| 214 | 8.2 Presupuestos | none → 2019-03-13 A | none → 2019-03-13 A | none → 213FF |
| 215 | 13 CRM para Urbanizaciones | none → 2019-03-13 A | none → 2019-03-13 A | none → 214FF |
| 216 | 14 Dirección de Planificación Institucional (Incluye control de proyectos de Obras Públicas) | none → 2019-03-13 A | none → 2019-03-14 A | none → 215FF |
| 217 | 15.6 BI Servicios Corporativos | none → 2019-03-14 A | none → 2019-03-14 A | none → 216FF |
| 218 | 15.8 BI Planificación Institucional | none → 2019-03-14 A | none → 2019-03-14 A | none → 217FF |
| 219 | Pruebas de aceptacion del Sistema | none → 2019-03-14 A | none → 2019-03-21 A | none → 206FF |
| 220 | Definir casos de prueba y alcance | none → 2019-03-14 A | none → 2019-03-14 A |  |
| 221 | Preparar ambiente de pruebas | none → 2019-03-14 A | none → 2019-03-15 A | none → 220FF |
| 222 | Ejecutar el plan de pruebas | none → 2019-03-15 A | none → 2019-03-21 A | none → 221FF |
| 223 | 2.1 Administración Técnica | none → 2019-03-15 A | none → 2019-03-18 A |  |
| 224 | 2.2 Salud Ocupacional y Riesgos | none → 2019-03-18 A | none → 2019-03-18 A | none → 223FF |
| 225 | 3.2 Adquisiciones | none → 2019-03-18 A | none → 2019-03-19 A | none → 224FF |
| 226 | 6.1 Administración de Bienes | none → 2019-03-19 A | none → 2019-03-19 A | none → 225FF |
| 227 | 8.1 Contabilidad | none → 2019-03-19 A | none → 2019-03-19 A | none → 226FF |
| 228 | 8.2 Presupuestos | none → 2019-03-19 A | none → 2019-03-20 A | none → 227FF |
| 229 | 13 CRM para Urbanizaciones | none → 2019-03-20 A | none → 2019-03-20 A | none → 228FF |
| 230 | 14 Dirección de Planificación Institucional (Incluye control de proyectos de Obras Públicas) | none → 2019-03-20 A | none → 2019-03-20 A | none → 229FF |
| 231 | 15.6 BI Servicios Corporativos | none → 2019-03-20 A | none → 2019-03-21 A | none → 230FF |
| 232 | 15.8 BI Planificación Institucional | none → 2019-03-21 A | none → 2019-03-21 A | none → 231FF |
| 233 | Revisar los resultados de las pruebas y necesidades de cambios | none → 2019-03-14 A | none → 2019-03-15 A |  |
| 234 | Planificar Salida a Producción y Soporte | none → 2019-03-21 A | none → 2019-03-22 A | none → 219FF |
| 235 | Definir Plan de Salida a Producción | none → 2019-03-21 A | none → 2019-03-21 A |  |
| 236 | Planificar Estrategia de Soporte | none → 2019-03-21 A | none → 2019-03-22 A | none → 235FF |
| 237 | Planificar Administración del Sistema | none → 2019-03-22 A | none → 2019-03-22 A | none → 236FF |
| 238 | Revisar la ETAPA del Proyecto | none → 2019-03-22 A | none → 2019-03-25 A | none → 234FF |
| 239 | HITO: FINALIZACION ETAPA 3 | none → 2019-03-25 A | none → 2019-03-25 A | none → 238FF |
| 240 | ETAPA 4: Preparación Final previo Despliegue en Producción - Módulos PRI | none → 2019-03-25 A | none → 2019-04-08 A | none → 191FF |
| 241 | Gestión General del Proyecto | none → 2019-03-25 A | none → 2019-03-26 A |  |
| 242 | Confirmar el Plan de Entrenamiento | none → 2019-03-25 A | none → 2019-03-25 A |  |
| 243 | Finalizar plan de Salida a Producción | none → 2019-03-25 A | none → 2019-03-26 A | none → 242FF |
| 244 | Entrenamiento | none → 2019-03-26 A | none → 2019-04-02 A | none → 241FF |
| 245 | Entrenamiento de Usuarios Funcionales y Certificación de Procesos | none → 2019-03-26 A | none → 2019-03-29 A |  |
| 246 | 2.1 Administración Técnica | none → 2019-03-26 A | none → 2019-03-26 A |  |
| 247 | 2.2 Salud Ocupacional y Riesgos | none → 2019-03-26 A | none → 2019-03-27 A | none → 246FF |
| 248 | 3.2 Adquisiciones | none → 2019-03-27 A | none → 2019-03-27 A | none → 247FF |
| 249 | 6.1 Administración de Bienes | none → 2019-03-27 A | none → 2019-03-27 A | none → 248FF |
| 250 | 8.1 Contabilidad | none → 2019-03-27 A | none → 2019-03-28 A | none → 249FF |
| 251 | 8.2 Presupuestos | none → 2019-03-28 A | none → 2019-03-28 A | none → 250FF |
| 252 | 13 CRM para Urbanizaciones | none → 2019-03-28 A | none → 2019-03-29 A | none → 251FF |
| 253 | 14 Dirección de Planificación Institucional (Incluye control de proyectos de Obras Públicas) | none → 2019-03-29 A | none → 2019-03-29 A | none → 252FF |
| 254 | 15.6 BI Servicios Corporativos | none → 2019-03-29 A | none → 2019-03-29 A | none → 253FF |
| 255 | 15.8 BI Planificación Institucional | none → 2019-03-29 A | none → 2019-03-29 A | none → 254FF |
| 256 | Entrenamiento de Usuario Técnicos | none → 2019-03-26 A | none → 2019-04-02 A |  |
| 257 | Preparación del Sistema | none → 2019-04-02 A | none → 2019-04-03 A | none → 244FF |
| 258 | Completar la Administración del Sistema | none → 2019-04-02 A | none → 2019-04-03 A |  |
| 259 | Comprobación de la Puesta a Producción | none → 2019-04-03 A | none → 2019-04-03 A | none → 258FF |
| 260 | Transición | none → 2019-04-03 A | none → 2019-04-08 A | none → 257FF |
| 261 | Finalizar Procesamiento de Sistemas Legados | none → 2019-04-03 A | none → 2019-04-04 A |  |
| 262 | Realizar la Salida a Producción - Carga Inicial y Configuración Inicial | none → 2019-04-04 A | none → 2019-04-08 A | none → 261FF |
| 263 | Revisar la ETAPA del Proyecto | none → 2019-04-08 A | none → 2019-04-08 A | none → 260FF |
| 264 | HITO: FINALIZACION ETAPA 4 | none → 2019-04-08 A | none → 2019-04-08 A | none → 263FF |
| 265 | ETAPA 5: Despliegue en Producción y Soporte Técnico - Módulos PRI | none → 2019-04-08 A | none → 2019-05-14 A | none → 240FF |
| 266 | Soporte en Producción | none → 2019-04-08 A | none → 2019-04-25 A |  |
| 267 | Soporte durante la Salida a Producción | none → 2019-04-08 A | none → 2019-04-25 A |  |
| 268 | Resolver incidentes críticos | none → 2019-04-08 A | none → 2019-04-25 A | none → 263FF |
| 269 | Entregar el soporte y Administración al cliente | none → 2019-04-08 A | none → 2019-04-10 A | none → 263FF |
| 270 | Mejora Continua | none → 2019-04-25 A | none → 2019-05-14 A | none → 266FF |
| 271 | Monitoreo del Sistema y Acompañamiento ETAPA2 | none → 2019-04-25 A | none → 2019-05-14 A | none → 263FF |
| 272 | Ajustes y Configuraciones finales al Software acorde a necesidades Entidad | none → 2019-04-25 A | none → 2019-05-14 A | none → 263FF |
| 273 | Cierre de la FASE 2 | none → 2019-05-14 A | none → 2019-05-14 A | none → 270FF |
| 274 | Reunión de Cierre de la FASE 2 | none → 2019-05-14 A | none → 2019-05-14 A |  |
| 275 | HITO: FIN DE LA FASE 2 | none → 2019-05-14 A | none → 2019-05-14 A | none → 273FF |
| 276 | FASE 3: Implementación de Módulos de Planificación de Recursos Institucionales - PRI | none → 2019-04-08 A | none → 2019-07-10 A |  |
| 277 | ETAPA 1: Instalación del SIIM - Módulos PRI | none → 2019-04-08 A | none → 2019-04-12 A |  |
| 278 | Entrega e Instalación del Software | none → 2019-04-08 A | none → 2019-04-11 A |  |
| 279 | Instalar SIIM en Servidor | none → 2019-04-08 A | none → 2019-04-10 A |  |
| 280 | Instalar Módulos PRI | none → 2019-04-08 A | none → 2019-04-10 A | none → 264FF |

| ID | Task | Start | Finish | Predecessors |
| --- | --- | --- | --- | --- |
| 281 | Entrega de Software | none → 2019-04-10 A | none → 2019-04-11 A | none → 279FF |
| 282 | Revisar la ETAPA del Proyecto | none → 2019-04-11 A | none → 2019-04-12 A | none → 278FF |
| 283 | HITO: FINALIZACION ETAPA 1 | none → 2019-04-12 A | none → 2019-04-12 A | none → 282FF |
| 284 | ETAPA 2: Levantamiento de Características Institucionales - Módulos PRI | none → 2019-04-12 A | none → 2019-04-23 A | none → 277FF |
| 285 | Actividades de Gestión del Proyecto | none → 2019-04-12 A | none → 2019-04-12 A |  |
| 286 | Revisión del Plan del Proyecto | none → 2019-04-12 A | none → 2019-04-12 A |  |
| 287 | Programar talleres de requerimientos de Entidad | none → 2019-04-12 A | none → 2019-04-12 A | none → 286FF |
| 288 | Sesiones de Requerimientos del Entidad | none → 2019-04-12 A | none → 2019-04-19 A | none → 285FF |
| 289 | Conducir Sesiones de Requerimientos | none → 2019-04-12 A | none → 2019-04-17 A |  |
| 290 | Crear Documento de Características del Entidad | none → 2019-04-17 A | none → 2019-04-19 A | none → 289FF |
| 291 | Revisar el Documento de Características del Entidad | none → 2019-04-19 A | none → 2019-04-22 A | none → 288FF |
| 292 | Revisar el Documento de Características del Entidad | none → 2019-04-19 A | none → 2019-04-22 A |  |
| 293 | Revisar el Plan del Proyecto | none → 2019-04-22 A | none → 2019-04-22 A | none → 292FF |
| 294 | Revisar la ETAPA del Proyecto | none → 2019-04-22 A | none → 2019-04-23 A | none → 291FF |
| 295 | HITO: FINALIZACION ETAPA 2 | none → 2019-04-23 A | none → 2019-04-23 A | none → 294FF |
| 296 | ETAPA 3: Migración de Datos, Configuración y Pruebas de Operación de Módulos - Módulos PRI | none → 2019-04-23 A | none → 2019-06-03 A | none → 284FF |
| 297 | Gestión General del Proyecto | none → 2019-04-23 A | none → 2019-04-24 A |  |
| 298 | Planificar cambio Organizacional | none → 2019-04-23 A | none → 2019-04-23 A |  |
| 299 | Planificar Entrenamiento a Usuarios Finales | none → 2019-04-23 A | none → 2019-04-24 A | none → 298FF |
| 300 | Definir y Preparar la Migración de Datos | none → 2019-04-24 A | none → 2019-04-24 A | none → 299FF |
| 301 | Configuración del Sistema en Producción | none → 2019-04-24 A | none → 2019-05-20 A | none → 297FF |
| 302 | Instalar el SIIM en Producción | none → 2019-04-24 A | none → 2019-04-25 A |  |
| 303 | Configurar Inicialización del Sistema | none → 2019-04-25 A | none → 2019-04-26 A | none → 302FF |
| 304 | Realizar la Migración de Datos | none → 2019-04-26 A | none → 2019-05-09 A | none → 303FF |
| 305 | Desarrollar Adaptaciones al Software | none → 2019-05-09 A | none → 2019-05-15 A | none → 304FF |
| 306 | Configuración del Sistema en base al Documento de Características del Entidad | none → 2019-05-15 A | none → 2019-05-17 A | none → 305FF |
| 307 | Configurar Interfaces | none → 2019-05-17 A | none → 2019-05-20 A | none → 306FF |
| 308 | Configurar Usuarios y Autorizaciones | none → 2019-05-20 A | none → 2019-05-20 A | none → 307FF |
| 309 | Gestión del Cambio Organizacional | none → 2019-05-20 A | none → 2019-05-22 A | none → 301FF |
| 310 | Conducir la comunicación de la Gestión de Cambios (si es aplicable) | none → 2019-05-20 A | none → 2019-05-22 A |  |
| 311 | Pruebas de validación/aceptación del Sistema | none → 2019-05-22 A | none → 2019-05-24 A | none → 309FF |
| 312 | Mantener la Lista Maestra de Procesos de Entidad | none → 2019-05-22 A | none → 2019-05-23 A |  |
| 313 | Conducir Talleres de Validación | none → 2019-05-23 A | none → 2019-05-24 A | none → 312FF |
| 314 | 3.1 Compras Públicas | none → 2019-05-23 A | none → 2019-05-23 A |  |
| 315 | 6.2 Servicios Generales | none → 2019-05-23 A | none → 2019-05-23 A | none → 314FF |
| 316 | 8.5 Gestión Jurídica - Financiera | none → 2019-05-23 A | none → 2019-05-23 A | none → 315FF |
| 317 | 15.2 BI Financiero | none → 2019-05-23 A | none → 2019-05-24 A | none → 316FF |
| 318 | 15.3 BI Administración del Talento Humano | none → 2019-05-24 A | none → 2019-05-24 A | none → 317FF |
| 319 | 15.4 BI Compras Públicas | none → 2019-05-24 A | none → 2019-05-24 A | none → 318FF |
| 320 | 15.9 Tablero de Control | none → 2019-05-24 A | none → 2019-05-24 A | none → 319FF |
| 321 | Pruebas de aceptacion del Sistema | none → 2019-05-24 A | none → 2019-05-30 A | none → 311FF |
| 322 | Definir casos de prueba y alcance | none → 2019-05-24 A | none → 2019-05-27 A |  |
| 323 | Preparar ambiente de pruebas | none → 2019-05-27 A | none → 2019-05-28 A | none → 322FF |
| 324 | Ejecutar el plan de pruebas | none → 2019-05-28 A | none → 2019-05-29 A | none → 323FF |
| 325 | 3.1 Compras Públicas | none → 2019-05-28 A | none → 2019-05-28 A |  |
| 326 | 6.2 Servicios Generales | none → 2019-05-28 A | none → 2019-05-28 A | none → 325FF |
| 327 | 8.5 Gestión Jurídica - Financiera | none → 2019-05-28 A | none → 2019-05-28 A | none → 326FF |
| 328 | 15.2 BI Financiero | none → 2019-05-28 A | none → 2019-05-29 A | none → 327FF |
| 329 | 15.3 BI Administración del Talento Humano | none → 2019-05-29 A | none → 2019-05-29 A | none → 328FF |
| 330 | 15.4 BI Compras Públicas | none → 2019-05-29 A | none → 2019-05-29 A | none → 329FF |
| 331 | 15.9 Tablero de Control | none → 2019-05-29 A | none → 2019-05-29 A | none → 330FF |
| 332 | Revisar los resultados de las pruebas y necesidades de cambios | none → 2019-05-29 A | none → 2019-05-30 A | none → 331FF, 320FF |
| 333 | Planificar Salida a Producción y Soporte | none → 2019-05-30 A | none → 2019-05-31 A | none → 321FF |
| 334 | Definir Plan de Salida a Producción | none → 2019-05-30 A | none → 2019-05-31 A |  |
| 335 | Planificar Estrategia de Soporte | none → 2019-05-31 A | none → 2019-05-31 A | none → 334FF |
| 336 | Planificar Administración del Sistema | none → 2019-05-31 A | none → 2019-05-31 A | none → 335FF |
| 337 | Revisar la ETAPA del Proyecto | none → 2019-05-31 A | none → 2019-06-03 A | none → 333FF |
| 338 | HITO: FINALIZACION ETAPA 3 | none → 2019-06-03 A | none → 2019-06-03 A | none → 337FF |
| 339 | ETAPA 4: Preparación Final previo Despliegue en Producción - Módulos PRI | none → 2019-06-03 A | none → 2019-06-18 A | none → 296FF |
| 340 | Gestión General del Proyecto | none → 2019-06-03 A | none → 2019-06-04 A |  |
| 341 | Confirmar el Plan de Entrenamiento | none → 2019-06-03 A | none → 2019-06-04 A |  |
| 342 | Finalizar plan de Salida a Producción | none → 2019-06-04 A | none → 2019-06-04 A | none → 341FF |
| 343 | Entrenamiento | none → 2019-06-04 A | none → 2019-06-12 A | none → 340FF |
| 344 | Entrenamiento de Usuarios Funcionales y Certificación de Procesos | none → 2019-06-04 A | none → 2019-06-10 A |  |
| 345 | 3.1 Compras Públicas | none → 2019-06-04 A | none → 2019-06-05 A |  |
| 346 | 6.2 Servicios Generales | none → 2019-06-05 A | none → 2019-06-05 A | none → 345FF |
| 347 | 8.5 Gestión Jurídica - Financiera | none → 2019-06-05 A | none → 2019-06-06 A | none → 346FF |
| 348 | 15.2 BI Financiero | none → 2019-06-06 A | none → 2019-06-06 A | none → 347FF |
| 349 | 15.3 BI Administración del Talento Humano | none → 2019-06-06 A | none → 2019-06-07 A | none → 348FF |
| 350 | 15.4 BI Compras Públicas | none → 2019-06-07 A | none → 2019-06-07 A | none → 349FF |

| ID | Task | Start | Finish | Predecessors |
| --- | --- | --- | --- | --- |
| 351 | 15.9 Tablero de Control | none → 2019-06-07 A | none → 2019-06-10 A | none → 350FF |
| 352 | Entrenamiento de Usuario Técnicos | none → 2019-06-10 A | none → 2019-06-12 A | none → 351FF |
| 353 | Preparación del Sistema | none → 2019-06-12 A | none → 2019-06-14 A | none → 343FF |
| 354 | Completar la Administración del Sistema | none → 2019-06-12 A | none → 2019-06-13 A |  |
| 355 | Comprobación de la Puesta a Producción | none → 2019-06-13 A | none → 2019-06-14 A | none → 354FF |
| 356 | Transición | none → 2019-06-14 A | none → 2019-06-18 A | none → 353FF |
| 357 | Finalizar Procesamiento de Sistemas Legados | none → 2019-06-14 A | none → 2019-06-14 A |  |
| 358 | Realizar la Salida a Producción - Carga Inicial y Configuración Inicial | none → 2019-06-14 A | none → 2019-06-18 A | none → 357FF |
| 359 | Revisar la ETAPA del Proyecto | none → 2019-06-18 A | none → 2019-06-18 A | none → 356FF |
| 360 | HITO: FINALIZACION ETAPA 4 | none → 2019-06-18 A | none → 2019-06-18 A | none → 359FF |
| 361 | ETAPA 5: Despliegue en Producción y Soporte Técnico - Módulos PRI | none → 2019-06-21 A | none → 2019-07-10 A | none → 339FF |
| 362 | Soporte en Producción | none → 2019-06-21 A | none → 2019-07-04 A |  |
| 363 | Soporte durante la Salida a Producción | none → 2019-06-21 A | none → 2019-06-28 A |  |
| 364 | Resolver incidentes críticos | none → 2019-06-28 A | none → 2019-07-02 A | none → 363FF |
| 365 | Entregar el soporte y Administración al cliente | none → 2019-07-02 A | none → 2019-07-04 A | none → 364FF |
| 366 | Mejora Continua | none → 2019-06-21 A | none → 2019-07-10 A | none → 339FF |
| 367 | Monitoreo del Sistema y Acompañamiento | none → 2019-06-21 A | none → 2019-07-10 A |  |
| 368 | Ajustes y Configuraciones finales al Software acorde a necesidades Entidad | none → 2019-06-21 A | none → 2019-07-10 A | none → 339FF |
| 369 | Cierre de la FASE 3 y Proyecto | none → 2019-07-10 A | none → 2019-07-10 A | none → 366FF |
| 370 | Reunión de Cierre de la FASE 3 y Proyecto | none → 2019-07-10 A | none → 2019-07-10 A |  |
| 371 | HITO: FIN DE LA FASE 3 y Proyecto | none → 2019-07-10 A | none → 2019-07-10 A | none → 366FF |

## Version 4 (saved 2019-08-22)

Note of the change: up

Last finish stays 2019-07-10.

Changed:

| ID | Task | Start | Finish | Duration | Predecessors |
| --- | --- | --- | --- | --- | --- |
| 1 | 20190122- Plan del Proyecto de Implementacion del SIIM Daule | 2018-07-16 A → 2018-07-16 00:00 | 2019-07-10 A → 2019-07-10 00:00 | none → 294.29d |  |
| 2 | Programa de Implementación SIIM | 2018-07-16 A → 2018-07-16 00:00 | 2019-07-10 A → 2019-07-10 00:00 | none → 294.29d |  |
| 3 | FASE 1: Implementación de Módulos de Servicio al Cliente (SC) y Atención al Ciudadano (AC) | 2018-07-16 A → 2018-07-16 00:00 | 2019-01-25 A → 2019-01-25 00:00 | none → 159.57d |  |
| 4 | ETAPA 1: Preparación del Proyecto e Instalación del SIIM - Módulos SC y AC | 2018-07-16 A → 2018-07-16 00:00 | 2018-07-25 A → 2018-07-25 00:00 | none → 9d |  |
| 5 | Actividades de Gestión del Proyecto | 2018-07-16 A → 2018-07-16 00:00 | 2018-07-18 A → 2018-07-18 00:00 | none → 2.29d |  |
| 6 | Revisión de Información de Contrato y Anexos | 2018-07-16 A → 2018-07-16 00:00 | 2018-07-16 A → 2018-07-16 00:00 | none → 6h |  |
| 7 | Definir la Organización del Proyecto | 2018-07-16 A → 2018-07-16 00:00 | 2018-07-17 A → 2018-07-17 00:00 | none → 4h | 6FF → 6 |
| 8 | Kick-off Interno del Proyecto | 2018-07-17 A → 2018-07-17 00:00 | 2018-07-18 A → 2018-07-18 00:00 | none → 6h | 7FF → 7 |
| 9 | Preparación del kick-off del Proyecto | 2018-07-18 A → 2018-07-18 00:00 | 2018-07-19 A → 2018-07-19 00:00 | none → 1.14d |  |
| 10 | Comunicación con el Cliente | 2018-07-18 A → 2018-07-18 00:00 | 2018-07-18 A → 2018-07-18 00:00 | none → 4h | 8FF → 8 |
| 11 | Crear la presentación del kick-off | 2018-07-18 A → 2018-07-18 00:00 | 2018-07-19 A → 2018-07-19 00:00 | none → 4h | 10FF → 10 |
| 12 | Reunión de Kick-off | 2018-07-19 A → 2018-07-19 00:00 | 2018-07-19 A → 2018-07-19 00:00 | none → 0.29d |  |
| 13 | Realizar la reunión de kick-off | 2018-07-19 A → 2018-07-19 00:00 | 2018-07-19 A → 2018-07-19 00:00 | none → 2h | 11FF → 11 |
| 14 | Entrega e Instalación del Software | 2018-07-19 A → 2018-07-19 00:00 | 2018-07-25 A → 2018-07-25 00:00 | none → 4.29d |  |
| 15 | Instalar SIIM en Servidor | 2018-07-19 A → 2018-07-19 00:00 | 2018-07-24 A → 2018-07-24 00:00 | none → 4d | 12FF → 12 |
| 16 | 1 Dirección de Desarrollo Territorial (No incluye Catastro) | 2018-07-19 A → 2018-07-19 00:00 | 2018-07-19 A → 2018-07-19 00:00 | none → 2h |  |
| 17 | 4 Dirección de Justicia y Vigilancia | 2018-07-19 A → 2018-07-19 00:00 | 2018-07-19 A → 2018-07-19 00:00 | none → 2h | 16FF → 16 |
| 18 | 5 Dirección de Desarrollo Humano y Social | 2018-07-19 A → 2018-07-19 00:00 | 2018-07-20 A → 2018-07-20 00:00 | none → 2h | 17FF → 17 |
| 19 | 8.3 Rentas | 2018-07-20 A → 2018-07-20 00:00 | 2018-07-20 A → 2018-07-20 00:00 | none → 2h | 18FF → 18 |
| 20 | 8.4 Tesorería | 2018-07-20 A → 2018-07-20 00:00 | 2018-07-20 A → 2018-07-20 00:00 | none → 2h | 19FF → 19 |
| 21 | 9.1 Mercados | 2018-07-20 A → 2018-07-20 00:00 | 2018-07-20 A → 2018-07-20 00:00 | none → 1h | 20FF → 20 |
| 22 | 9.2 Cementerio | 2018-07-20 A → 2018-07-20 00:00 | 2018-07-20 A → 2018-07-20 00:00 | none → 1h | 21FF → 21 |
| 23 | 9.3 Camal | 2018-07-20 A → 2018-07-20 00:00 | 2018-07-20 A → 2018-07-20 00:00 | none → 1h | 22FF → 22 |
| 24 | 10 Registro de la Propiedad y Mercantil | 2018-07-20 A → 2018-07-20 00:00 | 2018-07-23 A → 2018-07-23 00:00 | none → 2h | 23FF → 23 |
| 25 | 11 Administración de bomberos | 2018-07-23 A → 2018-07-23 00:00 | 2018-07-23 A → 2018-07-23 00:00 | none → 1h | 24FF → 24 |
| 26 | 12 CRM para ciudadanos. Ventanilla Única | 2018-07-23 A → 2018-07-23 00:00 | 2018-07-23 A → 2018-07-23 00:00 | none → 2h | 25FF → 25 |
| 27 | 15.1 BI Desarrollo Territorial | 2018-07-23 A → 2018-07-23 00:00 | 2018-07-23 A → 2018-07-23 00:00 | none → 2h | 26FF → 26 |
| 28 | 15.5 BI Obras Públicas Municipales | 2018-07-23 A → 2018-07-23 00:00 | 2018-07-24 A → 2018-07-24 00:00 | none → 2h | 27FF → 27 |
| 29 | 15.7 BI Registro de la Propiedad y Mercantil | 2018-07-24 A → 2018-07-24 00:00 | 2018-07-24 A → 2018-07-24 00:00 | none → 2h | 28FF → 28 |
| 30 | 16.1 Consultas Portal Web | 2018-07-24 A → 2018-07-24 00:00 | 2018-07-24 A → 2018-07-24 00:00 | none → 2h | 29FF → 29 |
| 31 | 16.2 Aplicación para móviles (APP) | 2018-07-24 A → 2018-07-24 00:00 | 2018-07-24 A → 2018-07-24 00:00 | none → 2h | 30FF → 30 |
| 32 | Entrega de Software | 2018-07-24 A → 2018-07-24 00:00 | 2018-07-25 A → 2018-07-25 00:00 | none → 2h | 15FF → 15 |
| 33 | Revisar la ETAPA del Proyecto | 2018-07-25 A → 2018-07-25 00:00 | 2018-07-25 A → 2018-07-25 00:00 | none → 1d | 14FF → 14 |
| 34 | HITO: FINALIZACION ETAPA 1 | 2018-07-25 A → 2018-07-25 00:00 | 2018-07-25 A → 2018-07-25 00:00 | none → 0d | 33FF → 33 |
| 35 | ETAPA 2: Levantamiento de Características Institucionales - Módulos SC y AC | 2018-07-25 A → 2018-07-25 00:00 | 2018-08-13 A → 2018-08-13 00:00 | none → 14.71d | 4FF → 4 |
| 36 | Actividades de Gestión del Proyecto | 2018-07-25 A → 2018-07-25 00:00 | 2018-07-26 A → 2018-07-26 00:00 | none → 1.14d |  |
| 37 | Revisión del Plan del Proyecto | 2018-07-25 A → 2018-07-25 00:00 | 2018-07-26 A → 2018-07-26 00:00 | none → 4h | 33FF → 33 |
| 38 | Programar talleres de requerimientos de Entidad | 2018-07-26 A → 2018-07-26 00:00 | 2018-07-26 A → 2018-07-26 00:00 | none → 4h | 37FF → 37 |
| 39 | Sesiones de Requerimientos del Entidad | 2018-07-26 A → 2018-07-26 00:00 | 2018-08-10 A → 2018-08-10 00:00 | none → 12d |  |
| 40 | Conducir Sesiones de Requerimientos | 2018-07-26 A → 2018-07-26 00:00 | 2018-08-08 A → 2018-08-08 00:00 | none → 10d | 38FF → 38 |
| 41 | Crear Documento de Características del Entidad | 2018-08-08 A → 2018-08-08 00:00 | 2018-08-10 A → 2018-08-10 00:00 | none → 2d | 40FF → 40 |
| 42 | Revisar el Documento de Características del Entidad | 2018-08-10 A → 2018-08-10 00:00 | 2018-08-10 A → 2018-08-10 00:00 | none → 0.57d |  |
| 43 | Revisar el Documento de Características del Entidad | 2018-08-10 A → 2018-08-10 00:00 | 2018-08-10 A → 2018-08-10 00:00 | none → 2h | 41FF → 41 |
| 44 | Revisar el Plan del Proyecto | 2018-08-10 A → 2018-08-10 00:00 | 2018-08-10 A → 2018-08-10 00:00 | none → 2h | 43FF → 43 |
| 45 | Revisar la ETAPA del Proyecto | 2018-08-10 A → 2018-08-10 00:00 | 2018-08-13 A → 2018-08-13 00:00 | none → 1d | 42FF → 42 |
| 46 | HITO: FINALIZACION ETAPA 2 | 2018-08-13 A → 2018-08-13 00:00 | 2018-08-13 A → 2018-08-13 00:00 | none → 0d | 45FF → 45 |
| 47 | ETAPA 3: Migración de Datos, Configuración y Pruebas de Operación - Módulos SC y AC | 2018-08-13 A → 2018-08-13 00:00 | 2018-10-22 A → 2018-10-22 00:00 | none → 56.57d | 35FF → 35 |
| 48 | Gestión General del Proyecto | 2018-08-13 A → 2018-08-13 00:00 | 2018-08-14 A → 2018-08-14 00:00 | none → 0.57d |  |
| 49 | Planificar cambio Organizacional | 2018-08-13 A → 2018-08-13 00:00 | 2018-08-14 A → 2018-08-14 00:00 | none → 2h | 45FF → 45 |
| 50 | Planificar Entrenamiento a Usuarios Finales | 2018-08-14 A → 2018-08-14 00:00 | 2018-08-14 A → 2018-08-14 00:00 | none → 2h | 49FF → 49 |
| 51 | Definir y Preparar la Migración de Datos | 2018-08-14 A → 2018-08-14 00:00 | 2018-08-14 A → 2018-08-14 00:00 | none → 2h | 49FF → 49 |
| 52 | Configuración del Sistema en Producción | 2018-08-14 A → 2018-08-14 00:00 | 2018-10-22 A → 2018-10-22 00:00 | none → 56d |  |
| 53 | Instalar el SIIM en Producción | 2018-08-14 A → 2018-08-14 00:00 | 2018-08-15 A → 2018-08-15 00:00 | none → 1d | 51FF → 51 |
| 54 | Configurar Inicialización del Sistema | 2018-08-15 A → 2018-08-15 00:00 | 2018-08-16 A → 2018-08-16 00:00 | none → 1d | 53FF → 53 |
| 55 | Realizar la Migración de Datos | 2018-08-16 A → 2018-08-16 00:00 | 2018-10-22 A → 2018-10-22 00:00 | none → 54d | 54FF → 54 |
| 56 | Desarrollar Adaptaciones al Software | 2018-08-16 A → 2018-08-16 00:00 | 2018-08-28 A → 2018-08-28 00:00 | none → 10d | 54FF → 54 |
| 57 | Configuración del Sistema en base al Documento de Características del Entidad | 2018-08-28 A → 2018-08-28 00:00 | 2018-08-31 A → 2018-08-31 00:00 | none → 3d | 56FF → 56 |
| 58 | Configurar Interfaces | 2018-08-31 A → 2018-08-31 00:00 | 2018-09-03 A → 2018-09-03 00:00 | none → 1d | 57FF → 57 |
| 59 | Configurar Usuarios y Autorizaciones | 2018-09-03 A → 2018-09-03 00:00 | 2018-09-04 A → 2018-09-04 00:00 | none → 1d | 58FF → 58 |
| 60 | Gestión del Cambio Organizacional | 2018-09-04 A → 2018-09-04 00:00 | 2018-09-05 A → 2018-09-05 00:00 | none → 1d |  |
| 61 | Conducir la comunicación de la Gestión de Cambios (si es aplicable) | 2018-09-04 A → 2018-09-04 00:00 | 2018-09-05 A → 2018-09-05 00:00 | none → 1d | 59FF → 59 |
| 62 | Pruebas de validación/aceptación del Sistema | 2018-09-05 A → 2018-09-05 00:00 | 2018-09-10 A → 2018-09-10 00:00 | none → 3.43d |  |
| 63 | Mantener la Lista Maestra de Procesos de Entidad | 2018-09-05 A → 2018-09-05 00:00 | 2018-09-05 A → 2018-09-05 00:00 | none → 2h | 61FF → 61 |
| 64 | Conducir Talleres de Validación | 2018-09-05 A → 2018-09-05 00:00 | 2018-09-10 A → 2018-09-10 00:00 | none → 3.14d | 63FF → 63 |
| 65 | 1 Dirección de Desarrollo Territorial (No incluye Catastro) | 2018-09-05 A → 2018-09-05 00:00 | 2018-09-05 A → 2018-09-05 00:00 | none → 2h |  |
| 66 | 4 Dirección de Justicia y Vigilancia | 2018-09-05 A → 2018-09-05 00:00 | 2018-09-05 A → 2018-09-05 00:00 | none → 2h | 65FF → 65 |
| 67 | 5 Dirección de Desarrollo Humano y Social | 2018-09-05 A → 2018-09-05 00:00 | 2018-09-05 A → 2018-09-05 00:00 | none → 1h | 66FF → 66 |
| 68 | 8.3 Rentas | 2018-09-05 A → 2018-09-05 00:00 | 2018-09-06 A → 2018-09-06 00:00 | none → 2h | 67FF → 67 |
| 69 | 8.4 Tesorería | 2018-09-06 A → 2018-09-06 00:00 | 2018-09-06 A → 2018-09-06 00:00 | none → 2h | 68FF → 68 |
| 70 | 9.1 Mercados | 2018-09-06 A → 2018-09-06 00:00 | 2018-09-06 A → 2018-09-06 00:00 | none → 1h | 69FF → 69 |

| ID | Task | Start | Finish | Duration | Predecessors |
| --- | --- | --- | --- | --- | --- |
| 71 | 9.2 Cementerio | 2018-09-06 A → 2018-09-06 00:00 | 2018-09-06 A → 2018-09-06 00:00 | none → 1h | 70FF → 70 |
| 72 | 9.3 Camal | 2018-09-06 A → 2018-09-06 00:00 | 2018-09-06 A → 2018-09-06 00:00 | none → 1h | 71FF → 71 |
| 73 | 10 Registro de la Propiedad y Mercantil | 2018-09-06 A → 2018-09-06 00:00 | 2018-09-07 A → 2018-09-07 00:00 | none → 2h | 72FF → 72 |
| 74 | 11 Administración de bomberos | 2018-09-07 A → 2018-09-07 00:00 | 2018-09-07 A → 2018-09-07 00:00 | none → 1h | 73FF → 73 |
| 75 | 12 CRM para ciudadanos. Ventanilla Única | 2018-09-07 A → 2018-09-07 00:00 | 2018-09-07 A → 2018-09-07 00:00 | none → 2h | 74FF → 74 |
| 76 | 15.1 BI Desarrollo Territorial | 2018-09-07 A → 2018-09-07 00:00 | 2018-09-07 A → 2018-09-07 00:00 | none → 1h | 75FF → 75 |
| 77 | 15.5 BI Obras Públicas Municipales | 2018-09-07 A → 2018-09-07 00:00 | 2018-09-07 A → 2018-09-07 00:00 | none → 1h | 76FF → 76 |
| 78 | 15.7 BI Registro de la Propiedad y Mercantil | 2018-09-07 A → 2018-09-07 00:00 | 2018-09-07 A → 2018-09-07 00:00 | none → 1h | 77FF → 77 |
| 79 | 16.1 Consultas Portal Web | 2018-09-07 A → 2018-09-07 00:00 | 2018-09-07 A → 2018-09-07 00:00 | none → 1h | 78FF → 78 |
| 80 | 16.2 Aplicación para móviles (APP) | 2018-09-07 A → 2018-09-07 00:00 | 2018-09-10 A → 2018-09-10 00:00 | none → 1h | 79FF → 79 |
| 81 | Pruebas de Aceptacion Sistema | 2018-09-10 A → 2018-09-10 00:00 | 2018-09-14 A → 2018-09-14 00:00 | none → 5.43d |  |
| 82 | Definir casos de prueba y alcance | 2018-09-10 A → 2018-09-10 00:00 | 2018-09-10 A → 2018-09-10 00:00 | none → 2h | 80FF, 31FF → 80, 31 |
| 83 | Preparar ambiente de pruebas | 2018-09-10 A → 2018-09-10 00:00 | 2018-09-11 A → 2018-09-11 00:00 | none → 1d | 82FF → 82 |
| 84 | Ejecutar el plan de pruebas de Aceptacion del Sistema | 2018-09-11 A → 2018-09-11 00:00 | 2018-09-13 A → 2018-09-13 00:00 | none → 3.14d | 83FF → 83 |
| 85 | 1 Dirección de Desarrollo Territorial (No incluye Catastro) | 2018-09-11 A → 2018-09-11 00:00 | 2018-09-11 A → 2018-09-11 00:00 | none → 2h |  |
| 86 | 4 Dirección de Justicia y Vigilancia | 2018-09-11 A → 2018-09-11 00:00 | 2018-09-11 A → 2018-09-11 00:00 | none → 2h | 85FF → 85 |
| 87 | 5 Dirección de Desarrollo Humano y Social | 2018-09-11 A → 2018-09-11 00:00 | 2018-09-11 A → 2018-09-11 00:00 | none → 1h | 86FF → 86 |
| 88 | 8.3 Rentas | 2018-09-11 A → 2018-09-11 00:00 | 2018-09-12 A → 2018-09-12 00:00 | none → 2h | 87FF → 87 |
| 89 | 8.4 Tesorería | 2018-09-12 A → 2018-09-12 00:00 | 2018-09-12 A → 2018-09-12 00:00 | none → 2h | 88FF → 88 |
| 90 | 9.1 Mercados | 2018-09-12 A → 2018-09-12 00:00 | 2018-09-12 A → 2018-09-12 00:00 | none → 1h | 89FF → 89 |
| 91 | 9.2 Cementerio | 2018-09-12 A → 2018-09-12 00:00 | 2018-09-12 A → 2018-09-12 00:00 | none → 1h | 90FF → 90 |
| 92 | 9.3 Camal | 2018-09-12 A → 2018-09-12 00:00 | 2018-09-12 A → 2018-09-12 00:00 | none → 1h | 91FF → 91 |
| 93 | 10 Registro de la Propiedad y Mercantil | 2018-09-12 A → 2018-09-12 00:00 | 2018-09-12 A → 2018-09-12 00:00 | none → 2h | 92FF → 92 |
| 94 | 11 Administración de bomberos | 2018-09-12 A → 2018-09-12 00:00 | 2018-09-13 A → 2018-09-13 00:00 | none → 1h | 93FF → 93 |
| 95 | 12 CRM para ciudadanos. Ventanilla Única | 2018-09-13 A → 2018-09-13 00:00 | 2018-09-13 A → 2018-09-13 00:00 | none → 2h | 94FF → 94 |
| 96 | 15.1 BI Desarrollo Territorial | 2018-09-13 A → 2018-09-13 00:00 | 2018-09-13 A → 2018-09-13 00:00 | none → 1h | 95FF → 95 |
| 97 | 15.5 BI Obras Públicas Municipales | 2018-09-13 A → 2018-09-13 00:00 | 2018-09-13 A → 2018-09-13 00:00 | none → 1h | 96FF → 96 |
| 98 | 15.7 BI Registro de la Propiedad y Mercantil | 2018-09-13 A → 2018-09-13 00:00 | 2018-09-13 A → 2018-09-13 00:00 | none → 1h | 97FF → 97 |
| 99 | 16.1 Consultas Portal Web | 2018-09-13 A → 2018-09-13 00:00 | 2018-09-13 A → 2018-09-13 00:00 | none → 1h | 98FF → 98 |
| 100 | 16.2 Aplicación para móviles (APP) | 2018-09-13 A → 2018-09-13 00:00 | 2018-09-13 A → 2018-09-13 00:00 | none → 1h | 99FF → 99 |
| 101 | Revisar los resultados de las pruebas y necesidades de cambios | 2018-09-13 A → 2018-09-13 00:00 | 2018-09-14 A → 2018-09-14 00:00 | none → 1d | 100FF, 80FF, 31FF → 100, 80, 31 |
| 102 | Planificar Salida a Producción y Soporte | 2018-09-14 A → 2018-09-14 00:00 | 2018-09-17 A → 2018-09-17 00:00 | none → 0.29d |  |
| 103 | Definir Plan de Salida a Producción | 2018-09-14 A → 2018-09-14 00:00 | 2018-09-17 A → 2018-09-17 00:00 | none → 2h | 101FF → 101 |
| 104 | Planificar Estrategia de Soporte | 2018-09-14 A → 2018-09-14 00:00 | 2018-09-17 A → 2018-09-17 00:00 | none → 2h | 101FF → 101 |
| 105 | Planificar Administración del Sistema | 2018-09-14 A → 2018-09-14 00:00 | 2018-09-17 A → 2018-09-17 00:00 | none → 2h | 101FF → 101 |
| 106 | Revisar la ETAPA del Proyecto | 2018-09-17 A → 2018-09-17 00:00 | 2018-09-17 A → 2018-09-17 00:00 | none → 1d | 102FF → 102 |
| 107 | HITO: FINALIZACION ETAPA 3 | 2018-09-17 A → 2018-09-17 00:00 | 2018-09-17 A → 2018-09-17 00:00 | none → 0d | 106FF → 106 |
| 108 | ETAPA 4: Preparación Final previo Despliegue en Producción - Módulos SC y AC | 2018-09-17 A → 2018-09-17 00:00 | 2018-10-11 A → 2018-10-11 00:00 | none → 19.86d |  |
| 109 | Gestión General del Proyecto | 2018-09-17 A → 2018-09-17 00:00 | 2018-09-18 A → 2018-09-18 00:00 | none → 0.57d |  |
| 110 | Confirmar el Plan de Entrenamiento | 2018-09-17 A → 2018-09-17 00:00 | 2018-09-18 A → 2018-09-18 00:00 | none → 2h | 106FF → 106 |
| 111 | Finalizar plan de Salida a Producción | 2018-09-18 A → 2018-09-18 00:00 | 2018-09-18 A → 2018-09-18 00:00 | none → 2h | 110FF → 110 |
| 112 | Entrenamiento en Modulos de Areas Funcionales Fase 1 | 2018-09-18 A → 2018-09-18 00:00 | 2018-10-08 A → 2018-10-08 00:00 | none → 16d | 109FF → 109 |
| 113 | Entrenamiento de Usuarios Funcionales y Certificación de Procesos | 2018-09-18 A → 2018-09-18 00:00 | 2018-10-02 A → 2018-10-02 00:00 | none → 12d | 111FF → 111 |
| 114 | 1 Dirección de Desarrollo Territorial (No incluye Catastro) | 2018-09-18 A → 2018-09-18 00:00 | 2018-09-19 A → 2018-09-19 00:00 | none → 1d |  |
| 115 | 4 Dirección de Justicia y Vigilancia | 2018-09-19 A → 2018-09-19 00:00 | 2018-09-20 A → 2018-09-20 00:00 | none → 1d | 114FF → 114 |
| 116 | 5 Dirección de Desarrollo Humano y Social | 2018-09-20 A → 2018-09-20 00:00 | 2018-09-21 A → 2018-09-21 00:00 | none → 1d | 115FF → 115 |
| 117 | 8.3 Rentas | 2018-09-21 A → 2018-09-21 00:00 | 2018-09-21 A → 2018-09-21 00:00 | none → 1d | 116FF → 116 |
| 118 | 8.4 Tesorería | 2018-09-21 A → 2018-09-21 00:00 | 2018-09-24 A → 2018-09-24 00:00 | none → 1d | 117FF → 117 |
| 119 | 9.1 Mercados | 2018-09-24 A → 2018-09-24 00:00 | 2018-09-25 A → 2018-09-25 00:00 | none → 0.5d | 118FF → 118 |
| 120 | 9.2 Cementerio | 2018-09-25 A → 2018-09-25 00:00 | 2018-09-25 A → 2018-09-25 00:00 | none → 0.5d | 119FF → 119 |
| 121 | 9.3 Camal | 2018-09-25 A → 2018-09-25 00:00 | 2018-09-26 A → 2018-09-26 00:00 | none → 0.5d | 120FF → 120 |
| 122 | 10 Registro de la Propiedad y Mercantil | 2018-09-26 A → 2018-09-26 00:00 | 2018-09-26 A → 2018-09-26 00:00 | none → 1d | 121FF → 121 |
| 123 | 11 Administración de bomberos | 2018-09-27 A → 2018-09-27 00:00 | 2018-09-27 A → 2018-09-27 00:00 | none → 0.5d | 122FF → 122 |
| 124 | 12 CRM para ciudadanos. Ventanilla Única | 2018-09-27 A → 2018-09-27 00:00 | 2018-09-28 A → 2018-09-28 00:00 | none → 1d | 123FF → 123 |
| 125 | 15.1 BI Desarrollo Territorial | 2018-09-28 A → 2018-09-28 00:00 | 2018-09-28 A → 2018-09-28 00:00 | none → 0.5d | 124FF → 124 |
| 126 | 15.5 BI Obras Públicas Municipales | 2018-09-28 A → 2018-09-28 00:00 | 2018-10-01 A → 2018-10-01 00:00 | none → 0.5d | 125FF → 125 |
| 127 | 15.7 BI Registro de la Propiedad y Mercantil | 2018-10-01 A → 2018-10-01 00:00 | 2018-10-01 A → 2018-10-01 00:00 | none → 0.5d | 126FF → 126 |
| 128 | 16.1 Consultas Portal Web | 2018-10-01 A → 2018-10-01 00:00 | 2018-10-02 A → 2018-10-02 00:00 | none → 1d | 127FF → 127 |
| 129 | 16.2 Aplicación para móviles (APP) | 2018-10-02 A → 2018-10-02 00:00 | 2018-10-02 A → 2018-10-02 00:00 | none → 0.5d | 128FF → 128 |
| 130 | Entrenamiento de Usuario Técnicos | 2018-10-02 A → 2018-10-02 00:00 | 2018-10-08 A → 2018-10-08 00:00 | none → 4d | 129FF, 100FF, 80FF, 31FF → 129, 100, 80, 31 |
| 131 | Preparación del Sistema | 2018-10-08 A → 2018-10-08 00:00 | 2018-10-09 A → 2018-10-09 00:00 | none → 0.86d | 112FF → 112 |
| 132 | Completar la Administración del Sistema | 2018-10-08 A → 2018-10-08 00:00 | 2018-10-08 A → 2018-10-08 00:00 | none → 3h |  |
| 133 | Comprobación de la Puesta a Producción | 2018-10-08 A → 2018-10-08 00:00 | 2018-10-09 A → 2018-10-09 00:00 | none → 3h | 132FF → 132 |
| 134 | Transición | 2018-10-09 A → 2018-10-09 00:00 | 2018-10-11 A → 2018-10-11 00:00 | none → 2.14d | 131FF → 131 |
| 135 | Finalizar Procesamiento de Sistemas Legados | 2018-10-09 A → 2018-10-09 00:00 | 2018-10-09 A → 2018-10-09 00:00 | none → 1h |  |
| 136 | Realizar la Salida a Producción - Carga Inicial y Configuración Inicial | 2018-10-09 A → 2018-10-09 00:00 | 2018-10-11 A → 2018-10-11 00:00 | none → 2d | 135FF → 135 |
| 137 | Revisar la ETAPA del Proyecto | 2018-10-11 A → 2018-10-11 00:00 | 2018-10-11 A → 2018-10-11 00:00 | none → 2h | 134FF → 134 |
| 138 | HITO: FINALIZACION ETAPA 4 | 2018-10-11 A → 2018-10-11 00:00 | 2018-10-11 A → 2018-10-11 00:00 | none → 0d | 137FF → 137 |
| 139 | ETAPA 5: Despliegue en Producción y Soporte Técnico - Módulos SC y AC | 2018-10-11 A → 2018-10-11 00:00 | 2018-11-16 A → 2018-11-16 00:00 | none → 30d | 108FF → 108 |
| 140 | Soporte en Producción | 2018-10-11 A → 2018-10-11 00:00 | 2018-11-16 A → 2018-11-16 00:00 | none → 30d |  |

| ID | Task | Start | Finish | Duration | Predecessors |
| --- | --- | --- | --- | --- | --- |
| 141 | Soporte durante la Salida a Producción | 2018-10-11 A → 2018-10-11 00:00 | 2018-11-16 A → 2018-11-16 00:00 | none → 30d | 137FF → 137 |
| 142 | Resolver incidentes críticos | 2018-10-11 A → 2018-10-11 00:00 | 2018-11-05 A → 2018-11-05 00:00 | none → 20d | 137FF → 137 |
| 143 | Entregar el soporte y Administración al cliente | 2018-10-11 A → 2018-10-11 00:00 | 2018-10-12 A → 2018-10-12 00:00 | none → 1d |  |
| 144 | Mejora Continua | 2018-10-11 A → 2018-10-11 00:00 | 2018-10-24 A → 2018-10-24 00:00 | none → 10d |  |
| 145 | Monitoreo del Sistema y Acompañamiento ETAPA1 | 2018-10-11 A → 2018-10-11 00:00 | 2018-10-24 A → 2018-10-24 00:00 | none → 10d | 137FF → 137 |
| 146 | Ajustes y Configuraciones finales al Software acorde a necesidades Entidad | 2018-10-11 A → 2018-10-11 00:00 | 2018-10-24 A → 2018-10-24 00:00 | none → 10d | 137FF → 137 |
| 147 | Cierre de la ETAPA 5 | 2018-10-24 A → 2018-10-24 00:00 | 2018-10-24 A → 2018-10-24 00:00 | none → 0.29d |  |
| 148 | Reunión de Cierre de la ETAPA 5 | 2018-10-24 A → 2018-10-24 00:00 | 2018-10-24 A → 2018-10-24 00:00 | none → 2h | 144FF → 144 |
| 149 | HITO: FIN DE LA ETAPA 5 | 2018-10-24 A → 2018-10-24 00:00 | 2018-10-24 A → 2018-10-24 00:00 | none → 0d | 148FF → 148 |
| 150 | ETAPA 6: Estabilización, Apoyo Emisión 2019 y Desarrollo de funcionalidades no establecidas en el Alcance Contractual | 2018-11-16 A → 2018-11-16 00:00 | 2019-01-25 A → 2019-01-25 00:00 | none → 57.29d |  |
| 151 | Depuración de Errores de Calidad de Información fuente migrada (Base Oracle) | 2018-11-16 A → 2018-11-16 00:00 | 2018-12-24 A → 2018-12-24 00:00 | none → 30d | 139FF → 139 |
| 152 | Soporte y Mantenimiento de Módulos de la Fase 1 | 2018-11-16 A → 2018-11-16 00:00 | 2018-12-24 A → 2018-12-24 00:00 | none → 30d | 139FF → 139 |
| 153 | Adaptaciones a Software para incluir Nuevas funcionalidades no contempladas en alcance proyecto | 2018-11-16 A → 2018-11-16 00:00 | 2018-12-24 A → 2018-12-24 00:00 | none → 30d | 139FF → 139 |
| 154 | Implementación de Licencia temporal de Modulo de Catastro Urbano SIIM | 2018-12-03 A → 2018-12-03 00:00 | 2018-12-26 A → 2018-12-26 00:00 | none → 20d |  |
| 155 | Migración de información de Emisión de Impuestos de Catastro Urbano 2019 | 2018-12-03 A → 2018-12-03 00:00 | 2018-12-26 A → 2018-12-26 00:00 | none → 20d |  |
| 156 | Creación de interfaces mediante ETLs para integración entre Sistema Oracle y SIIM para la recaudación de Impuestos 2019 de Catastro Urbano | 2018-12-03 A → 2018-12-03 00:00 | 2018-12-26 A → 2018-12-26 00:00 | none → 20d |  |
| 157 | Soporte en Recaudación de Impuestos de Catastro urbano y mejoras 2019 | 2018-12-26 A → 2018-12-26 00:00 | 2019-01-25 A → 2019-01-25 00:00 | none → 25d | 156FF → 156 |
| 158 | Cierre de la FASE 1 | 2019-01-25 A → 2019-01-25 00:00 | 2019-01-25 A → 2019-01-25 00:00 | none → 0.29d |  |
| 159 | Reunión de Cierre de la FASE 1 | 2019-01-25 A → 2019-01-25 00:00 | 2019-01-25 A → 2019-01-25 00:00 | none → 2h | 157FF → 157 |
| 160 | HITO: FIN DE LA FASE 1 | 2019-01-25 A → 2019-01-25 00:00 | 2019-01-25 A → 2019-01-25 00:00 | none → 0d | 159FF → 159 |
| 161 | FASE 2: Implementación de Módulos de Planificación de Recursos Institucionales - PRI | 2019-01-25 A → 2019-01-25 00:00 | 2019-05-14 A → 2019-05-14 00:00 | none → 88.29d |  |
| 162 | ETAPA 1: Instalación del SIIM - Módulos PRI | 2019-01-25 A → 2019-01-25 00:00 | 2019-01-31 A → 2019-01-31 00:00 | none → 4.14d |  |
| 163 | Entrega e Instalación del Software | 2019-01-25 A → 2019-01-25 00:00 | 2019-01-30 A → 2019-01-30 00:00 | none → 3.14d |  |
| 164 | Instalar SIIM en Servidor | 2019-01-25 A → 2019-01-25 00:00 | 2019-01-30 A → 2019-01-30 00:00 | none → 2.86d |  |
| 165 | Instalar Módulos PRI | 2019-01-25 A → 2019-01-25 00:00 | 2019-01-30 A → 2019-01-30 00:00 | none → 2.86d | 150FF → 150 |
| 166 | 2.1 Administración Técnica | 2019-01-25 A → 2019-01-25 00:00 | 2019-01-25 A → 2019-01-25 00:00 | none → 2h |  |
| 167 | 2.2 Salud Ocupacional y Riesgos | 2019-01-25 A → 2019-01-25 00:00 | 2019-01-28 A → 2019-01-28 00:00 | none → 2h | 166FF → 166 |
| 168 | 3.2 Adquisiciones | 2019-01-28 A → 2019-01-28 00:00 | 2019-01-28 A → 2019-01-28 00:00 | none → 2h | 167FF → 167 |
| 169 | 6.1 Administración de Bienes | 2019-01-28 A → 2019-01-28 00:00 | 2019-01-28 A → 2019-01-28 00:00 | none → 2h | 168FF → 168 |
| 170 | 8.1 Contabilidad | 2019-01-28 A → 2019-01-28 00:00 | 2019-01-28 A → 2019-01-28 00:00 | none → 2h | 169FF → 169 |
| 171 | 8.2 Presupuestos | 2019-01-28 A → 2019-01-28 00:00 | 2019-01-29 A → 2019-01-29 00:00 | none → 2h | 170FF → 170 |
| 172 | 13 CRM para Urbanizaciones | 2019-01-29 A → 2019-01-29 00:00 | 2019-01-29 A → 2019-01-29 00:00 | none → 2h | 171FF → 171 |
| 173 | 14 Dirección de Planificación Institucional (Incluye control de proyectos de Obras Públicas | 2019-01-29 A → 2019-01-29 00:00 | 2019-01-29 A → 2019-01-29 00:00 | none → 2h | 172FF → 172 |
| 174 | 15.6 Servicios Corporativos | 2019-01-29 A → 2019-01-29 00:00 | 2019-01-29 A → 2019-01-29 00:00 | none → 2h | 173FF → 173 |
| 175 | 15.8 BI Planificación Institucional | 2019-01-29 A → 2019-01-29 00:00 | 2019-01-30 A → 2019-01-30 00:00 | none → 2h | 174FF → 174 |
| 176 | Entrega de Software | 2019-01-30 A → 2019-01-30 00:00 | 2019-01-30 A → 2019-01-30 00:00 | none → 2h | 164FF → 164 |
| 177 | Revisar la ETAPA del Proyecto | 2019-01-30 A → 2019-01-30 00:00 | 2019-01-31 A → 2019-01-31 00:00 | none → 1d | 163FF → 163 |
| 178 | HITO: FINALIZACION ETAPA 1 | 2019-01-31 A → 2019-01-31 00:00 | 2019-01-31 A → 2019-01-31 00:00 | none → 0d | 177FF → 177 |
| 179 | ETAPA 2: Levantamiento de Características Institucionales - Módulos PRI | 2019-01-31 A → 2019-01-31 00:00 | 2019-02-11 A → 2019-02-11 00:00 | none → 8.57d | 162FF → 162 |
| 180 | Actividades de Gestión del Proyecto | 2019-01-31 A → 2019-01-31 00:00 | 2019-01-31 A → 2019-01-31 00:00 | none → 0.57d |  |
| 181 | Revisión del Plan del Proyecto | 2019-01-31 A → 2019-01-31 00:00 | 2019-01-31 A → 2019-01-31 00:00 | none → 2h |  |
| 182 | Programar talleres de requerimientos de Entidad | 2019-01-31 A → 2019-01-31 00:00 | 2019-01-31 A → 2019-01-31 00:00 | none → 2h | 181FF → 181 |
| 183 | Sesiones de Requerimientos del Entidad | 2019-01-31 A → 2019-01-31 00:00 | 2019-02-08 A → 2019-02-08 00:00 | none → 6d | 180FF → 180 |
| 184 | Conducir Sesiones de Requerimientos | 2019-01-31 A → 2019-01-31 00:00 | 2019-02-07 A → 2019-02-07 00:00 | none → 5d |  |
| 185 | Crear Documento de Características del Entidad | 2019-02-07 A → 2019-02-07 00:00 | 2019-02-08 A → 2019-02-08 00:00 | none → 1d | 184FF → 184 |
| 186 | Revisar el Documento de Características del Entidad | 2019-02-08 A → 2019-02-08 00:00 | 2019-02-08 A → 2019-02-08 00:00 | none → 1d | 183FF → 183 |
| 187 | Revisar el Documento de Características del Entidad | 2019-02-08 A → 2019-02-08 00:00 | 2019-02-08 A → 2019-02-08 00:00 | none → 4h |  |
| 188 | Revisar el Plan del Proyecto | 2019-02-08 A → 2019-02-08 00:00 | 2019-02-08 A → 2019-02-08 00:00 | none → 3h | 187FF → 187 |
| 189 | Revisar la ETAPA del Proyecto | 2019-02-08 A → 2019-02-08 00:00 | 2019-02-11 A → 2019-02-11 00:00 | none → 1d | 186FF → 186 |
| 190 | HITO: FINALIZACION ETAPA 2 | 2019-02-11 A → 2019-02-11 00:00 | 2019-02-11 A → 2019-02-11 00:00 | none → 0d | 189FF → 189 |
| 191 | ETAPA 3: Migración de Datos, Configuración y Pruebas de Operación de Módulos - Módulos PRI | 2019-02-11 A → 2019-02-11 00:00 | 2019-03-25 A → 2019-03-25 00:00 | none → 33.71d | 179FF → 179 |
| 192 | Gestión General del Proyecto | 2019-02-11 A → 2019-02-11 00:00 | 2019-02-13 A → 2019-02-13 00:00 | none → 1.57d |  |
| 193 | Planificar cambio Organizacional | 2019-02-11 A → 2019-02-11 00:00 | 2019-02-12 A → 2019-02-12 00:00 | none → 3h |  |
| 194 | Planificar Entrenamiento a Usuarios Finales | 2019-02-12 A → 2019-02-12 00:00 | 2019-02-12 A → 2019-02-12 00:00 | none → 4h | 193FF → 193 |
| 195 | Definir y Preparar la Migración de Datos | 2019-02-12 A → 2019-02-12 00:00 | 2019-02-13 A → 2019-02-13 00:00 | none → 4h | 194FF → 194 |
| 196 | Configuración del Sistema en Producción | 2019-02-13 A → 2019-02-13 00:00 | 2019-03-08 A → 2019-03-08 00:00 | none → 19.57d | 192FF → 192 |
| 197 | Instalar el SIIM en Producción | 2019-02-13 A → 2019-02-13 00:00 | 2019-02-13 A → 2019-02-13 00:00 | none → 4h |  |
| 198 | Configurar Inicialización del Sistema | 2019-02-13 A → 2019-02-13 00:00 | 2019-02-14 A → 2019-02-14 00:00 | none → 1d | 197FF → 197 |
| 199 | Realizar la Migración de Datos | 2019-02-14 A → 2019-02-14 00:00 | 2019-03-01 A → 2019-03-01 00:00 | none → 13d | 198FF → 198 |
| 200 | Desarrollar Adaptaciones al Software | 2019-03-01 A → 2019-03-01 00:00 | 2019-03-05 A → 2019-03-05 00:00 | none → 2d | 199FF → 199 |
| 201 | Configuración del Sistema en base al Documento de Características del Entidad | 2019-03-05 A → 2019-03-05 00:00 | 2019-03-06 A → 2019-03-06 00:00 | none → 1d | 200FF → 200 |
| 202 | Configurar Interfaces | 2019-03-06 A → 2019-03-06 00:00 | 2019-03-07 A → 2019-03-07 00:00 | none → 1d | 201FF → 201 |
| 203 | Configurar Usuarios y Autorizaciones | 2019-03-07 A → 2019-03-07 00:00 | 2019-03-08 A → 2019-03-08 00:00 | none → 1d | 202FF → 202 |
| 204 | Gestión del Cambio Organizacional | 2019-03-08 A → 2019-03-08 00:00 | 2019-03-08 A → 2019-03-08 00:00 | none → 0.29d | 196FF → 196 |
| 205 | Conducir la comunicación de la Gestión de Cambios (si es aplicable) | 2019-03-08 A → 2019-03-08 00:00 | 2019-03-08 A → 2019-03-08 00:00 | none → 2h |  |
| 206 | Pruebas de validación del Sistema | 2019-03-08 A → 2019-03-08 00:00 | 2019-03-14 A → 2019-03-14 00:00 | none → 4.57d | 204FF → 204 |
| 207 | Mantener la Lista Maestra de Procesos de Entidad | 2019-03-08 A → 2019-03-08 00:00 | 2019-03-11 A → 2019-03-11 00:00 | none → 4h |  |
| 208 | Conducir Talleres de Validación | 2019-03-11 A → 2019-03-11 00:00 | 2019-03-14 A → 2019-03-14 00:00 | none → 4d | 207FF → 207 |
| 209 | 2.1 Administración Técnica | 2019-03-11 A → 2019-03-11 00:00 | 2019-03-11 A → 2019-03-11 00:00 | none → 4h |  |
| 210 | 2.2 Salud Ocupacional y Riesgos | 2019-03-11 A → 2019-03-11 00:00 | 2019-03-11 A → 2019-03-11 00:00 | none → 2h | 209FF → 209 |

| ID | Task | Start | Finish | Duration | Predecessors |
| --- | --- | --- | --- | --- | --- |
| 211 | 3.2 Adquisiciones | 2019-03-11 A → 2019-03-11 00:00 | 2019-03-12 A → 2019-03-12 00:00 | none → 4h | 210FF → 210 |
| 212 | 6.1 Administración de Bienes | 2019-03-12 A → 2019-03-12 00:00 | 2019-03-12 A → 2019-03-12 00:00 | none → 2h | 211FF → 211 |
| 213 | 8.1 Contabilidad | 2019-03-12 A → 2019-03-12 00:00 | 2019-03-13 A → 2019-03-13 00:00 | none → 4h | 212FF → 212 |
| 214 | 8.2 Presupuestos | 2019-03-13 A → 2019-03-13 00:00 | 2019-03-13 A → 2019-03-13 00:00 | none → 4h | 213FF → 213 |
| 215 | 13 CRM para Urbanizaciones | 2019-03-13 A → 2019-03-13 00:00 | 2019-03-13 A → 2019-03-13 00:00 | none → 2h | 214FF → 214 |
| 216 | 14 Dirección de Planificación Institucional (Incluye control de proyectos de Obras Públicas) | 2019-03-13 A → 2019-03-13 00:00 | 2019-03-14 A → 2019-03-14 00:00 | none → 2h | 215FF → 215 |
| 217 | 15.6 BI Servicios Corporativos | 2019-03-14 A → 2019-03-14 00:00 | 2019-03-14 A → 2019-03-14 00:00 | none → 2h | 216FF → 216 |
| 218 | 15.8 BI Planificación Institucional | 2019-03-14 A → 2019-03-14 00:00 | 2019-03-14 A → 2019-03-14 00:00 | none → 2h | 217FF → 217 |
| 219 | Pruebas de aceptacion del Sistema | 2019-03-14 A → 2019-03-14 00:00 | 2019-03-21 A → 2019-03-21 00:00 | none → 5.43d | 206FF → 206 |
| 220 | Definir casos de prueba y alcance | 2019-03-14 A → 2019-03-14 00:00 | 2019-03-14 A → 2019-03-14 00:00 | none → 3h |  |
| 221 | Preparar ambiente de pruebas | 2019-03-14 A → 2019-03-14 00:00 | 2019-03-15 A → 2019-03-15 00:00 | none → 1d | 220FF → 220 |
| 222 | Ejecutar el plan de pruebas | 2019-03-15 A → 2019-03-15 00:00 | 2019-03-21 A → 2019-03-21 00:00 | none → 4d | 221FF → 221 |
| 223 | 2.1 Administración Técnica | 2019-03-15 A → 2019-03-15 00:00 | 2019-03-18 A → 2019-03-18 00:00 | none → 4h |  |
| 224 | 2.2 Salud Ocupacional y Riesgos | 2019-03-18 A → 2019-03-18 00:00 | 2019-03-18 A → 2019-03-18 00:00 | none → 2h | 223FF → 223 |
| 225 | 3.2 Adquisiciones | 2019-03-18 A → 2019-03-18 00:00 | 2019-03-19 A → 2019-03-19 00:00 | none → 4h | 224FF → 224 |
| 226 | 6.1 Administración de Bienes | 2019-03-19 A → 2019-03-19 00:00 | 2019-03-19 A → 2019-03-19 00:00 | none → 2h | 225FF → 225 |
| 227 | 8.1 Contabilidad | 2019-03-19 A → 2019-03-19 00:00 | 2019-03-19 A → 2019-03-19 00:00 | none → 4h | 226FF → 226 |
| 228 | 8.2 Presupuestos | 2019-03-19 A → 2019-03-19 00:00 | 2019-03-20 A → 2019-03-20 00:00 | none → 4h | 227FF → 227 |
| 229 | 13 CRM para Urbanizaciones | 2019-03-20 A → 2019-03-20 00:00 | 2019-03-20 A → 2019-03-20 00:00 | none → 2h | 228FF → 228 |
| 230 | 14 Dirección de Planificación Institucional (Incluye control de proyectos de Obras Públicas) | 2019-03-20 A → 2019-03-20 00:00 | 2019-03-20 A → 2019-03-20 00:00 | none → 2h | 229FF → 229 |
| 231 | 15.6 BI Servicios Corporativos | 2019-03-20 A → 2019-03-20 00:00 | 2019-03-21 A → 2019-03-21 00:00 | none → 2h | 230FF → 230 |
| 232 | 15.8 BI Planificación Institucional | 2019-03-21 A → 2019-03-21 00:00 | 2019-03-21 A → 2019-03-21 00:00 | none → 2h | 231FF → 231 |
| 233 | Revisar los resultados de las pruebas y necesidades de cambios | 2019-03-14 A → 2019-03-14 00:00 | 2019-03-15 A → 2019-03-15 00:00 | none → 1d |  |
| 234 | Planificar Salida a Producción y Soporte | 2019-03-21 A → 2019-03-21 00:00 | 2019-03-22 A → 2019-03-22 00:00 | none → 1.29d | 219FF → 219 |
| 235 | Definir Plan de Salida a Producción | 2019-03-21 A → 2019-03-21 00:00 | 2019-03-21 A → 2019-03-21 00:00 | none → 3h |  |
| 236 | Planificar Estrategia de Soporte | 2019-03-21 A → 2019-03-21 00:00 | 2019-03-22 A → 2019-03-22 00:00 | none → 3h | 235FF → 235 |
| 237 | Planificar Administración del Sistema | 2019-03-22 A → 2019-03-22 00:00 | 2019-03-22 A → 2019-03-22 00:00 | none → 3h | 236FF → 236 |
| 238 | Revisar la ETAPA del Proyecto | 2019-03-22 A → 2019-03-22 00:00 | 2019-03-25 A → 2019-03-25 00:00 | none → 1d | 234FF → 234 |
| 239 | HITO: FINALIZACION ETAPA 3 | 2019-03-25 A → 2019-03-25 00:00 | 2019-03-25 A → 2019-03-25 00:00 | none → 0d | 238FF → 238 |
| 240 | ETAPA 4: Preparación Final previo Despliegue en Producción - Módulos PRI | 2019-03-25 A → 2019-03-25 00:00 | 2019-04-08 A → 2019-04-08 00:00 | none → 11.43d | 191FF → 191 |
| 241 | Gestión General del Proyecto | 2019-03-25 A → 2019-03-25 00:00 | 2019-03-26 A → 2019-03-26 00:00 | none → 1.14d |  |
| 242 | Confirmar el Plan de Entrenamiento | 2019-03-25 A → 2019-03-25 00:00 | 2019-03-25 A → 2019-03-25 00:00 | none → 4h |  |
| 243 | Finalizar plan de Salida a Producción | 2019-03-25 A → 2019-03-25 00:00 | 2019-03-26 A → 2019-03-26 00:00 | none → 4h | 242FF → 242 |
| 244 | Entrenamiento | 2019-03-26 A → 2019-03-26 00:00 | 2019-04-02 A → 2019-04-02 00:00 | none → 6d | 241FF → 241 |
| 245 | Entrenamiento de Usuarios Funcionales y Certificación de Procesos | 2019-03-26 A → 2019-03-26 00:00 | 2019-03-29 A → 2019-03-29 00:00 | none → 4d |  |
| 246 | 2.1 Administración Técnica | 2019-03-26 A → 2019-03-26 00:00 | 2019-03-26 A → 2019-03-26 00:00 | none → 4h |  |
| 247 | 2.2 Salud Ocupacional y Riesgos | 2019-03-26 A → 2019-03-26 00:00 | 2019-03-27 A → 2019-03-27 00:00 | none → 2h | 246FF → 246 |
| 248 | 3.2 Adquisiciones | 2019-03-27 A → 2019-03-27 00:00 | 2019-03-27 A → 2019-03-27 00:00 | none → 4h | 247FF → 247 |
| 249 | 6.1 Administración de Bienes | 2019-03-27 A → 2019-03-27 00:00 | 2019-03-27 A → 2019-03-27 00:00 | none → 2h | 248FF → 248 |
| 250 | 8.1 Contabilidad | 2019-03-27 A → 2019-03-27 00:00 | 2019-03-28 A → 2019-03-28 00:00 | none → 4h | 249FF → 249 |
| 251 | 8.2 Presupuestos | 2019-03-28 A → 2019-03-28 00:00 | 2019-03-28 A → 2019-03-28 00:00 | none → 4h | 250FF → 250 |
| 252 | 13 CRM para Urbanizaciones | 2019-03-28 A → 2019-03-28 00:00 | 2019-03-29 A → 2019-03-29 00:00 | none → 2h | 251FF → 251 |
| 253 | 14 Dirección de Planificación Institucional (Incluye control de proyectos de Obras Públicas) | 2019-03-29 A → 2019-03-29 00:00 | 2019-03-29 A → 2019-03-29 00:00 | none → 2h | 252FF → 252 |
| 254 | 15.6 BI Servicios Corporativos | 2019-03-29 A → 2019-03-29 00:00 | 2019-03-29 A → 2019-03-29 00:00 | none → 2h | 253FF → 253 |
| 255 | 15.8 BI Planificación Institucional | 2019-03-29 A → 2019-03-29 00:00 | 2019-03-29 A → 2019-03-29 00:00 | none → 2h | 254FF → 254 |
| 256 | Entrenamiento de Usuario Técnicos | 2019-03-26 A → 2019-03-26 00:00 | 2019-04-02 A → 2019-04-02 00:00 | none → 6d |  |
| 257 | Preparación del Sistema | 2019-04-02 A → 2019-04-02 00:00 | 2019-04-03 A → 2019-04-03 00:00 | none → 1.43d | 244FF → 244 |
| 258 | Completar la Administración del Sistema | 2019-04-02 A → 2019-04-02 00:00 | 2019-04-03 A → 2019-04-03 00:00 | none → 5h |  |
| 259 | Comprobación de la Puesta a Producción | 2019-04-03 A → 2019-04-03 00:00 | 2019-04-03 A → 2019-04-03 00:00 | none → 5h | 258FF → 258 |
| 260 | Transición | 2019-04-03 A → 2019-04-03 00:00 | 2019-04-08 A → 2019-04-08 00:00 | none → 2.57d | 257FF → 257 |
| 261 | Finalizar Procesamiento de Sistemas Legados | 2019-04-03 A → 2019-04-03 00:00 | 2019-04-04 A → 2019-04-04 00:00 | none → 4h |  |
| 262 | Realizar la Salida a Producción - Carga Inicial y Configuración Inicial | 2019-04-04 A → 2019-04-04 00:00 | 2019-04-08 A → 2019-04-08 00:00 | none → 2d | 261FF → 261 |
| 263 | Revisar la ETAPA del Proyecto | 2019-04-08 A → 2019-04-08 00:00 | 2019-04-08 A → 2019-04-08 00:00 | none → 2h | 260FF → 260 |
| 264 | HITO: FINALIZACION ETAPA 4 | 2019-04-08 A → 2019-04-08 00:00 | 2019-04-08 A → 2019-04-08 00:00 | none → 0d | 263FF → 263 |
| 265 | ETAPA 5: Despliegue en Producción y Soporte Técnico - Módulos PRI | 2019-04-08 A → 2019-04-08 00:00 | 2019-05-14 A → 2019-05-14 00:00 | none → 30.43d | 240FF → 240 |
| 266 | Soporte en Producción | 2019-04-08 A → 2019-04-08 00:00 | 2019-04-25 A → 2019-04-25 00:00 | none → 15d |  |
| 267 | Soporte durante la Salida a Producción | 2019-04-08 A → 2019-04-08 00:00 | 2019-04-25 A → 2019-04-25 00:00 | none → 15d |  |
| 268 | Resolver incidentes críticos | 2019-04-08 A → 2019-04-08 00:00 | 2019-04-25 A → 2019-04-25 00:00 | none → 15d | 263FF → 263 |
| 269 | Entregar el soporte y Administración al cliente | 2019-04-08 A → 2019-04-08 00:00 | 2019-04-10 A → 2019-04-10 00:00 | none → 2d | 263FF → 263 |
| 270 | Mejora Continua | 2019-04-25 A → 2019-04-25 00:00 | 2019-05-14 A → 2019-05-14 00:00 | none → 15d | 266FF → 266 |
| 271 | Monitoreo del Sistema y Acompañamiento ETAPA2 | 2019-04-25 A → 2019-04-25 00:00 | 2019-05-14 A → 2019-05-14 00:00 | none → 15d | 263FF → 263 |
| 272 | Ajustes y Configuraciones finales al Software acorde a necesidades Entidad | 2019-04-25 A → 2019-04-25 00:00 | 2019-05-14 A → 2019-05-14 00:00 | none → 15d | 263FF → 263 |
| 273 | Cierre de la FASE 2 | 2019-05-14 A → 2019-05-14 00:00 | 2019-05-14 A → 2019-05-14 00:00 | none → 0.43d | 270FF → 270 |
| 274 | Reunión de Cierre de la FASE 2 | 2019-05-14 A → 2019-05-14 00:00 | 2019-05-14 A → 2019-05-14 00:00 | none → 3h |  |
| 275 | HITO: FIN DE LA FASE 2 | 2019-05-14 A → 2019-05-14 00:00 | 2019-05-14 A → 2019-05-14 00:00 | none → 0d | 273FF → 273 |
| 276 | FASE 3: Implementación de Módulos de Planificación de Recursos Institucionales - PRI | 2019-04-08 A → 2019-04-08 00:00 | 2019-07-10 A → 2019-07-10 00:00 | none → 76.86d |  |
| 277 | ETAPA 1: Instalación del SIIM - Módulos PRI | 2019-04-08 A → 2019-04-08 00:00 | 2019-04-12 A → 2019-04-12 00:00 | none → 4.29d |  |
| 278 | Entrega e Instalación del Software | 2019-04-08 A → 2019-04-08 00:00 | 2019-04-11 A → 2019-04-11 00:00 | none → 3.29d |  |
| 279 | Instalar SIIM en Servidor | 2019-04-08 A → 2019-04-08 00:00 | 2019-04-10 A → 2019-04-10 00:00 | none → 3d |  |
| 280 | Instalar Módulos PRI | 2019-04-08 A → 2019-04-08 00:00 | 2019-04-10 A → 2019-04-10 00:00 | none → 3d | 264FF → 264 |

| ID | Task | Start | Finish | Duration | Predecessors |
| --- | --- | --- | --- | --- | --- |
| 281 | Entrega de Software | 2019-04-10 A → 2019-04-10 00:00 | 2019-04-11 A → 2019-04-11 00:00 | none → 2h | 279FF → 279 |
| 282 | Revisar la ETAPA del Proyecto | 2019-04-11 A → 2019-04-11 00:00 | 2019-04-12 A → 2019-04-12 00:00 | none → 1d | 278FF → 278 |
| 283 | HITO: FINALIZACION ETAPA 1 | 2019-04-12 A → 2019-04-12 00:00 | 2019-04-12 A → 2019-04-12 00:00 | none → 0d | 282FF → 282 |
| 284 | ETAPA 2: Levantamiento de Características Institucionales - Módulos PRI | 2019-04-12 A → 2019-04-12 00:00 | 2019-04-23 A → 2019-04-23 00:00 | none → 8.57d | 277FF → 277 |
| 285 | Actividades de Gestión del Proyecto | 2019-04-12 A → 2019-04-12 00:00 | 2019-04-12 A → 2019-04-12 00:00 | none → 0.57d |  |
| 286 | Revisión del Plan del Proyecto | 2019-04-12 A → 2019-04-12 00:00 | 2019-04-12 A → 2019-04-12 00:00 | none → 2h |  |
| 287 | Programar talleres de requerimientos de Entidad | 2019-04-12 A → 2019-04-12 00:00 | 2019-04-12 A → 2019-04-12 00:00 | none → 2h | 286FF → 286 |
| 288 | Sesiones de Requerimientos del Entidad | 2019-04-12 A → 2019-04-12 00:00 | 2019-04-19 A → 2019-04-19 00:00 | none → 6d | 285FF → 285 |
| 289 | Conducir Sesiones de Requerimientos | 2019-04-12 A → 2019-04-12 00:00 | 2019-04-17 A → 2019-04-17 00:00 | none → 3d |  |
| 290 | Crear Documento de Características del Entidad | 2019-04-17 A → 2019-04-17 00:00 | 2019-04-19 A → 2019-04-19 00:00 | none → 3d | 289FF → 289 |
| 291 | Revisar el Documento de Características del Entidad | 2019-04-19 A → 2019-04-19 00:00 | 2019-04-22 A → 2019-04-22 00:00 | none → 1d | 288FF → 288 |
| 292 | Revisar el Documento de Características del Entidad | 2019-04-19 A → 2019-04-19 00:00 | 2019-04-22 A → 2019-04-22 00:00 | none → 4h |  |
| 293 | Revisar el Plan del Proyecto | 2019-04-22 A → 2019-04-22 00:00 | 2019-04-22 A → 2019-04-22 00:00 | none → 3h | 292FF → 292 |
| 294 | Revisar la ETAPA del Proyecto | 2019-04-22 A → 2019-04-22 00:00 | 2019-04-23 A → 2019-04-23 00:00 | none → 1d | 291FF → 291 |
| 295 | HITO: FINALIZACION ETAPA 2 | 2019-04-23 A → 2019-04-23 00:00 | 2019-04-23 A → 2019-04-23 00:00 | none → 0d | 294FF → 294 |
| 296 | ETAPA 3: Migración de Datos, Configuración y Pruebas de Operación de Módulos - Módulos PRI | 2019-04-23 A → 2019-04-23 00:00 | 2019-06-03 A → 2019-06-03 00:00 | none → 33.43d | 284FF → 284 |
| 297 | Gestión General del Proyecto | 2019-04-23 A → 2019-04-23 00:00 | 2019-04-24 A → 2019-04-24 00:00 | none → 1.57d |  |
| 298 | Planificar cambio Organizacional | 2019-04-23 A → 2019-04-23 00:00 | 2019-04-23 A → 2019-04-23 00:00 | none → 3h |  |
| 299 | Planificar Entrenamiento a Usuarios Finales | 2019-04-23 A → 2019-04-23 00:00 | 2019-04-24 A → 2019-04-24 00:00 | none → 4h | 298FF → 298 |
| 300 | Definir y Preparar la Migración de Datos | 2019-04-24 A → 2019-04-24 00:00 | 2019-04-24 A → 2019-04-24 00:00 | none → 4h | 299FF → 299 |
| 301 | Configuración del Sistema en Producción | 2019-04-24 A → 2019-04-24 00:00 | 2019-05-20 A → 2019-05-20 00:00 | none → 20.57d | 297FF → 297 |
| 302 | Instalar el SIIM en Producción | 2019-04-24 A → 2019-04-24 00:00 | 2019-04-25 A → 2019-04-25 00:00 | none → 4h |  |
| 303 | Configurar Inicialización del Sistema | 2019-04-25 A → 2019-04-25 00:00 | 2019-04-26 A → 2019-04-26 00:00 | none → 1d | 302FF → 302 |
| 304 | Realizar la Migración de Datos | 2019-04-26 A → 2019-04-26 00:00 | 2019-05-09 A → 2019-05-09 00:00 | none → 10d | 303FF → 303 |
| 305 | Desarrollar Adaptaciones al Software | 2019-05-09 A → 2019-05-09 00:00 | 2019-05-15 A → 2019-05-15 00:00 | none → 5d | 304FF → 304 |
| 306 | Configuración del Sistema en base al Documento de Características del Entidad | 2019-05-15 A → 2019-05-15 00:00 | 2019-05-17 A → 2019-05-17 00:00 | none → 2d | 305FF → 305 |
| 307 | Configurar Interfaces | 2019-05-17 A → 2019-05-17 00:00 | 2019-05-20 A → 2019-05-20 00:00 | none → 1d | 306FF → 306 |
| 308 | Configurar Usuarios y Autorizaciones | 2019-05-20 A → 2019-05-20 00:00 | 2019-05-20 A → 2019-05-20 00:00 | none → 1d | 307FF → 307 |
| 309 | Gestión del Cambio Organizacional | 2019-05-20 A → 2019-05-20 00:00 | 2019-05-22 A → 2019-05-22 00:00 | none → 2d | 301FF → 301 |
| 310 | Conducir la comunicación de la Gestión de Cambios (si es aplicable) | 2019-05-20 A → 2019-05-20 00:00 | 2019-05-22 A → 2019-05-22 00:00 | none → 2d |  |
| 311 | Pruebas de validación/aceptación del Sistema | 2019-05-22 A → 2019-05-22 00:00 | 2019-05-24 A → 2019-05-24 00:00 | none → 2.57d | 309FF → 309 |
| 312 | Mantener la Lista Maestra de Procesos de Entidad | 2019-05-22 A → 2019-05-22 00:00 | 2019-05-23 A → 2019-05-23 00:00 | none → 4h |  |
| 313 | Conducir Talleres de Validación | 2019-05-23 A → 2019-05-23 00:00 | 2019-05-24 A → 2019-05-24 00:00 | none → 2d | 312FF → 312 |
| 314 | 3.1 Compras Públicas | 2019-05-23 A → 2019-05-23 00:00 | 2019-05-23 A → 2019-05-23 00:00 | none → 2h |  |
| 315 | 6.2 Servicios Generales | 2019-05-23 A → 2019-05-23 00:00 | 2019-05-23 A → 2019-05-23 00:00 | none → 2h | 314FF → 314 |
| 316 | 8.5 Gestión Jurídica - Financiera | 2019-05-23 A → 2019-05-23 00:00 | 2019-05-23 A → 2019-05-23 00:00 | none → 2h | 315FF → 315 |
| 317 | 15.2 BI Financiero | 2019-05-23 A → 2019-05-23 00:00 | 2019-05-24 A → 2019-05-24 00:00 | none → 2h | 316FF → 316 |
| 318 | 15.3 BI Administración del Talento Humano | 2019-05-24 A → 2019-05-24 00:00 | 2019-05-24 A → 2019-05-24 00:00 | none → 2h | 317FF → 317 |
| 319 | 15.4 BI Compras Públicas | 2019-05-24 A → 2019-05-24 00:00 | 2019-05-24 A → 2019-05-24 00:00 | none → 2h | 318FF → 318 |
| 320 | 15.9 Tablero de Control | 2019-05-24 A → 2019-05-24 00:00 | 2019-05-24 A → 2019-05-24 00:00 | none → 2h | 319FF → 319 |
| 321 | Pruebas de aceptacion del Sistema | 2019-05-24 A → 2019-05-24 00:00 | 2019-05-30 A → 2019-05-30 00:00 | none → 4.43d | 311FF → 311 |
| 322 | Definir casos de prueba y alcance | 2019-05-24 A → 2019-05-24 00:00 | 2019-05-27 A → 2019-05-27 00:00 | none → 3h |  |
| 323 | Preparar ambiente de pruebas | 2019-05-27 A → 2019-05-27 00:00 | 2019-05-28 A → 2019-05-28 00:00 | none → 1d | 322FF → 322 |
| 324 | Ejecutar el plan de pruebas | 2019-05-28 A → 2019-05-28 00:00 | 2019-05-29 A → 2019-05-29 00:00 | none → 2d | 323FF → 323 |
| 325 | 3.1 Compras Públicas | 2019-05-28 A → 2019-05-28 00:00 | 2019-05-28 A → 2019-05-28 00:00 | none → 2h |  |
| 326 | 6.2 Servicios Generales | 2019-05-28 A → 2019-05-28 00:00 | 2019-05-28 A → 2019-05-28 00:00 | none → 2h | 325FF → 325 |
| 327 | 8.5 Gestión Jurídica - Financiera | 2019-05-28 A → 2019-05-28 00:00 | 2019-05-28 A → 2019-05-28 00:00 | none → 2h | 326FF → 326 |
| 328 | 15.2 BI Financiero | 2019-05-28 A → 2019-05-28 00:00 | 2019-05-29 A → 2019-05-29 00:00 | none → 2h | 327FF → 327 |
| 329 | 15.3 BI Administración del Talento Humano | 2019-05-29 A → 2019-05-29 00:00 | 2019-05-29 A → 2019-05-29 00:00 | none → 2h | 328FF → 328 |
| 330 | 15.4 BI Compras Públicas | 2019-05-29 A → 2019-05-29 00:00 | 2019-05-29 A → 2019-05-29 00:00 | none → 2h | 329FF → 329 |
| 331 | 15.9 Tablero de Control | 2019-05-29 A → 2019-05-29 00:00 | 2019-05-29 A → 2019-05-29 00:00 | none → 2h | 330FF → 330 |
| 332 | Revisar los resultados de las pruebas y necesidades de cambios | 2019-05-29 A → 2019-05-29 00:00 | 2019-05-30 A → 2019-05-30 00:00 | none → 1d | 331FF, 320FF → 331, 320 |
| 333 | Planificar Salida a Producción y Soporte | 2019-05-30 A → 2019-05-30 00:00 | 2019-05-31 A → 2019-05-31 00:00 | none → 1.29d | 321FF → 321 |
| 334 | Definir Plan de Salida a Producción | 2019-05-30 A → 2019-05-30 00:00 | 2019-05-31 A → 2019-05-31 00:00 | none → 3h |  |
| 335 | Planificar Estrategia de Soporte | 2019-05-31 A → 2019-05-31 00:00 | 2019-05-31 A → 2019-05-31 00:00 | none → 3h | 334FF → 334 |
| 336 | Planificar Administración del Sistema | 2019-05-31 A → 2019-05-31 00:00 | 2019-05-31 A → 2019-05-31 00:00 | none → 3h | 335FF → 335 |
| 337 | Revisar la ETAPA del Proyecto | 2019-05-31 A → 2019-05-31 00:00 | 2019-06-03 A → 2019-06-03 00:00 | none → 1d | 333FF → 333 |
| 338 | HITO: FINALIZACION ETAPA 3 | 2019-06-03 A → 2019-06-03 00:00 | 2019-06-03 A → 2019-06-03 00:00 | none → 0d | 337FF → 337 |
| 339 | ETAPA 4: Preparación Final previo Despliegue en Producción - Módulos PRI | 2019-06-03 A → 2019-06-03 00:00 | 2019-06-18 A → 2019-06-18 00:00 | none → 12.43d | 296FF → 296 |
| 340 | Gestión General del Proyecto | 2019-06-03 A → 2019-06-03 00:00 | 2019-06-04 A → 2019-06-04 00:00 | none → 1.14d |  |
| 341 | Confirmar el Plan de Entrenamiento | 2019-06-03 A → 2019-06-03 00:00 | 2019-06-04 A → 2019-06-04 00:00 | none → 4h |  |
| 342 | Finalizar plan de Salida a Producción | 2019-06-04 A → 2019-06-04 00:00 | 2019-06-04 A → 2019-06-04 00:00 | none → 4h | 341FF → 341 |
| 343 | Entrenamiento | 2019-06-04 A → 2019-06-04 00:00 | 2019-06-12 A → 2019-06-12 00:00 | none → 7d | 340FF → 340 |
| 344 | Entrenamiento de Usuarios Funcionales y Certificación de Procesos | 2019-06-04 A → 2019-06-04 00:00 | 2019-06-10 A → 2019-06-10 00:00 | none → 4d |  |
| 345 | 3.1 Compras Públicas | 2019-06-04 A → 2019-06-04 00:00 | 2019-06-05 A → 2019-06-05 00:00 | none → 4h |  |
| 346 | 6.2 Servicios Generales | 2019-06-05 A → 2019-06-05 00:00 | 2019-06-05 A → 2019-06-05 00:00 | none → 4h | 345FF → 345 |
| 347 | 8.5 Gestión Jurídica - Financiera | 2019-06-05 A → 2019-06-05 00:00 | 2019-06-06 A → 2019-06-06 00:00 | none → 4h | 346FF → 346 |
| 348 | 15.2 BI Financiero | 2019-06-06 A → 2019-06-06 00:00 | 2019-06-06 A → 2019-06-06 00:00 | none → 4h | 347FF → 347 |
| 349 | 15.3 BI Administración del Talento Humano | 2019-06-06 A → 2019-06-06 00:00 | 2019-06-07 A → 2019-06-07 00:00 | none → 4h | 348FF → 348 |
| 350 | 15.4 BI Compras Públicas | 2019-06-07 A → 2019-06-07 00:00 | 2019-06-07 A → 2019-06-07 00:00 | none → 4h | 349FF → 349 |

| ID | Task | Start | Finish | Duration | Predecessors |
| --- | --- | --- | --- | --- | --- |
| 351 | 15.9 Tablero de Control | 2019-06-07 A → 2019-06-07 00:00 | 2019-06-10 A → 2019-06-10 00:00 | none → 4h | 350FF → 350 |
| 352 | Entrenamiento de Usuario Técnicos | 2019-06-10 A → 2019-06-10 00:00 | 2019-06-12 A → 2019-06-12 00:00 | none → 3d | 351FF → 351 |
| 353 | Preparación del Sistema | 2019-06-12 A → 2019-06-12 00:00 | 2019-06-14 A → 2019-06-14 00:00 | none → 1.43d | 343FF → 343 |
| 354 | Completar la Administración del Sistema | 2019-06-12 A → 2019-06-12 00:00 | 2019-06-13 A → 2019-06-13 00:00 | none → 5h |  |
| 355 | Comprobación de la Puesta a Producción | 2019-06-13 A → 2019-06-13 00:00 | 2019-06-14 A → 2019-06-14 00:00 | none → 5h | 354FF → 354 |
| 356 | Transición | 2019-06-14 A → 2019-06-14 00:00 | 2019-06-18 A → 2019-06-18 00:00 | none → 2.57d | 353FF → 353 |
| 357 | Finalizar Procesamiento de Sistemas Legados | 2019-06-14 A → 2019-06-14 00:00 | 2019-06-14 A → 2019-06-14 00:00 | none → 4h |  |
| 358 | Realizar la Salida a Producción - Carga Inicial y Configuración Inicial | 2019-06-14 A → 2019-06-14 00:00 | 2019-06-18 A → 2019-06-18 00:00 | none → 2d | 357FF → 357 |
| 359 | Revisar la ETAPA del Proyecto | 2019-06-18 A → 2019-06-18 00:00 | 2019-06-18 A → 2019-06-18 00:00 | none → 2h | 356FF → 356 |
| 360 | HITO: FINALIZACION ETAPA 4 | 2019-06-18 A → 2019-06-18 00:00 | 2019-06-18 A → 2019-06-18 00:00 | none → 0d | 359FF → 359 |
| 361 | ETAPA 5: Despliegue en Producción y Soporte Técnico - Módulos PRI | 2019-06-21 A → 2019-06-21 00:00 | 2019-07-10 A → 2019-07-10 00:00 | none → 15.43d | 339FF → 339 |
| 362 | Soporte en Producción | 2019-06-21 A → 2019-06-21 00:00 | 2019-07-04 A → 2019-07-04 00:00 | none → 10d |  |
| 363 | Soporte durante la Salida a Producción | 2019-06-21 A → 2019-06-21 00:00 | 2019-06-28 A → 2019-06-28 00:00 | none → 5d |  |
| 364 | Resolver incidentes críticos | 2019-06-28 A → 2019-06-28 00:00 | 2019-07-02 A → 2019-07-02 00:00 | none → 3d | 363FF → 363 |
| 365 | Entregar el soporte y Administración al cliente | 2019-07-02 A → 2019-07-02 00:00 | 2019-07-04 A → 2019-07-04 00:00 | none → 2d | 364FF → 364 |
| 366 | Mejora Continua | 2019-06-21 A → 2019-06-21 00:00 | 2019-07-10 A → 2019-07-10 00:00 | none → 15d | 339FF → 339 |
| 367 | Monitoreo del Sistema y Acompañamiento | 2019-06-21 A → 2019-06-21 00:00 | 2019-07-10 A → 2019-07-10 00:00 | none → 15d |  |
| 368 | Ajustes y Configuraciones finales al Software acorde a necesidades Entidad | 2019-06-21 A → 2019-06-21 00:00 | 2019-07-10 A → 2019-07-10 00:00 | none → 15d | 339FF → 339 |
| 369 | Cierre de la FASE 3 y Proyecto | 2019-07-10 A → 2019-07-10 00:00 | 2019-07-10 A → 2019-07-10 00:00 | none → 0.43d | 366FF → 366 |
| 370 | Reunión de Cierre de la FASE 3 y Proyecto | 2019-07-10 A → 2019-07-10 00:00 | 2019-07-10 A → 2019-07-10 00:00 | none → 3h |  |
| 371 | HITO: FIN DE LA FASE 3 y Proyecto | 2019-07-10 A → 2019-07-10 00:00 | 2019-07-10 A → 2019-07-10 00:00 | none → 0d | 366FF → 366 |

## Version 5 (saved 2019-08-23)

Note of the change: update MPX

Last finish 2019-07-10 → 2019-08-16 (+37d).

Changed:

| ID | Task | Start | Finish |
| --- | --- | --- | --- |
| 1 | 20190122- Plan del Proyecto de Implementacion del SIIM Daule | 2018-07-16 00:00 → 2019-08-16 (+396d) | 2019-07-10 00:00 → 2019-08-16 (+37d) |
| 2 | **Programa de Implementación SIIM** | 2018-07-16 00:00 → none | 2019-07-10 00:00 → none |
| 3 | **FASE 1: Implementación de Módulos de Servicio al Cliente (SC) y Atención al Ciudadano (AC)** | 2018-07-16 00:00 → none | 2019-01-25 00:00 → none |
| 4 | **ETAPA 1: Preparación del Proyecto e Instalación del SIIM - Módulos SC y AC** | 2018-07-16 00:00 → none | 2018-07-25 00:00 → none |
| 5 | **Actividades de Gestión del Proyecto** | 2018-07-16 00:00 → none | 2018-07-18 00:00 → none |
| 6 | Revisión de Información de Contrato y Anexos | 2018-07-16 00:00 → none | 2018-07-16 00:00 → none |
| 7 | Definir la Organización del Proyecto | 2018-07-16 00:00 → none | 2018-07-17 00:00 → none |
| 8 | Kick-off Interno del Proyecto | 2018-07-17 00:00 → none | 2018-07-18 00:00 → none |
| 9 | **Preparación del kick-off del Proyecto** | 2018-07-18 00:00 → none | 2018-07-19 00:00 → none |
| 10 | Comunicación con el Cliente | 2018-07-18 00:00 → none | 2018-07-18 00:00 → none |
| 11 | Crear la presentación del kick-off | 2018-07-18 00:00 → none | 2018-07-19 00:00 → none |
| 12 | **Reunión de Kick-off** | 2018-07-19 00:00 → none | 2018-07-19 00:00 → none |
| 13 | Realizar la reunión de kick-off | 2018-07-19 00:00 → none | 2018-07-19 00:00 → none |
| 14 | **Entrega e Instalación del Software** | 2018-07-19 00:00 → none | 2018-07-25 00:00 → none |
| 15 | **Instalar SIIM en Servidor** | 2018-07-19 00:00 → none | 2018-07-24 00:00 → none |
| 16 | 1 Dirección de Desarrollo Territorial (No incluye Catastro) | 2018-07-19 00:00 → none | 2018-07-19 00:00 → none |
| 17 | 4 Dirección de Justicia y Vigilancia | 2018-07-19 00:00 → none | 2018-07-19 00:00 → none |
| 18 | 5 Dirección de Desarrollo Humano y Social | 2018-07-19 00:00 → none | 2018-07-20 00:00 → none |
| 19 | 8.3 Rentas | 2018-07-20 00:00 → none | 2018-07-20 00:00 → none |
| 20 | 8.4 Tesorería | 2018-07-20 00:00 → none | 2018-07-20 00:00 → none |
| 21 | 9.1 Mercados | 2018-07-20 00:00 → none | 2018-07-20 00:00 → none |
| 22 | 9.2 Cementerio | 2018-07-20 00:00 → none | 2018-07-20 00:00 → none |
| 23 | 9.3 Camal | 2018-07-20 00:00 → none | 2018-07-20 00:00 → none |
| 24 | 10 Registro de la Propiedad y Mercantil | 2018-07-20 00:00 → none | 2018-07-23 00:00 → none |
| 25 | 11 Administración de bomberos | 2018-07-23 00:00 → none | 2018-07-23 00:00 → none |
| 26 | 12 CRM para ciudadanos. Ventanilla Única | 2018-07-23 00:00 → none | 2018-07-23 00:00 → none |
| 27 | 15.1 BI Desarrollo Territorial | 2018-07-23 00:00 → none | 2018-07-23 00:00 → none |
| 28 | 15.5 BI Obras Públicas Municipales | 2018-07-23 00:00 → none | 2018-07-24 00:00 → none |
| 29 | 15.7 BI Registro de la Propiedad y Mercantil | 2018-07-24 00:00 → none | 2018-07-24 00:00 → none |
| 30 | 16.1 Consultas Portal Web | 2018-07-24 00:00 → none | 2018-07-24 00:00 → none |
| 31 | 16.2 Aplicación para móviles (APP) | 2018-07-24 00:00 → none | 2018-07-24 00:00 → none |
| 32 | Entrega de Software | 2018-07-24 00:00 → none | 2018-07-25 00:00 → none |
| 33 | Revisar la ETAPA del Proyecto | 2018-07-25 00:00 → none | 2018-07-25 00:00 → none |
| 34 | HITO: FINALIZACION ETAPA 1 | 2018-07-25 00:00 → none | 2018-07-25 00:00 → none |
| 35 | **ETAPA 2: Levantamiento de Características Institucionales - Módulos SC y AC** | 2018-07-25 00:00 → none | 2018-08-13 00:00 → none |
| 36 | **Actividades de Gestión del Proyecto** | 2018-07-25 00:00 → none | 2018-07-26 00:00 → none |
| 37 | Revisión del Plan del Proyecto | 2018-07-25 00:00 → none | 2018-07-26 00:00 → none |
| 38 | Programar talleres de requerimientos de Entidad | 2018-07-26 00:00 → none | 2018-07-26 00:00 → none |
| 39 | **Sesiones de Requerimientos del Entidad** | 2018-07-26 00:00 → none | 2018-08-10 00:00 → none |
| 40 | Conducir Sesiones de Requerimientos | 2018-07-26 00:00 → none | 2018-08-08 00:00 → none |
| 41 | Crear Documento de Características del Entidad | 2018-08-08 00:00 → none | 2018-08-10 00:00 → none |
| 42 | **Revisar el Documento de Características del Entidad** | 2018-08-10 00:00 → none | 2018-08-10 00:00 → none |
| 43 | Revisar el Documento de Características del Entidad | 2018-08-10 00:00 → none | 2018-08-10 00:00 → none |
| 44 | Revisar el Plan del Proyecto | 2018-08-10 00:00 → none | 2018-08-10 00:00 → none |
| 45 | Revisar la ETAPA del Proyecto | 2018-08-10 00:00 → none | 2018-08-13 00:00 → none |
| 46 | HITO: FINALIZACION ETAPA 2 | 2018-08-13 00:00 → none | 2018-08-13 00:00 → none |
| 47 | **ETAPA 3: Migración de Datos, Configuración y Pruebas de Operación - Módulos SC y AC** | 2018-08-13 00:00 → none | 2018-10-22 00:00 → none |
| 48 | **Gestión General del Proyecto** | 2018-08-13 00:00 → none | 2018-08-14 00:00 → none |
| 49 | Planificar cambio Organizacional | 2018-08-13 00:00 → none | 2018-08-14 00:00 → none |
| 50 | Planificar Entrenamiento a Usuarios Finales | 2018-08-14 00:00 → none | 2018-08-14 00:00 → none |
| 51 | Definir y Preparar la Migración de Datos | 2018-08-14 00:00 → none | 2018-08-14 00:00 → none |
| 52 | **Configuración del Sistema en Producción** | 2018-08-14 00:00 → none | 2018-10-22 00:00 → none |
| 53 | Instalar el SIIM en Producción | 2018-08-14 00:00 → none | 2018-08-15 00:00 → none |
| 54 | Configurar Inicialización del Sistema | 2018-08-15 00:00 → none | 2018-08-16 00:00 → none |
| 55 | Realizar la Migración de Datos | 2018-08-16 00:00 → none | 2018-10-22 00:00 → none |
| 56 | Desarrollar Adaptaciones al Software | 2018-08-16 00:00 → none | 2018-08-28 00:00 → none |
| 57 | Configuración del Sistema en base al Documento de Características del Entidad | 2018-08-28 00:00 → none | 2018-08-31 00:00 → none |
| 58 | Configurar Interfaces | 2018-08-31 00:00 → none | 2018-09-03 00:00 → none |
| 59 | Configurar Usuarios y Autorizaciones | 2018-09-03 00:00 → none | 2018-09-04 00:00 → none |
| 60 | **Gestión del Cambio Organizacional** | 2018-09-04 00:00 → none | 2018-09-05 00:00 → none |
| 61 | Conducir la comunicación de la Gestión de Cambios (si es aplicable) | 2018-09-04 00:00 → none | 2018-09-05 00:00 → none |
| 62 | **Pruebas de validación/aceptación del Sistema** | 2018-09-05 00:00 → none | 2018-09-10 00:00 → none |
| 63 | Mantener la Lista Maestra de Procesos de Entidad | 2018-09-05 00:00 → none | 2018-09-05 00:00 → none |
| 64 | **Conducir Talleres de Validación** | 2018-09-05 00:00 → none | 2018-09-10 00:00 → none |
| 65 | 1 Dirección de Desarrollo Territorial (No incluye Catastro) | 2018-09-05 00:00 → none | 2018-09-05 00:00 → none |
| 66 | 4 Dirección de Justicia y Vigilancia | 2018-09-05 00:00 → none | 2018-09-05 00:00 → none |
| 67 | 5 Dirección de Desarrollo Humano y Social | 2018-09-05 00:00 → none | 2018-09-05 00:00 → none |
| 68 | 8.3 Rentas | 2018-09-05 00:00 → none | 2018-09-06 00:00 → none |
| 69 | 8.4 Tesorería | 2018-09-06 00:00 → none | 2018-09-06 00:00 → none |
| 70 | 9.1 Mercados | 2018-09-06 00:00 → none | 2018-09-06 00:00 → none |

| ID | Task | Start | Finish |
| --- | --- | --- | --- |
| 71 | 9.2 Cementerio | 2018-09-06 00:00 → none | 2018-09-06 00:00 → none |
| 72 | 9.3 Camal | 2018-09-06 00:00 → none | 2018-09-06 00:00 → none |
| 73 | 10 Registro de la Propiedad y Mercantil | 2018-09-06 00:00 → none | 2018-09-07 00:00 → none |
| 74 | 11 Administración de bomberos | 2018-09-07 00:00 → none | 2018-09-07 00:00 → none |
| 75 | 12 CRM para ciudadanos. Ventanilla Única | 2018-09-07 00:00 → none | 2018-09-07 00:00 → none |
| 76 | 15.1 BI Desarrollo Territorial | 2018-09-07 00:00 → none | 2018-09-07 00:00 → none |
| 77 | 15.5 BI Obras Públicas Municipales | 2018-09-07 00:00 → none | 2018-09-07 00:00 → none |
| 78 | 15.7 BI Registro de la Propiedad y Mercantil | 2018-09-07 00:00 → none | 2018-09-07 00:00 → none |
| 79 | 16.1 Consultas Portal Web | 2018-09-07 00:00 → none | 2018-09-07 00:00 → none |
| 80 | 16.2 Aplicación para móviles (APP) | 2018-09-07 00:00 → none | 2018-09-10 00:00 → none |
| 81 | **Pruebas de Aceptacion Sistema** | 2018-09-10 00:00 → none | 2018-09-14 00:00 → none |
| 82 | Definir casos de prueba y alcance | 2018-09-10 00:00 → none | 2018-09-10 00:00 → none |
| 83 | Preparar ambiente de pruebas | 2018-09-10 00:00 → none | 2018-09-11 00:00 → none |
| 84 | **Ejecutar el plan de pruebas de Aceptacion del Sistema** | 2018-09-11 00:00 → none | 2018-09-13 00:00 → none |
| 85 | 1 Dirección de Desarrollo Territorial (No incluye Catastro) | 2018-09-11 00:00 → none | 2018-09-11 00:00 → none |
| 86 | 4 Dirección de Justicia y Vigilancia | 2018-09-11 00:00 → none | 2018-09-11 00:00 → none |
| 87 | 5 Dirección de Desarrollo Humano y Social | 2018-09-11 00:00 → none | 2018-09-11 00:00 → none |
| 88 | 8.3 Rentas | 2018-09-11 00:00 → none | 2018-09-12 00:00 → none |
| 89 | 8.4 Tesorería | 2018-09-12 00:00 → none | 2018-09-12 00:00 → none |
| 90 | 9.1 Mercados | 2018-09-12 00:00 → none | 2018-09-12 00:00 → none |
| 91 | 9.2 Cementerio | 2018-09-12 00:00 → none | 2018-09-12 00:00 → none |
| 92 | 9.3 Camal | 2018-09-12 00:00 → none | 2018-09-12 00:00 → none |
| 93 | 10 Registro de la Propiedad y Mercantil | 2018-09-12 00:00 → none | 2018-09-12 00:00 → none |
| 94 | 11 Administración de bomberos | 2018-09-12 00:00 → none | 2018-09-13 00:00 → none |
| 95 | 12 CRM para ciudadanos. Ventanilla Única | 2018-09-13 00:00 → none | 2018-09-13 00:00 → none |
| 96 | 15.1 BI Desarrollo Territorial | 2018-09-13 00:00 → none | 2018-09-13 00:00 → none |
| 97 | 15.5 BI Obras Públicas Municipales | 2018-09-13 00:00 → none | 2018-09-13 00:00 → none |
| 98 | 15.7 BI Registro de la Propiedad y Mercantil | 2018-09-13 00:00 → none | 2018-09-13 00:00 → none |
| 99 | 16.1 Consultas Portal Web | 2018-09-13 00:00 → none | 2018-09-13 00:00 → none |
| 100 | 16.2 Aplicación para móviles (APP) | 2018-09-13 00:00 → none | 2018-09-13 00:00 → none |
| 101 | Revisar los resultados de las pruebas y necesidades de cambios | 2018-09-13 00:00 → none | 2018-09-14 00:00 → none |
| 102 | **Planificar Salida a Producción y Soporte** | 2018-09-14 00:00 → none | 2018-09-17 00:00 → none |
| 103 | Definir Plan de Salida a Producción | 2018-09-14 00:00 → none | 2018-09-17 00:00 → none |
| 104 | Planificar Estrategia de Soporte | 2018-09-14 00:00 → none | 2018-09-17 00:00 → none |
| 105 | Planificar Administración del Sistema | 2018-09-14 00:00 → none | 2018-09-17 00:00 → none |
| 106 | Revisar la ETAPA del Proyecto | 2018-09-17 00:00 → none | 2018-09-17 00:00 → none |
| 107 | HITO: FINALIZACION ETAPA 3 | 2018-09-17 00:00 → none | 2018-09-17 00:00 → none |
| 108 | **ETAPA 4: Preparación Final previo Despliegue en Producción - Módulos SC y AC** | 2018-09-17 00:00 → none | 2018-10-11 00:00 → none |
| 109 | **Gestión General del Proyecto** | 2018-09-17 00:00 → none | 2018-09-18 00:00 → none |
| 110 | Confirmar el Plan de Entrenamiento | 2018-09-17 00:00 → none | 2018-09-18 00:00 → none |
| 111 | Finalizar plan de Salida a Producción | 2018-09-18 00:00 → none | 2018-09-18 00:00 → none |
| 112 | **Entrenamiento en Modulos de Areas Funcionales Fase 1** | 2018-09-18 00:00 → none | 2018-10-08 00:00 → none |
| 113 | **Entrenamiento de Usuarios Funcionales y Certificación de Procesos** | 2018-09-18 00:00 → none | 2018-10-02 00:00 → none |
| 114 | 1 Dirección de Desarrollo Territorial (No incluye Catastro) | 2018-09-18 00:00 → none | 2018-09-19 00:00 → none |
| 115 | 4 Dirección de Justicia y Vigilancia | 2018-09-19 00:00 → none | 2018-09-20 00:00 → none |
| 116 | 5 Dirección de Desarrollo Humano y Social | 2018-09-20 00:00 → none | 2018-09-21 00:00 → none |
| 117 | 8.3 Rentas | 2018-09-21 00:00 → none | 2018-09-21 00:00 → none |
| 118 | 8.4 Tesorería | 2018-09-21 00:00 → none | 2018-09-24 00:00 → none |
| 119 | 9.1 Mercados | 2018-09-24 00:00 → none | 2018-09-25 00:00 → none |
| 120 | 9.2 Cementerio | 2018-09-25 00:00 → none | 2018-09-25 00:00 → none |
| 121 | 9.3 Camal | 2018-09-25 00:00 → none | 2018-09-26 00:00 → none |
| 122 | 10 Registro de la Propiedad y Mercantil | 2018-09-26 00:00 → none | 2018-09-26 00:00 → none |
| 123 | 11 Administración de bomberos | 2018-09-27 00:00 → none | 2018-09-27 00:00 → none |
| 124 | 12 CRM para ciudadanos. Ventanilla Única | 2018-09-27 00:00 → none | 2018-09-28 00:00 → none |
| 125 | 15.1 BI Desarrollo Territorial | 2018-09-28 00:00 → none | 2018-09-28 00:00 → none |
| 126 | 15.5 BI Obras Públicas Municipales | 2018-09-28 00:00 → none | 2018-10-01 00:00 → none |
| 127 | 15.7 BI Registro de la Propiedad y Mercantil | 2018-10-01 00:00 → none | 2018-10-01 00:00 → none |
| 128 | 16.1 Consultas Portal Web | 2018-10-01 00:00 → none | 2018-10-02 00:00 → none |
| 129 | 16.2 Aplicación para móviles (APP) | 2018-10-02 00:00 → none | 2018-10-02 00:00 → none |
| 130 | Entrenamiento de Usuario Técnicos | 2018-10-02 00:00 → none | 2018-10-08 00:00 → none |
| 131 | **Preparación del Sistema** | 2018-10-08 00:00 → none | 2018-10-09 00:00 → none |
| 132 | Completar la Administración del Sistema | 2018-10-08 00:00 → none | 2018-10-08 00:00 → none |
| 133 | Comprobación de la Puesta a Producción | 2018-10-08 00:00 → none | 2018-10-09 00:00 → none |
| 134 | **Transición** | 2018-10-09 00:00 → none | 2018-10-11 00:00 → none |
| 135 | Finalizar Procesamiento de Sistemas Legados | 2018-10-09 00:00 → none | 2018-10-09 00:00 → none |
| 136 | Realizar la Salida a Producción - Carga Inicial y Configuración Inicial | 2018-10-09 00:00 → none | 2018-10-11 00:00 → none |
| 137 | Revisar la ETAPA del Proyecto | 2018-10-11 00:00 → none | 2018-10-11 00:00 → none |
| 138 | HITO: FINALIZACION ETAPA 4 | 2018-10-11 00:00 → none | 2018-10-11 00:00 → none |
| 139 | **ETAPA 5: Despliegue en Producción y Soporte Técnico - Módulos SC y AC** | 2018-10-11 00:00 → none | 2018-11-16 00:00 → none |
| 140 | **Soporte en Producción** | 2018-10-11 00:00 → none | 2018-11-16 00:00 → none |

| ID | Task | Start | Finish |
| --- | --- | --- | --- |
| 141 | Soporte durante la Salida a Producción | 2018-10-11 00:00 → none | 2018-11-16 00:00 → none |
| 142 | Resolver incidentes críticos | 2018-10-11 00:00 → none | 2018-11-05 00:00 → none |
| 143 | Entregar el soporte y Administración al cliente | 2018-10-11 00:00 → none | 2018-10-12 00:00 → none |
| 144 | **Mejora Continua** | 2018-10-11 00:00 → none | 2018-10-24 00:00 → none |
| 145 | Monitoreo del Sistema y Acompañamiento ETAPA1 | 2018-10-11 00:00 → none | 2018-10-24 00:00 → none |
| 146 | Ajustes y Configuraciones finales al Software acorde a necesidades Entidad | 2018-10-11 00:00 → none | 2018-10-24 00:00 → none |
| 147 | **Cierre de la ETAPA 5** | 2018-10-24 00:00 → none | 2018-10-24 00:00 → none |
| 148 | Reunión de Cierre de la ETAPA 5 | 2018-10-24 00:00 → none | 2018-10-24 00:00 → none |
| 149 | HITO: FIN DE LA ETAPA 5 | 2018-10-24 00:00 → none | 2018-10-24 00:00 → none |
| 150 | **ETAPA 6: Estabilización, Apoyo Emisión 2019 y Desarrollo de funcionalidades no establecidas en el Alcance Contractual** | 2018-11-16 00:00 → none | 2019-01-25 00:00 → none |
| 151 | Depuración de Errores de Calidad de Información fuente migrada (Base Oracle) | 2018-11-16 00:00 → none | 2018-12-24 00:00 → none |
| 152 | Soporte y Mantenimiento de Módulos de la Fase 1 | 2018-11-16 00:00 → none | 2018-12-24 00:00 → none |
| 153 | Adaptaciones a Software para incluir Nuevas funcionalidades no contempladas en alcance proyecto | 2018-11-16 00:00 → none | 2018-12-24 00:00 → none |
| 154 | Implementación de Licencia temporal de Modulo de Catastro Urbano SIIM | 2018-12-03 00:00 → none | 2018-12-26 00:00 → none |
| 155 | Migración de información de Emisión de Impuestos de Catastro Urbano 2019 | 2018-12-03 00:00 → none | 2018-12-26 00:00 → none |
| 156 | Creación de interfaces mediante ETLs para integración entre Sistema Oracle y SIIM para la recaudación de Impuestos 2019 de Catastro Urbano | 2018-12-03 00:00 → none | 2018-12-26 00:00 → none |
| 157 | Soporte en Recaudación de Impuestos de Catastro urbano y mejoras 2019 | 2018-12-26 00:00 → none | 2019-01-25 00:00 → none |
| 158 | **Cierre de la FASE 1** | 2019-01-25 00:00 → none | 2019-01-25 00:00 → none |
| 159 | Reunión de Cierre de la FASE 1 | 2019-01-25 00:00 → none | 2019-01-25 00:00 → none |
| 160 | HITO: FIN DE LA FASE 1 | 2019-01-25 00:00 → none | 2019-01-25 00:00 → none |
| 161 | **FASE 2: Implementación de Módulos de Planificación de Recursos Institucionales - PRI** | 2019-01-25 00:00 → none | 2019-05-14 00:00 → none |
| 162 | **ETAPA 1: Instalación del SIIM - Módulos PRI** | 2019-01-25 00:00 → none | 2019-01-31 00:00 → none |
| 163 | **Entrega e Instalación del Software** | 2019-01-25 00:00 → none | 2019-01-30 00:00 → none |
| 164 | **Instalar SIIM en Servidor** | 2019-01-25 00:00 → none | 2019-01-30 00:00 → none |
| 165 | **Instalar Módulos PRI** | 2019-01-25 00:00 → none | 2019-01-30 00:00 → none |
| 166 | 2.1 Administración Técnica | 2019-01-25 00:00 → none | 2019-01-25 00:00 → none |
| 167 | 2.2 Salud Ocupacional y Riesgos | 2019-01-25 00:00 → none | 2019-01-28 00:00 → none |
| 168 | 3.2 Adquisiciones | 2019-01-28 00:00 → none | 2019-01-28 00:00 → none |
| 169 | 6.1 Administración de Bienes | 2019-01-28 00:00 → none | 2019-01-28 00:00 → none |
| 170 | 8.1 Contabilidad | 2019-01-28 00:00 → none | 2019-01-28 00:00 → none |
| 171 | 8.2 Presupuestos | 2019-01-28 00:00 → none | 2019-01-29 00:00 → none |
| 172 | 13 CRM para Urbanizaciones | 2019-01-29 00:00 → none | 2019-01-29 00:00 → none |
| 173 | 14 Dirección de Planificación Institucional (Incluye control de proyectos de Obras Públicas | 2019-01-29 00:00 → none | 2019-01-29 00:00 → none |
| 174 | 15.6 Servicios Corporativos | 2019-01-29 00:00 → none | 2019-01-29 00:00 → none |
| 175 | 15.8 BI Planificación Institucional | 2019-01-29 00:00 → none | 2019-01-30 00:00 → none |
| 176 | Entrega de Software | 2019-01-30 00:00 → none | 2019-01-30 00:00 → none |
| 177 | Revisar la ETAPA del Proyecto | 2019-01-30 00:00 → none | 2019-01-31 00:00 → none |
| 178 | HITO: FINALIZACION ETAPA 1 | 2019-01-31 00:00 → none | 2019-01-31 00:00 → none |
| 179 | **ETAPA 2: Levantamiento de Características Institucionales - Módulos PRI** | 2019-01-31 00:00 → none | 2019-02-11 00:00 → none |
| 180 | **Actividades de Gestión del Proyecto** | 2019-01-31 00:00 → none | 2019-01-31 00:00 → none |
| 181 | Revisión del Plan del Proyecto | 2019-01-31 00:00 → none | 2019-01-31 00:00 → none |
| 182 | Programar talleres de requerimientos de Entidad | 2019-01-31 00:00 → none | 2019-01-31 00:00 → none |
| 183 | **Sesiones de Requerimientos del Entidad** | 2019-01-31 00:00 → none | 2019-02-08 00:00 → none |
| 184 | Conducir Sesiones de Requerimientos | 2019-01-31 00:00 → none | 2019-02-07 00:00 → none |
| 185 | Crear Documento de Características del Entidad | 2019-02-07 00:00 → none | 2019-02-08 00:00 → none |
| 186 | **Revisar el Documento de Características del Entidad** | 2019-02-08 00:00 → none | 2019-02-08 00:00 → none |
| 187 | Revisar el Documento de Características del Entidad | 2019-02-08 00:00 → none | 2019-02-08 00:00 → none |
| 188 | Revisar el Plan del Proyecto | 2019-02-08 00:00 → none | 2019-02-08 00:00 → none |
| 189 | Revisar la ETAPA del Proyecto | 2019-02-08 00:00 → none | 2019-02-11 00:00 → none |
| 190 | HITO: FINALIZACION ETAPA 2 | 2019-02-11 00:00 → none | 2019-02-11 00:00 → none |
| 191 | **ETAPA 3: Migración de Datos, Configuración y Pruebas de Operación de Módulos - Módulos PRI** | 2019-02-11 00:00 → none | 2019-03-25 00:00 → none |
| 192 | **Gestión General del Proyecto** | 2019-02-11 00:00 → none | 2019-02-13 00:00 → none |
| 193 | Planificar cambio Organizacional | 2019-02-11 00:00 → none | 2019-02-12 00:00 → none |
| 194 | Planificar Entrenamiento a Usuarios Finales | 2019-02-12 00:00 → none | 2019-02-12 00:00 → none |
| 195 | Definir y Preparar la Migración de Datos | 2019-02-12 00:00 → none | 2019-02-13 00:00 → none |
| 196 | **Configuración del Sistema en Producción** | 2019-02-13 00:00 → none | 2019-03-08 00:00 → none |
| 197 | Instalar el SIIM en Producción | 2019-02-13 00:00 → none | 2019-02-13 00:00 → none |
| 198 | Configurar Inicialización del Sistema | 2019-02-13 00:00 → none | 2019-02-14 00:00 → none |
| 199 | Realizar la Migración de Datos | 2019-02-14 00:00 → none | 2019-03-01 00:00 → none |
| 200 | Desarrollar Adaptaciones al Software | 2019-03-01 00:00 → none | 2019-03-05 00:00 → none |
| 201 | Configuración del Sistema en base al Documento de Características del Entidad | 2019-03-05 00:00 → none | 2019-03-06 00:00 → none |
| 202 | Configurar Interfaces | 2019-03-06 00:00 → none | 2019-03-07 00:00 → none |
| 203 | Configurar Usuarios y Autorizaciones | 2019-03-07 00:00 → none | 2019-03-08 00:00 → none |
| 204 | **Gestión del Cambio Organizacional** | 2019-03-08 00:00 → none | 2019-03-08 00:00 → none |
| 205 | Conducir la comunicación de la Gestión de Cambios (si es aplicable) | 2019-03-08 00:00 → none | 2019-03-08 00:00 → none |
| 206 | **Pruebas de validación del Sistema** | 2019-03-08 00:00 → none | 2019-03-14 00:00 → none |
| 207 | Mantener la Lista Maestra de Procesos de Entidad | 2019-03-08 00:00 → none | 2019-03-11 00:00 → none |
| 208 | **Conducir Talleres de Validación** | 2019-03-11 00:00 → none | 2019-03-14 00:00 → none |
| 209 | 2.1 Administración Técnica | 2019-03-11 00:00 → none | 2019-03-11 00:00 → none |
| 210 | 2.2 Salud Ocupacional y Riesgos | 2019-03-11 00:00 → none | 2019-03-11 00:00 → none |

| ID | Task | Start | Finish |
| --- | --- | --- | --- |
| 211 | 3.2 Adquisiciones | 2019-03-11 00:00 → none | 2019-03-12 00:00 → none |
| 212 | 6.1 Administración de Bienes | 2019-03-12 00:00 → none | 2019-03-12 00:00 → none |
| 213 | 8.1 Contabilidad | 2019-03-12 00:00 → none | 2019-03-13 00:00 → none |
| 214 | 8.2 Presupuestos | 2019-03-13 00:00 → none | 2019-03-13 00:00 → none |
| 215 | 13 CRM para Urbanizaciones | 2019-03-13 00:00 → none | 2019-03-13 00:00 → none |
| 216 | 14 Dirección de Planificación Institucional (Incluye control de proyectos de Obras Públicas) | 2019-03-13 00:00 → none | 2019-03-14 00:00 → none |
| 217 | 15.6 BI Servicios Corporativos | 2019-03-14 00:00 → none | 2019-03-14 00:00 → none |
| 218 | 15.8 BI Planificación Institucional | 2019-03-14 00:00 → none | 2019-03-14 00:00 → none |
| 219 | **Pruebas de aceptacion del Sistema** | 2019-03-14 00:00 → none | 2019-03-21 00:00 → none |
| 220 | Definir casos de prueba y alcance | 2019-03-14 00:00 → none | 2019-03-14 00:00 → none |
| 221 | Preparar ambiente de pruebas | 2019-03-14 00:00 → none | 2019-03-15 00:00 → none |
| 222 | **Ejecutar el plan de pruebas** | 2019-03-15 00:00 → none | 2019-03-21 00:00 → none |
| 223 | 2.1 Administración Técnica | 2019-03-15 00:00 → none | 2019-03-18 00:00 → none |
| 224 | 2.2 Salud Ocupacional y Riesgos | 2019-03-18 00:00 → none | 2019-03-18 00:00 → none |
| 225 | 3.2 Adquisiciones | 2019-03-18 00:00 → none | 2019-03-19 00:00 → none |
| 226 | 6.1 Administración de Bienes | 2019-03-19 00:00 → none | 2019-03-19 00:00 → none |
| 227 | 8.1 Contabilidad | 2019-03-19 00:00 → none | 2019-03-19 00:00 → none |
| 228 | 8.2 Presupuestos | 2019-03-19 00:00 → none | 2019-03-20 00:00 → none |
| 229 | 13 CRM para Urbanizaciones | 2019-03-20 00:00 → none | 2019-03-20 00:00 → none |
| 230 | 14 Dirección de Planificación Institucional (Incluye control de proyectos de Obras Públicas) | 2019-03-20 00:00 → none | 2019-03-20 00:00 → none |
| 231 | 15.6 BI Servicios Corporativos | 2019-03-20 00:00 → none | 2019-03-21 00:00 → none |
| 232 | 15.8 BI Planificación Institucional | 2019-03-21 00:00 → none | 2019-03-21 00:00 → none |
| 233 | Revisar los resultados de las pruebas y necesidades de cambios | 2019-03-14 00:00 → none | 2019-03-15 00:00 → none |
| 234 | **Planificar Salida a Producción y Soporte** | 2019-03-21 00:00 → none | 2019-03-22 00:00 → none |
| 235 | Definir Plan de Salida a Producción | 2019-03-21 00:00 → none | 2019-03-21 00:00 → none |
| 236 | Planificar Estrategia de Soporte | 2019-03-21 00:00 → none | 2019-03-22 00:00 → none |
| 237 | Planificar Administración del Sistema | 2019-03-22 00:00 → none | 2019-03-22 00:00 → none |
| 238 | Revisar la ETAPA del Proyecto | 2019-03-22 00:00 → none | 2019-03-25 00:00 → none |
| 239 | HITO: FINALIZACION ETAPA 3 | 2019-03-25 00:00 → none | 2019-03-25 00:00 → none |
| 240 | **ETAPA 4: Preparación Final previo Despliegue en Producción - Módulos PRI** | 2019-03-25 00:00 → none | 2019-04-08 00:00 → none |
| 241 | **Gestión General del Proyecto** | 2019-03-25 00:00 → none | 2019-03-26 00:00 → none |
| 242 | Confirmar el Plan de Entrenamiento | 2019-03-25 00:00 → none | 2019-03-25 00:00 → none |
| 243 | Finalizar plan de Salida a Producción | 2019-03-25 00:00 → none | 2019-03-26 00:00 → none |
| 244 | **Entrenamiento** | 2019-03-26 00:00 → none | 2019-04-02 00:00 → none |
| 245 | **Entrenamiento de Usuarios Funcionales y Certificación de Procesos** | 2019-03-26 00:00 → none | 2019-03-29 00:00 → none |
| 246 | 2.1 Administración Técnica | 2019-03-26 00:00 → none | 2019-03-26 00:00 → none |
| 247 | 2.2 Salud Ocupacional y Riesgos | 2019-03-26 00:00 → none | 2019-03-27 00:00 → none |
| 248 | 3.2 Adquisiciones | 2019-03-27 00:00 → none | 2019-03-27 00:00 → none |
| 249 | 6.1 Administración de Bienes | 2019-03-27 00:00 → none | 2019-03-27 00:00 → none |
| 250 | 8.1 Contabilidad | 2019-03-27 00:00 → none | 2019-03-28 00:00 → none |
| 251 | 8.2 Presupuestos | 2019-03-28 00:00 → none | 2019-03-28 00:00 → none |
| 252 | 13 CRM para Urbanizaciones | 2019-03-28 00:00 → none | 2019-03-29 00:00 → none |
| 253 | 14 Dirección de Planificación Institucional (Incluye control de proyectos de Obras Públicas) | 2019-03-29 00:00 → none | 2019-03-29 00:00 → none |
| 254 | 15.6 BI Servicios Corporativos | 2019-03-29 00:00 → none | 2019-03-29 00:00 → none |
| 255 | 15.8 BI Planificación Institucional | 2019-03-29 00:00 → none | 2019-03-29 00:00 → none |
| 256 | Entrenamiento de Usuario Técnicos | 2019-03-26 00:00 → none | 2019-04-02 00:00 → none |
| 257 | **Preparación del Sistema** | 2019-04-02 00:00 → none | 2019-04-03 00:00 → none |
| 258 | Completar la Administración del Sistema | 2019-04-02 00:00 → none | 2019-04-03 00:00 → none |
| 259 | Comprobación de la Puesta a Producción | 2019-04-03 00:00 → none | 2019-04-03 00:00 → none |
| 260 | **Transición** | 2019-04-03 00:00 → none | 2019-04-08 00:00 → none |
| 261 | Finalizar Procesamiento de Sistemas Legados | 2019-04-03 00:00 → none | 2019-04-04 00:00 → none |
| 262 | Realizar la Salida a Producción - Carga Inicial y Configuración Inicial | 2019-04-04 00:00 → none | 2019-04-08 00:00 → none |
| 263 | Revisar la ETAPA del Proyecto | 2019-04-08 00:00 → none | 2019-04-08 00:00 → none |
| 264 | HITO: FINALIZACION ETAPA 4 | 2019-04-08 00:00 → none | 2019-04-08 00:00 → none |
| 265 | **ETAPA 5: Despliegue en Producción y Soporte Técnico - Módulos PRI** | 2019-04-08 00:00 → none | 2019-05-14 00:00 → none |
| 266 | **Soporte en Producción** | 2019-04-08 00:00 → none | 2019-04-25 00:00 → none |
| 267 | Soporte durante la Salida a Producción | 2019-04-08 00:00 → none | 2019-04-25 00:00 → none |
| 268 | Resolver incidentes críticos | 2019-04-08 00:00 → none | 2019-04-25 00:00 → none |
| 269 | Entregar el soporte y Administración al cliente | 2019-04-08 00:00 → none | 2019-04-10 00:00 → none |
| 270 | **Mejora Continua** | 2019-04-25 00:00 → none | 2019-05-14 00:00 → none |
| 271 | Monitoreo del Sistema y Acompañamiento ETAPA2 | 2019-04-25 00:00 → none | 2019-05-14 00:00 → none |
| 272 | Ajustes y Configuraciones finales al Software acorde a necesidades Entidad | 2019-04-25 00:00 → none | 2019-05-14 00:00 → none |
| 273 | **Cierre de la FASE 2** | 2019-05-14 00:00 → none | 2019-05-14 00:00 → none |
| 274 | Reunión de Cierre de la FASE 2 | 2019-05-14 00:00 → none | 2019-05-14 00:00 → none |
| 275 | HITO: FIN DE LA FASE 2 | 2019-05-14 00:00 → none | 2019-05-14 00:00 → none |
| 276 | **FASE 3: Implementación de Módulos de Planificación de Recursos Institucionales - PRI** | 2019-04-08 00:00 → none | 2019-07-10 00:00 → none |
| 277 | **ETAPA 1: Instalación del SIIM - Módulos PRI** | 2019-04-08 00:00 → none | 2019-04-12 00:00 → none |
| 278 | **Entrega e Instalación del Software** | 2019-04-08 00:00 → none | 2019-04-11 00:00 → none |
| 279 | **Instalar SIIM en Servidor** | 2019-04-08 00:00 → none | 2019-04-10 00:00 → none |
| 280 | Instalar Módulos PRI | 2019-04-08 00:00 → none | 2019-04-10 00:00 → none |

| ID | Task | Start | Finish |
| --- | --- | --- | --- |
| 281 | Entrega de Software | 2019-04-10 00:00 → none | 2019-04-11 00:00 → none |
| 282 | Revisar la ETAPA del Proyecto | 2019-04-11 00:00 → none | 2019-04-12 00:00 → none |
| 283 | HITO: FINALIZACION ETAPA 1 | 2019-04-12 00:00 → none | 2019-04-12 00:00 → none |
| 284 | **ETAPA 2: Levantamiento de Características Institucionales - Módulos PRI** | 2019-04-12 00:00 → none | 2019-04-23 00:00 → none |
| 285 | **Actividades de Gestión del Proyecto** | 2019-04-12 00:00 → none | 2019-04-12 00:00 → none |
| 286 | Revisión del Plan del Proyecto | 2019-04-12 00:00 → none | 2019-04-12 00:00 → none |
| 287 | Programar talleres de requerimientos de Entidad | 2019-04-12 00:00 → none | 2019-04-12 00:00 → none |
| 288 | **Sesiones de Requerimientos del Entidad** | 2019-04-12 00:00 → none | 2019-04-19 00:00 → none |
| 289 | Conducir Sesiones de Requerimientos | 2019-04-12 00:00 → none | 2019-04-17 00:00 → none |
| 290 | Crear Documento de Características del Entidad | 2019-04-17 00:00 → none | 2019-04-19 00:00 → none |
| 291 | **Revisar el Documento de Características del Entidad** | 2019-04-19 00:00 → none | 2019-04-22 00:00 → none |
| 292 | Revisar el Documento de Características del Entidad | 2019-04-19 00:00 → none | 2019-04-22 00:00 → none |
| 293 | Revisar el Plan del Proyecto | 2019-04-22 00:00 → none | 2019-04-22 00:00 → none |
| 294 | Revisar la ETAPA del Proyecto | 2019-04-22 00:00 → none | 2019-04-23 00:00 → none |
| 295 | HITO: FINALIZACION ETAPA 2 | 2019-04-23 00:00 → none | 2019-04-23 00:00 → none |
| 296 | **ETAPA 3: Migración de Datos, Configuración y Pruebas de Operación de Módulos - Módulos PRI** | 2019-04-23 00:00 → none | 2019-06-03 00:00 → none |
| 297 | **Gestión General del Proyecto** | 2019-04-23 00:00 → none | 2019-04-24 00:00 → none |
| 298 | Planificar cambio Organizacional | 2019-04-23 00:00 → none | 2019-04-23 00:00 → none |
| 299 | Planificar Entrenamiento a Usuarios Finales | 2019-04-23 00:00 → none | 2019-04-24 00:00 → none |
| 300 | Definir y Preparar la Migración de Datos | 2019-04-24 00:00 → none | 2019-04-24 00:00 → none |
| 301 | **Configuración del Sistema en Producción** | 2019-04-24 00:00 → none | 2019-05-20 00:00 → none |
| 302 | Instalar el SIIM en Producción | 2019-04-24 00:00 → none | 2019-04-25 00:00 → none |
| 303 | Configurar Inicialización del Sistema | 2019-04-25 00:00 → none | 2019-04-26 00:00 → none |
| 304 | Realizar la Migración de Datos | 2019-04-26 00:00 → none | 2019-05-09 00:00 → none |
| 305 | Desarrollar Adaptaciones al Software | 2019-05-09 00:00 → none | 2019-05-15 00:00 → none |
| 306 | Configuración del Sistema en base al Documento de Características del Entidad | 2019-05-15 00:00 → none | 2019-05-17 00:00 → none |
| 307 | Configurar Interfaces | 2019-05-17 00:00 → none | 2019-05-20 00:00 → none |
| 308 | Configurar Usuarios y Autorizaciones | 2019-05-20 00:00 → none | 2019-05-20 00:00 → none |
| 309 | **Gestión del Cambio Organizacional** | 2019-05-20 00:00 → none | 2019-05-22 00:00 → none |
| 310 | Conducir la comunicación de la Gestión de Cambios (si es aplicable) | 2019-05-20 00:00 → none | 2019-05-22 00:00 → none |
| 311 | **Pruebas de validación/aceptación del Sistema** | 2019-05-22 00:00 → none | 2019-05-24 00:00 → none |
| 312 | Mantener la Lista Maestra de Procesos de Entidad | 2019-05-22 00:00 → none | 2019-05-23 00:00 → none |
| 313 | **Conducir Talleres de Validación** | 2019-05-23 00:00 → none | 2019-05-24 00:00 → none |
| 314 | 3.1 Compras Públicas | 2019-05-23 00:00 → none | 2019-05-23 00:00 → none |
| 315 | 6.2 Servicios Generales | 2019-05-23 00:00 → none | 2019-05-23 00:00 → none |
| 316 | 8.5 Gestión Jurídica - Financiera | 2019-05-23 00:00 → none | 2019-05-23 00:00 → none |
| 317 | 15.2 BI Financiero | 2019-05-23 00:00 → none | 2019-05-24 00:00 → none |
| 318 | 15.3 BI Administración del Talento Humano | 2019-05-24 00:00 → none | 2019-05-24 00:00 → none |
| 319 | 15.4 BI Compras Públicas | 2019-05-24 00:00 → none | 2019-05-24 00:00 → none |
| 320 | 15.9 Tablero de Control | 2019-05-24 00:00 → none | 2019-05-24 00:00 → none |
| 321 | **Pruebas de aceptacion del Sistema** | 2019-05-24 00:00 → none | 2019-05-30 00:00 → none |
| 322 | Definir casos de prueba y alcance | 2019-05-24 00:00 → none | 2019-05-27 00:00 → none |
| 323 | Preparar ambiente de pruebas | 2019-05-27 00:00 → none | 2019-05-28 00:00 → none |
| 324 | **Ejecutar el plan de pruebas** | 2019-05-28 00:00 → none | 2019-05-29 00:00 → none |
| 325 | 3.1 Compras Públicas | 2019-05-28 00:00 → none | 2019-05-28 00:00 → none |
| 326 | 6.2 Servicios Generales | 2019-05-28 00:00 → none | 2019-05-28 00:00 → none |
| 327 | 8.5 Gestión Jurídica - Financiera | 2019-05-28 00:00 → none | 2019-05-28 00:00 → none |
| 328 | 15.2 BI Financiero | 2019-05-28 00:00 → none | 2019-05-29 00:00 → none |
| 329 | 15.3 BI Administración del Talento Humano | 2019-05-29 00:00 → none | 2019-05-29 00:00 → none |
| 330 | 15.4 BI Compras Públicas | 2019-05-29 00:00 → none | 2019-05-29 00:00 → none |
| 331 | 15.9 Tablero de Control | 2019-05-29 00:00 → none | 2019-05-29 00:00 → none |
| 332 | Revisar los resultados de las pruebas y necesidades de cambios | 2019-05-29 00:00 → none | 2019-05-30 00:00 → none |
| 333 | **Planificar Salida a Producción y Soporte** | 2019-05-30 00:00 → none | 2019-05-31 00:00 → none |
| 334 | Definir Plan de Salida a Producción | 2019-05-30 00:00 → none | 2019-05-31 00:00 → none |
| 335 | Planificar Estrategia de Soporte | 2019-05-31 00:00 → none | 2019-05-31 00:00 → none |
| 336 | Planificar Administración del Sistema | 2019-05-31 00:00 → none | 2019-05-31 00:00 → none |
| 337 | Revisar la ETAPA del Proyecto | 2019-05-31 00:00 → none | 2019-06-03 00:00 → none |
| 338 | HITO: FINALIZACION ETAPA 3 | 2019-06-03 00:00 → none | 2019-06-03 00:00 → none |
| 339 | **ETAPA 4: Preparación Final previo Despliegue en Producción - Módulos PRI** | 2019-06-03 00:00 → none | 2019-06-18 00:00 → none |
| 340 | **Gestión General del Proyecto** | 2019-06-03 00:00 → none | 2019-06-04 00:00 → none |
| 341 | Confirmar el Plan de Entrenamiento | 2019-06-03 00:00 → none | 2019-06-04 00:00 → none |
| 342 | Finalizar plan de Salida a Producción | 2019-06-04 00:00 → none | 2019-06-04 00:00 → none |
| 343 | **Entrenamiento** | 2019-06-04 00:00 → none | 2019-06-12 00:00 → none |
| 344 | **Entrenamiento de Usuarios Funcionales y Certificación de Procesos** | 2019-06-04 00:00 → none | 2019-06-10 00:00 → none |
| 345 | 3.1 Compras Públicas | 2019-06-04 00:00 → none | 2019-06-05 00:00 → none |
| 346 | 6.2 Servicios Generales | 2019-06-05 00:00 → none | 2019-06-05 00:00 → none |
| 347 | 8.5 Gestión Jurídica - Financiera | 2019-06-05 00:00 → none | 2019-06-06 00:00 → none |
| 348 | 15.2 BI Financiero | 2019-06-06 00:00 → none | 2019-06-06 00:00 → none |
| 349 | 15.3 BI Administración del Talento Humano | 2019-06-06 00:00 → none | 2019-06-07 00:00 → none |
| 350 | 15.4 BI Compras Públicas | 2019-06-07 00:00 → none | 2019-06-07 00:00 → none |

| ID | Task | Start | Finish |
| --- | --- | --- | --- |
| 351 | 15.9 Tablero de Control | 2019-06-07 00:00 → none | 2019-06-10 00:00 → none |
| 352 | Entrenamiento de Usuario Técnicos | 2019-06-10 00:00 → none | 2019-06-12 00:00 → none |
| 353 | **Preparación del Sistema** | 2019-06-12 00:00 → none | 2019-06-14 00:00 → none |
| 354 | Completar la Administración del Sistema | 2019-06-12 00:00 → none | 2019-06-13 00:00 → none |
| 355 | Comprobación de la Puesta a Producción | 2019-06-13 00:00 → none | 2019-06-14 00:00 → none |
| 356 | **Transición** | 2019-06-14 00:00 → none | 2019-06-18 00:00 → none |
| 357 | Finalizar Procesamiento de Sistemas Legados | 2019-06-14 00:00 → none | 2019-06-14 00:00 → none |
| 358 | Realizar la Salida a Producción - Carga Inicial y Configuración Inicial | 2019-06-14 00:00 → none | 2019-06-18 00:00 → none |
| 359 | Revisar la ETAPA del Proyecto | 2019-06-18 00:00 → none | 2019-06-18 00:00 → none |
| 360 | HITO: FINALIZACION ETAPA 4 | 2019-06-18 00:00 → none | 2019-06-18 00:00 → none |
| 361 | **ETAPA 5: Despliegue en Producción y Soporte Técnico - Módulos PRI** | 2019-06-21 00:00 → none | 2019-07-10 00:00 → none |
| 362 | **Soporte en Producción** | 2019-06-21 00:00 → none | 2019-07-04 00:00 → none |
| 363 | Soporte durante la Salida a Producción | 2019-06-21 00:00 → none | 2019-06-28 00:00 → none |
| 364 | Resolver incidentes críticos | 2019-06-28 00:00 → none | 2019-07-02 00:00 → none |
| 365 | Entregar el soporte y Administración al cliente | 2019-07-02 00:00 → none | 2019-07-04 00:00 → none |
| 366 | **Mejora Continua** | 2019-06-21 00:00 → none | 2019-07-10 00:00 → none |
| 367 | Monitoreo del Sistema y Acompañamiento | 2019-06-21 00:00 → none | 2019-07-10 00:00 → none |
| 368 | Ajustes y Configuraciones finales al Software acorde a necesidades Entidad | 2019-06-21 00:00 → none | 2019-07-10 00:00 → none |
| 369 | **Cierre de la FASE 3 y Proyecto** | 2019-07-10 00:00 → none | 2019-07-10 00:00 → none |
| 370 | Reunión de Cierre de la FASE 3 y Proyecto | 2019-07-10 00:00 → none | 2019-07-10 00:00 → none |
| 371 | HITO: FIN DE LA FASE 3 y Proyecto | 2019-07-10 00:00 → none | 2019-07-10 00:00 → none |

## Version 6 (saved 2019-08-26)

Last finish stays 2019-08-16.

Changed:

| ID | Task | Duration | Predecessors |
| --- | --- | --- | --- |
| 1 | 20190122- Plan del Proyecto de Implementacion del SIIM Daule | 294.29d → 0d |  |
| 2 | **Programa de Implementación SIIM** | 294.29d → none |  |
| 3 | **FASE 1: Implementación de Módulos de Servicio al Cliente (SC) y Atención al Ciudadano (AC)** | 159.57d → none |  |
| 4 | **ETAPA 1: Preparación del Proyecto e Instalación del SIIM - Módulos SC y AC** | 9d → none |  |
| 5 | **Actividades de Gestión del Proyecto** | 2.29d → none |  |
| 6 | Revisión de Información de Contrato y Anexos | 6h → none |  |
| 7 | Definir la Organización del Proyecto | 4h → none | 6 → 6FS+6h |
| 8 | Kick-off Interno del Proyecto | 6h → none | 7 → 7FS+4h |
| 9 | **Preparación del kick-off del Proyecto** | 1.14d → none |  |
| 10 | Comunicación con el Cliente | 4h → none | 8 → 8FS+6h |
| 11 | Crear la presentación del kick-off | 4h → none | 10 → 10FS+4h |
| 12 | **Reunión de Kick-off** | 0.29d → none |  |
| 13 | Realizar la reunión de kick-off | 2h → none | 11 → 11FS+4h |
| 14 | **Entrega e Instalación del Software** | 4.29d → none |  |
| 15 | **Instalar SIIM en Servidor** | 4d → none | 12 → 12FS+0.29d |
| 16 | 1 Dirección de Desarrollo Territorial (No incluye Catastro) | 2h → none |  |
| 17 | 4 Dirección de Justicia y Vigilancia | 2h → none | 16 → 16FS+2h |
| 18 | 5 Dirección de Desarrollo Humano y Social | 2h → none | 17 → 17FS+2h |
| 19 | 8.3 Rentas | 2h → none | 18 → 18FS+2h |
| 20 | 8.4 Tesorería | 2h → none | 19 → 19FS+2h |
| 21 | 9.1 Mercados | 1h → none | 20 → 20FS+2h |
| 22 | 9.2 Cementerio | 1h → none | 21 → 21FS+1h |
| 23 | 9.3 Camal | 1h → none | 22 → 22FS+1h |
| 24 | 10 Registro de la Propiedad y Mercantil | 2h → none | 23 → 23FS+1h |
| 25 | 11 Administración de bomberos | 1h → none | 24 → 24FS+2h |
| 26 | 12 CRM para ciudadanos. Ventanilla Única | 2h → none | 25 → 25FS+1h |
| 27 | 15.1 BI Desarrollo Territorial | 2h → none | 26 → 26FS+2h |
| 28 | 15.5 BI Obras Públicas Municipales | 2h → none | 27 → 27FS+2h |
| 29 | 15.7 BI Registro de la Propiedad y Mercantil | 2h → none | 28 → 28FS+2h |
| 30 | 16.1 Consultas Portal Web | 2h → none | 29 → 29FS+2h |
| 31 | 16.2 Aplicación para móviles (APP) | 2h → none | 30 → 30FS+2h |
| 32 | Entrega de Software | 2h → none | 15 → 15FS+4d |
| 33 | Revisar la ETAPA del Proyecto | 1d → none | 14 → 14FS+4.29d |
| 34 | HITO: FINALIZACION ETAPA 1 | 0d → none | 33 → 33FS+1d |
| 35 | **ETAPA 2: Levantamiento de Características Institucionales - Módulos SC y AC** | 14.71d → none | 4 → 4FS+9d |
| 36 | **Actividades de Gestión del Proyecto** | 1.14d → none |  |
| 37 | Revisión del Plan del Proyecto | 4h → none | 33 → 33FS+1d |
| 38 | Programar talleres de requerimientos de Entidad | 4h → none | 37 → 37FS+4h |
| 39 | **Sesiones de Requerimientos del Entidad** | 12d → none |  |
| 40 | Conducir Sesiones de Requerimientos | 10d → none | 38 → 38FS+4h |
| 41 | Crear Documento de Características del Entidad | 2d → none | 40 → 40FS+10d |
| 42 | **Revisar el Documento de Características del Entidad** | 0.57d → none |  |
| 43 | Revisar el Documento de Características del Entidad | 2h → none | 41 → 41FS+2d |
| 44 | Revisar el Plan del Proyecto | 2h → none | 43 → 43FS+2h |
| 45 | Revisar la ETAPA del Proyecto | 1d → none | 42 → 42FS+0.57d |
| 46 | HITO: FINALIZACION ETAPA 2 | 0d → none | 45 → 45FS+1d |
| 47 | **ETAPA 3: Migración de Datos, Configuración y Pruebas de Operación - Módulos SC y AC** | 56.57d → none | 35 → 35FS+14.71d |
| 48 | **Gestión General del Proyecto** | 0.57d → none |  |
| 49 | Planificar cambio Organizacional | 2h → none | 45 → 45FS+1d |
| 50 | Planificar Entrenamiento a Usuarios Finales | 2h → none | 49 → 49FS+2h |
| 51 | Definir y Preparar la Migración de Datos | 2h → none | 49 → 49FS+2h |
| 52 | **Configuración del Sistema en Producción** | 56d → none |  |
| 53 | Instalar el SIIM en Producción | 1d → none | 51 → 51FS+2h |
| 54 | Configurar Inicialización del Sistema | 1d → none | 53 → 53FS+1d |
| 55 | Realizar la Migración de Datos | 54d → none | 54 → 54FS+1d |
| 56 | Desarrollar Adaptaciones al Software | 10d → none | 54 → 54FS+1d |
| 57 | Configuración del Sistema en base al Documento de Características del Entidad | 3d → none | 56 → 56FS+10d |
| 58 | Configurar Interfaces | 1d → none | 57 → 57FS+3d |
| 59 | Configurar Usuarios y Autorizaciones | 1d → none | 58 → 58FS+1d |
| 60 | **Gestión del Cambio Organizacional** | 1d → none |  |
| 61 | Conducir la comunicación de la Gestión de Cambios (si es aplicable) | 1d → none | 59 → 59FS+1d |
| 62 | **Pruebas de validación/aceptación del Sistema** | 3.43d → none |  |
| 63 | Mantener la Lista Maestra de Procesos de Entidad | 2h → none | 61 → 61FS+1d |
| 64 | **Conducir Talleres de Validación** | 3.14d → none | 63 → 63FS+2h |
| 65 | 1 Dirección de Desarrollo Territorial (No incluye Catastro) | 2h → none |  |
| 66 | 4 Dirección de Justicia y Vigilancia | 2h → none | 65 → 65FS+2h |
| 67 | 5 Dirección de Desarrollo Humano y Social | 1h → none | 66 → 66FS+2h |
| 68 | 8.3 Rentas | 2h → none | 67 → 67FS+1h |
| 69 | 8.4 Tesorería | 2h → none | 68 → 68FS+2h |
| 70 | 9.1 Mercados | 1h → none | 69 → 69FS+2h |

| ID | Task | Duration | Predecessors |
| --- | --- | --- | --- |
| 71 | 9.2 Cementerio | 1h → none | 70 → 70FS+1h |
| 72 | 9.3 Camal | 1h → none | 71 → 71FS+1h |
| 73 | 10 Registro de la Propiedad y Mercantil | 2h → none | 72 → 72FS+1h |
| 74 | 11 Administración de bomberos | 1h → none | 73 → 73FS+2h |
| 75 | 12 CRM para ciudadanos. Ventanilla Única | 2h → none | 74 → 74FS+1h |
| 76 | 15.1 BI Desarrollo Territorial | 1h → none | 75 → 75FS+2h |
| 77 | 15.5 BI Obras Públicas Municipales | 1h → none | 76 → 76FS+1h |
| 78 | 15.7 BI Registro de la Propiedad y Mercantil | 1h → none | 77 → 77FS+1h |
| 79 | 16.1 Consultas Portal Web | 1h → none | 78 → 78FS+1h |
| 80 | 16.2 Aplicación para móviles (APP) | 1h → none | 79 → 79FS+1h |
| 81 | **Pruebas de Aceptacion Sistema** | 5.43d → none |  |
| 82 | Definir casos de prueba y alcance | 2h → none | 80, 31 → 80FS+1h, 31FS+2h |
| 83 | Preparar ambiente de pruebas | 1d → none | 82 → 82FS+2h |
| 84 | **Ejecutar el plan de pruebas de Aceptacion del Sistema** | 3.14d → none | 83 → 83FS+1d |
| 85 | 1 Dirección de Desarrollo Territorial (No incluye Catastro) | 2h → none |  |
| 86 | 4 Dirección de Justicia y Vigilancia | 2h → none | 85 → 85FS+2h |
| 87 | 5 Dirección de Desarrollo Humano y Social | 1h → none | 86 → 86FS+2h |
| 88 | 8.3 Rentas | 2h → none | 87 → 87FS+1h |
| 89 | 8.4 Tesorería | 2h → none | 88 → 88FS+2h |
| 90 | 9.1 Mercados | 1h → none | 89 → 89FS+2h |
| 91 | 9.2 Cementerio | 1h → none | 90 → 90FS+1h |
| 92 | 9.3 Camal | 1h → none | 91 → 91FS+1h |
| 93 | 10 Registro de la Propiedad y Mercantil | 2h → none | 92 → 92FS+1h |
| 94 | 11 Administración de bomberos | 1h → none | 93 → 93FS+2h |
| 95 | 12 CRM para ciudadanos. Ventanilla Única | 2h → none | 94 → 94FS+1h |
| 96 | 15.1 BI Desarrollo Territorial | 1h → none | 95 → 95FS+2h |
| 97 | 15.5 BI Obras Públicas Municipales | 1h → none | 96 → 96FS+1h |
| 98 | 15.7 BI Registro de la Propiedad y Mercantil | 1h → none | 97 → 97FS+1h |
| 99 | 16.1 Consultas Portal Web | 1h → none | 98 → 98FS+1h |
| 100 | 16.2 Aplicación para móviles (APP) | 1h → none | 99 → 99FS+1h |
| 101 | Revisar los resultados de las pruebas y necesidades de cambios | 1d → none | 100, 80, 31 → 100FS+1h, 80FS+1h, 31FS+2h |
| 102 | **Planificar Salida a Producción y Soporte** | 0.29d → none |  |
| 103 | Definir Plan de Salida a Producción | 2h → none | 101 → 101FS+1d |
| 104 | Planificar Estrategia de Soporte | 2h → none | 101 → 101FS+1d |
| 105 | Planificar Administración del Sistema | 2h → none | 101 → 101FS+1d |
| 106 | Revisar la ETAPA del Proyecto | 1d → none | 102 → 102FS+0.29d |
| 107 | HITO: FINALIZACION ETAPA 3 | 0d → none | 106 → 106FS+1d |
| 108 | **ETAPA 4: Preparación Final previo Despliegue en Producción - Módulos SC y AC** | 19.86d → none |  |
| 109 | **Gestión General del Proyecto** | 0.57d → none |  |
| 110 | Confirmar el Plan de Entrenamiento | 2h → none | 106 → 106FS+1d |
| 111 | Finalizar plan de Salida a Producción | 2h → none | 110 → 110FS+2h |
| 112 | **Entrenamiento en Modulos de Areas Funcionales Fase 1** | 16d → none | 109 → 109FS+0.57d |
| 113 | **Entrenamiento de Usuarios Funcionales y Certificación de Procesos** | 12d → none | 111 → 111FS+2h |
| 114 | 1 Dirección de Desarrollo Territorial (No incluye Catastro) | 1d → none |  |
| 115 | 4 Dirección de Justicia y Vigilancia | 1d → none | 114 → 114FS+1d |
| 116 | 5 Dirección de Desarrollo Humano y Social | 1d → none | 115 → 115FS+1d |
| 117 | 8.3 Rentas | 1d → none | 116 → 116FS+1d |
| 118 | 8.4 Tesorería | 1d → none | 117 → 117FS+1d |
| 119 | 9.1 Mercados | 0.5d → none | 118 → 118FS+1d |
| 120 | 9.2 Cementerio | 0.5d → none | 119 → 119FS+0.5d |
| 121 | 9.3 Camal | 0.5d → none | 120 → 120FS+0.5d |
| 122 | 10 Registro de la Propiedad y Mercantil | 1d → none | 121 → 121FS+0.5d |
| 123 | 11 Administración de bomberos | 0.5d → none | 122 → 122FS+1d |
| 124 | 12 CRM para ciudadanos. Ventanilla Única | 1d → none | 123 → 123FS+0.5d |
| 125 | 15.1 BI Desarrollo Territorial | 0.5d → none | 124 → 124FS+1d |
| 126 | 15.5 BI Obras Públicas Municipales | 0.5d → none | 125 → 125FS+0.5d |
| 127 | 15.7 BI Registro de la Propiedad y Mercantil | 0.5d → none | 126 → 126FS+0.5d |
| 128 | 16.1 Consultas Portal Web | 1d → none | 127 → 127FS+0.5d |
| 129 | 16.2 Aplicación para móviles (APP) | 0.5d → none | 128 → 128FS+1d |
| 130 | Entrenamiento de Usuario Técnicos | 4d → none | 129, 100, 80, 31 → 129FS+0.5d, 100FS+1h, 80FS+1h, 31FS+2h |
| 131 | **Preparación del Sistema** | 0.86d → none | 112 → 112FS+16d |
| 132 | Completar la Administración del Sistema | 3h → none |  |
| 133 | Comprobación de la Puesta a Producción | 3h → none | 132 → 132FS+3h |
| 134 | **Transición** | 2.14d → none | 131 → 131FS+0.86d |
| 135 | Finalizar Procesamiento de Sistemas Legados | 1h → none |  |
| 136 | Realizar la Salida a Producción - Carga Inicial y Configuración Inicial | 2d → none | 135 → 135FS+1h |
| 137 | Revisar la ETAPA del Proyecto | 2h → none | 134 → 134FS+2.14d |
| 138 | HITO: FINALIZACION ETAPA 4 | 0d → none | 137 → 137FS+2h |
| 139 | **ETAPA 5: Despliegue en Producción y Soporte Técnico - Módulos SC y AC** | 30d → none | 108 → 108FS+19.86d |
| 140 | **Soporte en Producción** | 30d → none |  |

| ID | Task | Duration | Predecessors |
| --- | --- | --- | --- |
| 141 | Soporte durante la Salida a Producción | 30d → none | 137 → 137FS+2h |
| 142 | Resolver incidentes críticos | 20d → none | 137 → 137FS+2h |
| 143 | Entregar el soporte y Administración al cliente | 1d → none |  |
| 144 | **Mejora Continua** | 10d → none |  |
| 145 | Monitoreo del Sistema y Acompañamiento ETAPA1 | 10d → none | 137 → 137FS+2h |
| 146 | Ajustes y Configuraciones finales al Software acorde a necesidades Entidad | 10d → none | 137 → 137FS+2h |
| 147 | **Cierre de la ETAPA 5** | 0.29d → none |  |
| 148 | Reunión de Cierre de la ETAPA 5 | 2h → none | 144 → 144FS+10d |
| 149 | HITO: FIN DE LA ETAPA 5 | 0d → none | 148 → 148FS+2h |
| 150 | **ETAPA 6: Estabilización, Apoyo Emisión 2019 y Desarrollo de funcionalidades no establecidas en el Alcance Contractual** | 57.29d → none |  |
| 151 | Depuración de Errores de Calidad de Información fuente migrada (Base Oracle) | 30d → none | 139 → 139FS+30d |
| 152 | Soporte y Mantenimiento de Módulos de la Fase 1 | 30d → none | 139 → 139FS+30d |
| 153 | Adaptaciones a Software para incluir Nuevas funcionalidades no contempladas en alcance proyecto | 30d → none | 139 → 139FS+30d |
| 154 | Implementación de Licencia temporal de Modulo de Catastro Urbano SIIM | 20d → none |  |
| 155 | Migración de información de Emisión de Impuestos de Catastro Urbano 2019 | 20d → none |  |
| 156 | Creación de interfaces mediante ETLs para integración entre Sistema Oracle y SIIM para la recaudación de Impuestos 2019 de Catastro Urbano | 20d → none |  |
| 157 | Soporte en Recaudación de Impuestos de Catastro urbano y mejoras 2019 | 25d → none | 156 → 156FS+20d |
| 158 | **Cierre de la FASE 1** | 0.29d → none |  |
| 159 | Reunión de Cierre de la FASE 1 | 2h → none | 157 → 157FS+25d |
| 160 | HITO: FIN DE LA FASE 1 | 0d → none | 159 → 159FS+2h |
| 161 | **FASE 2: Implementación de Módulos de Planificación de Recursos Institucionales - PRI** | 88.29d → none |  |
| 162 | **ETAPA 1: Instalación del SIIM - Módulos PRI** | 4.14d → none |  |
| 163 | **Entrega e Instalación del Software** | 3.14d → none |  |
| 164 | **Instalar SIIM en Servidor** | 2.86d → none |  |
| 165 | **Instalar Módulos PRI** | 2.86d → none | 150 → 150FS+57.29d |
| 166 | 2.1 Administración Técnica | 2h → none |  |
| 167 | 2.2 Salud Ocupacional y Riesgos | 2h → none | 166 → 166FS+2h |
| 168 | 3.2 Adquisiciones | 2h → none | 167 → 167FS+2h |
| 169 | 6.1 Administración de Bienes | 2h → none | 168 → 168FS+2h |
| 170 | 8.1 Contabilidad | 2h → none | 169 → 169FS+2h |
| 171 | 8.2 Presupuestos | 2h → none | 170 → 170FS+2h |
| 172 | 13 CRM para Urbanizaciones | 2h → none | 171 → 171FS+2h |
| 173 | 14 Dirección de Planificación Institucional (Incluye control de proyectos de Obras Públicas | 2h → none | 172 → 172FS+2h |
| 174 | 15.6 Servicios Corporativos | 2h → none | 173 → 173FS+2h |
| 175 | 15.8 BI Planificación Institucional | 2h → none | 174 → 174FS+2h |
| 176 | Entrega de Software | 2h → none | 164 → 164FS+2.86d |
| 177 | Revisar la ETAPA del Proyecto | 1d → none | 163 → 163FS+3.14d |
| 178 | HITO: FINALIZACION ETAPA 1 | 0d → none | 177 → 177FS+1d |
| 179 | **ETAPA 2: Levantamiento de Características Institucionales - Módulos PRI** | 8.57d → none | 162 → 162FS+4.14d |
| 180 | **Actividades de Gestión del Proyecto** | 0.57d → none |  |
| 181 | Revisión del Plan del Proyecto | 2h → none |  |
| 182 | Programar talleres de requerimientos de Entidad | 2h → none | 181 → 181FS+2h |
| 183 | **Sesiones de Requerimientos del Entidad** | 6d → none | 180 → 180FS+0.57d |
| 184 | Conducir Sesiones de Requerimientos | 5d → none |  |
| 185 | Crear Documento de Características del Entidad | 1d → none | 184 → 184FS+5d |
| 186 | **Revisar el Documento de Características del Entidad** | 1d → none | 183 → 183FS+6d |
| 187 | Revisar el Documento de Características del Entidad | 4h → none |  |
| 188 | Revisar el Plan del Proyecto | 3h → none | 187 → 187FS+4h |
| 189 | Revisar la ETAPA del Proyecto | 1d → none | 186 → 186FS+1d |
| 190 | HITO: FINALIZACION ETAPA 2 | 0d → none | 189 → 189FS+1d |
| 191 | **ETAPA 3: Migración de Datos, Configuración y Pruebas de Operación de Módulos - Módulos PRI** | 33.71d → none | 179 → 179FS+8.57d |
| 192 | **Gestión General del Proyecto** | 1.57d → none |  |
| 193 | Planificar cambio Organizacional | 3h → none |  |
| 194 | Planificar Entrenamiento a Usuarios Finales | 4h → none | 193 → 193FS+3h |
| 195 | Definir y Preparar la Migración de Datos | 4h → none | 194 → 194FS+4h |
| 196 | **Configuración del Sistema en Producción** | 19.57d → none | 192 → 192FS+1.57d |
| 197 | Instalar el SIIM en Producción | 4h → none |  |
| 198 | Configurar Inicialización del Sistema | 1d → none | 197 → 197FS+4h |
| 199 | Realizar la Migración de Datos | 13d → none | 198 → 198FS+1d |
| 200 | Desarrollar Adaptaciones al Software | 2d → none | 199 → 199FS+13d |
| 201 | Configuración del Sistema en base al Documento de Características del Entidad | 1d → none | 200 → 200FS+2d |
| 202 | Configurar Interfaces | 1d → none | 201 → 201FS+1d |
| 203 | Configurar Usuarios y Autorizaciones | 1d → none | 202 → 202FS+1d |
| 204 | **Gestión del Cambio Organizacional** | 0.29d → none | 196 → 196FS+19.57d |
| 205 | Conducir la comunicación de la Gestión de Cambios (si es aplicable) | 2h → none |  |
| 206 | **Pruebas de validación del Sistema** | 4.57d → none | 204 → 204FS+0.29d |
| 207 | Mantener la Lista Maestra de Procesos de Entidad | 4h → none |  |
| 208 | **Conducir Talleres de Validación** | 4d → none | 207 → 207FS+4h |
| 209 | 2.1 Administración Técnica | 4h → none |  |
| 210 | 2.2 Salud Ocupacional y Riesgos | 2h → none | 209 → 209FS+4h |

| ID | Task | Duration | Predecessors |
| --- | --- | --- | --- |
| 211 | 3.2 Adquisiciones | 4h → none | 210 → 210FS+2h |
| 212 | 6.1 Administración de Bienes | 2h → none | 211 → 211FS+4h |
| 213 | 8.1 Contabilidad | 4h → none | 212 → 212FS+2h |
| 214 | 8.2 Presupuestos | 4h → none | 213 → 213FS+4h |
| 215 | 13 CRM para Urbanizaciones | 2h → none | 214 → 214FS+4h |
| 216 | 14 Dirección de Planificación Institucional (Incluye control de proyectos de Obras Públicas) | 2h → none | 215 → 215FS+2h |
| 217 | 15.6 BI Servicios Corporativos | 2h → none | 216 → 216FS+2h |
| 218 | 15.8 BI Planificación Institucional | 2h → none | 217 → 217FS+2h |
| 219 | **Pruebas de aceptacion del Sistema** | 5.43d → none | 206 → 206FS+4.57d |
| 220 | Definir casos de prueba y alcance | 3h → none |  |
| 221 | Preparar ambiente de pruebas | 1d → none | 220 → 220FS+3h |
| 222 | **Ejecutar el plan de pruebas** | 4d → none | 221 → 221FS+1d |
| 223 | 2.1 Administración Técnica | 4h → none |  |
| 224 | 2.2 Salud Ocupacional y Riesgos | 2h → none | 223 → 223FS+4h |
| 225 | 3.2 Adquisiciones | 4h → none | 224 → 224FS+2h |
| 226 | 6.1 Administración de Bienes | 2h → none | 225 → 225FS+4h |
| 227 | 8.1 Contabilidad | 4h → none | 226 → 226FS+2h |
| 228 | 8.2 Presupuestos | 4h → none | 227 → 227FS+4h |
| 229 | 13 CRM para Urbanizaciones | 2h → none | 228 → 228FS+4h |
| 230 | 14 Dirección de Planificación Institucional (Incluye control de proyectos de Obras Públicas) | 2h → none | 229 → 229FS+2h |
| 231 | 15.6 BI Servicios Corporativos | 2h → none | 230 → 230FS+2h |
| 232 | 15.8 BI Planificación Institucional | 2h → none | 231 → 231FS+2h |
| 233 | Revisar los resultados de las pruebas y necesidades de cambios | 1d → none |  |
| 234 | **Planificar Salida a Producción y Soporte** | 1.29d → none | 219 → 219FS+5.43d |
| 235 | Definir Plan de Salida a Producción | 3h → none |  |
| 236 | Planificar Estrategia de Soporte | 3h → none | 235 → 235FS+3h |
| 237 | Planificar Administración del Sistema | 3h → none | 236 → 236FS+3h |
| 238 | Revisar la ETAPA del Proyecto | 1d → none | 234 → 234FS+1.29d |
| 239 | HITO: FINALIZACION ETAPA 3 | 0d → none | 238 → 238FS+1d |
| 240 | **ETAPA 4: Preparación Final previo Despliegue en Producción - Módulos PRI** | 11.43d → none | 191 → 191FS+33.71d |
| 241 | **Gestión General del Proyecto** | 1.14d → none |  |
| 242 | Confirmar el Plan de Entrenamiento | 4h → none |  |
| 243 | Finalizar plan de Salida a Producción | 4h → none | 242 → 242FS+4h |
| 244 | **Entrenamiento** | 6d → none | 241 → 241FS+1.14d |
| 245 | **Entrenamiento de Usuarios Funcionales y Certificación de Procesos** | 4d → none |  |
| 246 | 2.1 Administración Técnica | 4h → none |  |
| 247 | 2.2 Salud Ocupacional y Riesgos | 2h → none | 246 → 246FS+4h |
| 248 | 3.2 Adquisiciones | 4h → none | 247 → 247FS+2h |
| 249 | 6.1 Administración de Bienes | 2h → none | 248 → 248FS+4h |
| 250 | 8.1 Contabilidad | 4h → none | 249 → 249FS+2h |
| 251 | 8.2 Presupuestos | 4h → none | 250 → 250FS+4h |
| 252 | 13 CRM para Urbanizaciones | 2h → none | 251 → 251FS+4h |
| 253 | 14 Dirección de Planificación Institucional (Incluye control de proyectos de Obras Públicas) | 2h → none | 252 → 252FS+2h |
| 254 | 15.6 BI Servicios Corporativos | 2h → none | 253 → 253FS+2h |
| 255 | 15.8 BI Planificación Institucional | 2h → none | 254 → 254FS+2h |
| 256 | Entrenamiento de Usuario Técnicos | 6d → none |  |
| 257 | **Preparación del Sistema** | 1.43d → none | 244 → 244FS+6d |
| 258 | Completar la Administración del Sistema | 5h → none |  |
| 259 | Comprobación de la Puesta a Producción | 5h → none | 258 → 258FS+5h |
| 260 | **Transición** | 2.57d → none | 257 → 257FS+1.43d |
| 261 | Finalizar Procesamiento de Sistemas Legados | 4h → none |  |
| 262 | Realizar la Salida a Producción - Carga Inicial y Configuración Inicial | 2d → none | 261 → 261FS+4h |
| 263 | Revisar la ETAPA del Proyecto | 2h → none | 260 → 260FS+2.57d |
| 264 | HITO: FINALIZACION ETAPA 4 | 0d → none | 263 → 263FS+2h |
| 265 | **ETAPA 5: Despliegue en Producción y Soporte Técnico - Módulos PRI** | 30.43d → none | 240 → 240FS+11.43d |
| 266 | **Soporte en Producción** | 15d → none |  |
| 267 | Soporte durante la Salida a Producción | 15d → none |  |
| 268 | Resolver incidentes críticos | 15d → none | 263 → 263FS+2h |
| 269 | Entregar el soporte y Administración al cliente | 2d → none | 263 → 263FS+2h |
| 270 | **Mejora Continua** | 15d → none | 266 → 266FS+15d |
| 271 | Monitoreo del Sistema y Acompañamiento ETAPA2 | 15d → none | 263 → 263FS+2h |
| 272 | Ajustes y Configuraciones finales al Software acorde a necesidades Entidad | 15d → none | 263 → 263FS+2h |
| 273 | **Cierre de la FASE 2** | 0.43d → none | 270 → 270FS+15d |
| 274 | Reunión de Cierre de la FASE 2 | 3h → none |  |
| 275 | HITO: FIN DE LA FASE 2 | 0d → none | 273 → 273FS+0.43d |
| 276 | **FASE 3: Implementación de Módulos de Planificación de Recursos Institucionales - PRI** | 76.86d → none |  |
| 277 | **ETAPA 1: Instalación del SIIM - Módulos PRI** | 4.29d → none |  |
| 278 | **Entrega e Instalación del Software** | 3.29d → none |  |
| 279 | **Instalar SIIM en Servidor** | 3d → none |  |
| 280 | Instalar Módulos PRI | 3d → none |  |

| ID | Task | Duration | Predecessors |
| --- | --- | --- | --- |
| 281 | Entrega de Software | 2h → none | 279 → 279FS+3d |
| 282 | Revisar la ETAPA del Proyecto | 1d → none | 278 → 278FS+3.29d |
| 283 | HITO: FINALIZACION ETAPA 1 | 0d → none | 282 → 282FS+1d |
| 284 | **ETAPA 2: Levantamiento de Características Institucionales - Módulos PRI** | 8.57d → none | 277 → 277FS+4.29d |
| 285 | **Actividades de Gestión del Proyecto** | 0.57d → none |  |
| 286 | Revisión del Plan del Proyecto | 2h → none |  |
| 287 | Programar talleres de requerimientos de Entidad | 2h → none | 286 → 286FS+2h |
| 288 | **Sesiones de Requerimientos del Entidad** | 6d → none | 285 → 285FS+0.57d |
| 289 | Conducir Sesiones de Requerimientos | 3d → none |  |
| 290 | Crear Documento de Características del Entidad | 3d → none | 289 → 289FS+3d |
| 291 | **Revisar el Documento de Características del Entidad** | 1d → none | 288 → 288FS+6d |
| 292 | Revisar el Documento de Características del Entidad | 4h → none |  |
| 293 | Revisar el Plan del Proyecto | 3h → none | 292 → 292FS+4h |
| 294 | Revisar la ETAPA del Proyecto | 1d → none | 291 → 291FS+1d |
| 295 | HITO: FINALIZACION ETAPA 2 | 0d → none | 294 → 294FS+1d |
| 296 | **ETAPA 3: Migración de Datos, Configuración y Pruebas de Operación de Módulos - Módulos PRI** | 33.43d → none | 284 → 284FS+8.57d |
| 297 | **Gestión General del Proyecto** | 1.57d → none |  |
| 298 | Planificar cambio Organizacional | 3h → none |  |
| 299 | Planificar Entrenamiento a Usuarios Finales | 4h → none | 298 → 298FS+3h |
| 300 | Definir y Preparar la Migración de Datos | 4h → none | 299 → 299FS+4h |
| 301 | **Configuración del Sistema en Producción** | 20.57d → none | 297 → 297FS+1.57d |
| 302 | Instalar el SIIM en Producción | 4h → none |  |
| 303 | Configurar Inicialización del Sistema | 1d → none | 302 → 302FS+4h |
| 304 | Realizar la Migración de Datos | 10d → none | 303 → 303FS+1d |
| 305 | Desarrollar Adaptaciones al Software | 5d → none | 304 → 304FS+10d |
| 306 | Configuración del Sistema en base al Documento de Características del Entidad | 2d → none | 305 → 305FS+5d |
| 307 | Configurar Interfaces | 1d → none | 306 → 306FS+2d |
| 308 | Configurar Usuarios y Autorizaciones | 1d → none | 307 → 307FS+1d |
| 309 | **Gestión del Cambio Organizacional** | 2d → none | 301 → 301FS+20.57d |
| 310 | Conducir la comunicación de la Gestión de Cambios (si es aplicable) | 2d → none |  |
| 311 | **Pruebas de validación/aceptación del Sistema** | 2.57d → none | 309 → 309FS+2d |
| 312 | Mantener la Lista Maestra de Procesos de Entidad | 4h → none |  |
| 313 | **Conducir Talleres de Validación** | 2d → none | 312 → 312FS+4h |
| 314 | 3.1 Compras Públicas | 2h → none |  |
| 315 | 6.2 Servicios Generales | 2h → none | 314 → 314FS+2h |
| 316 | 8.5 Gestión Jurídica - Financiera | 2h → none | 315 → 315FS+2h |
| 317 | 15.2 BI Financiero | 2h → none | 316 → 316FS+2h |
| 318 | 15.3 BI Administración del Talento Humano | 2h → none | 317 → 317FS+2h |
| 319 | 15.4 BI Compras Públicas | 2h → none | 318 → 318FS+2h |
| 320 | 15.9 Tablero de Control | 2h → none | 319 → 319FS+2h |
| 321 | **Pruebas de aceptacion del Sistema** | 4.43d → none | 311 → 311FS+2.57d |
| 322 | Definir casos de prueba y alcance | 3h → none |  |
| 323 | Preparar ambiente de pruebas | 1d → none | 322 → 322FS+3h |
| 324 | **Ejecutar el plan de pruebas** | 2d → none | 323 → 323FS+1d |
| 325 | 3.1 Compras Públicas | 2h → none |  |
| 326 | 6.2 Servicios Generales | 2h → none | 325 → 325FS+2h |
| 327 | 8.5 Gestión Jurídica - Financiera | 2h → none | 326 → 326FS+2h |
| 328 | 15.2 BI Financiero | 2h → none | 327 → 327FS+2h |
| 329 | 15.3 BI Administración del Talento Humano | 2h → none | 328 → 328FS+2h |
| 330 | 15.4 BI Compras Públicas | 2h → none | 329 → 329FS+2h |
| 331 | 15.9 Tablero de Control | 2h → none | 330 → 330FS+2h |
| 332 | Revisar los resultados de las pruebas y necesidades de cambios | 1d → none | 331, 320 → 331FS+2h, 320FS+2h |
| 333 | **Planificar Salida a Producción y Soporte** | 1.29d → none | 321 → 321FS+4.43d |
| 334 | Definir Plan de Salida a Producción | 3h → none |  |
| 335 | Planificar Estrategia de Soporte | 3h → none | 334 → 334FS+3h |
| 336 | Planificar Administración del Sistema | 3h → none | 335 → 335FS+3h |
| 337 | Revisar la ETAPA del Proyecto | 1d → none | 333 → 333FS+1.29d |
| 338 | HITO: FINALIZACION ETAPA 3 | 0d → none | 337 → 337FS+1d |
| 339 | **ETAPA 4: Preparación Final previo Despliegue en Producción - Módulos PRI** | 12.43d → none | 296 → 296FS+33.43d |
| 340 | **Gestión General del Proyecto** | 1.14d → none |  |
| 341 | Confirmar el Plan de Entrenamiento | 4h → none |  |
| 342 | Finalizar plan de Salida a Producción | 4h → none | 341 → 341FS+4h |
| 343 | **Entrenamiento** | 7d → none | 340 → 340FS+1.14d |
| 344 | **Entrenamiento de Usuarios Funcionales y Certificación de Procesos** | 4d → none |  |
| 345 | 3.1 Compras Públicas | 4h → none |  |
| 346 | 6.2 Servicios Generales | 4h → none | 345 → 345FS+4h |
| 347 | 8.5 Gestión Jurídica - Financiera | 4h → none | 346 → 346FS+4h |
| 348 | 15.2 BI Financiero | 4h → none | 347 → 347FS+4h |
| 349 | 15.3 BI Administración del Talento Humano | 4h → none | 348 → 348FS+4h |
| 350 | 15.4 BI Compras Públicas | 4h → none | 349 → 349FS+4h |

| ID | Task | Duration | Predecessors |
| --- | --- | --- | --- |
| 351 | 15.9 Tablero de Control | 4h → none | 350 → 350FS+4h |
| 352 | Entrenamiento de Usuario Técnicos | 3d → none | 351 → 351FS+4h |
| 353 | **Preparación del Sistema** | 1.43d → none | 343 → 343FS+7d |
| 354 | Completar la Administración del Sistema | 5h → none |  |
| 355 | Comprobación de la Puesta a Producción | 5h → none | 354 → 354FS+5h |
| 356 | **Transición** | 2.57d → none | 353 → 353FS+1.43d |
| 357 | Finalizar Procesamiento de Sistemas Legados | 4h → none |  |
| 358 | Realizar la Salida a Producción - Carga Inicial y Configuración Inicial | 2d → none | 357 → 357FS+4h |
| 359 | Revisar la ETAPA del Proyecto | 2h → none | 356 → 356FS+2.57d |
| 360 | HITO: FINALIZACION ETAPA 4 | 0d → none | 359 → 359FS+2h |
| 361 | **ETAPA 5: Despliegue en Producción y Soporte Técnico - Módulos PRI** | 15.43d → none | 339 → 339FS+12.43d |
| 362 | **Soporte en Producción** | 10d → none |  |
| 363 | Soporte durante la Salida a Producción | 5d → none |  |
| 364 | Resolver incidentes críticos | 3d → none | 363 → 363FS+5d |
| 365 | Entregar el soporte y Administración al cliente | 2d → none | 364 → 364FS+3d |
| 366 | **Mejora Continua** | 15d → none | 339 → 339FS+12.43d |
| 367 | Monitoreo del Sistema y Acompañamiento | 15d → none |  |
| 368 | Ajustes y Configuraciones finales al Software acorde a necesidades Entidad | 15d → none | 339 → 339FS+12.43d |
| 369 | **Cierre de la FASE 3 y Proyecto** | 0.43d → none | 366 → 366FS+15d |
| 370 | Reunión de Cierre de la FASE 3 y Proyecto | 3h → none |  |
| 371 | HITO: FIN DE LA FASE 3 y Proyecto | 0d → none | 366 → 366FS+15d |

## Version 7 (saved 2019-08-26)

Note of the change: Merge branch 'master' of https://github.com/Isamae/Project-Estratego

Last finish stays 2019-08-16.

Changed:

| ID | Task | Other |
| --- | --- | --- |
| 2 | **Programa de Implementaci�n SIIM** | was named Programa de Implementación SIIM |
| 3 | **FASE 1: Implementaci�n de M�dulos de Servicio al Cliente (SC) y Atenci�n al Ciudadano (AC)** | was named FASE 1: Implementación de Módulos de Servicio al Cliente (SC) y Atención al Ciudadano (AC) |
| 4 | **ETAPA 1: Preparaci�n del Proyecto e Instalaci�n del SIIM - M�dulos SC y AC** | was named ETAPA 1: Preparación del Proyecto e Instalación del SIIM - Módulos SC y AC |
| 5 | **Actividades de Gesti�n del Proyecto** | was named Actividades de Gestión del Proyecto |
| 6 | Revisi�n de Informaci�n de Contrato y Anexos | was named Revisión de Información de Contrato y Anexos |
| 7 | Definir la Organizaci�n del Proyecto | was named Definir la Organización del Proyecto |
| 9 | **Preparaci�n del kick-off del Proyecto** | was named Preparación del kick-off del Proyecto |
| 10 | Comunicaci�n con el Cliente | was named Comunicación con el Cliente |
| 11 | Crear la presentaci�n del kick-off | was named Crear la presentación del kick-off |
| 12 | **Reuni�n de Kick-off** | was named Reunión de Kick-off |
| 13 | Realizar la reuni�n de kick-off | was named Realizar la reunión de kick-off |
| 14 | **Entrega e Instalaci�n del Software** | was named Entrega e Instalación del Software |
| 16 | 1 Direcci�n de Desarrollo Territorial (No incluye Catastro) | was named 1 Dirección de Desarrollo Territorial (No incluye Catastro) |
| 17 | 4 Direcci�n de Justicia y Vigilancia | was named 4 Dirección de Justicia y Vigilancia |
| 18 | 5 Direcci�n de Desarrollo Humano y Social | was named 5 Dirección de Desarrollo Humano y Social |
| 20 | 8.4 Tesorer�a | was named 8.4 Tesorería |
| 25 | 11 Administraci�n de bomberos | was named 11 Administración de bomberos |
| 26 | 12 CRM para ciudadanos. Ventanilla �nica | was named 12 CRM para ciudadanos. Ventanilla Única |
| 28 | 15.5 BI Obras P�blicas Municipales | was named 15.5 BI Obras Públicas Municipales |
| 31 | 16.2 Aplicaci�n para m�viles (APP) | was named 16.2 Aplicación para móviles (APP) |
| 35 | **ETAPA 2: Levantamiento de Caracter�sticas Institucionales - M�dulos SC y AC** | was named ETAPA 2: Levantamiento de Características Institucionales - Módulos SC y AC |
| 36 | **Actividades de Gesti�n del Proyecto** | was named Actividades de Gestión del Proyecto |
| 37 | Revisi�n del Plan del Proyecto | was named Revisión del Plan del Proyecto |
| 41 | Crear Documento de Caracter�sticas del Entidad | was named Crear Documento de Características del Entidad |
| 42 | **Revisar el Documento de Caracter�sticas del Entidad** | was named Revisar el Documento de Características del Entidad |
| 43 | Revisar el Documento de Caracter�sticas del Entidad | was named Revisar el Documento de Características del Entidad |
| 47 | **ETAPA 3: Migraci�n de Datos, Configuraci�n y Pruebas de Operaci�n - M�dulos SC y AC** | was named ETAPA 3: Migración de Datos, Configuración y Pruebas de Operación - Módulos SC y AC |
| 48 | **Gesti�n General del Proyecto** | was named Gestión General del Proyecto |
| 51 | Definir y Preparar la Migraci�n de Datos | was named Definir y Preparar la Migración de Datos |
| 52 | **Configuraci�n del Sistema en Producci�n** | was named Configuración del Sistema en Producción |
| 53 | Instalar el SIIM en Producci�n | was named Instalar el SIIM en Producción |
| 54 | Configurar Inicializaci�n del Sistema | was named Configurar Inicialización del Sistema |
| 55 | Realizar la Migraci�n de Datos | was named Realizar la Migración de Datos |
| 57 | Configuraci�n del Sistema en base al Documento de Caracter�sticas del Entidad | was named Configuración del Sistema en base al Documento de Características del Entidad |
| 60 | **Gesti�n del Cambio Organizacional** | was named Gestión del Cambio Organizacional |
| 61 | Conducir la comunicaci�n de la Gesti�n de Cambios (si es aplicable) | was named Conducir la comunicación de la Gestión de Cambios (si es aplicable) |
| 62 | **Pruebas de validaci�n/aceptaci�n del Sistema** | was named Pruebas de validación/aceptación del Sistema |
| 64 | **Conducir Talleres de Validaci�n** | was named Conducir Talleres de Validación |
| 65 | 1 Direcci�n de Desarrollo Territorial (No incluye Catastro) | was named 1 Dirección de Desarrollo Territorial (No incluye Catastro) |
| 66 | 4 Direcci�n de Justicia y Vigilancia | was named 4 Dirección de Justicia y Vigilancia |
| 67 | 5 Direcci�n de Desarrollo Humano y Social | was named 5 Dirección de Desarrollo Humano y Social |
| 69 | 8.4 Tesorer�a | was named 8.4 Tesorería |
| 74 | 11 Administraci�n de bomberos | was named 11 Administración de bomberos |
| 75 | 12 CRM para ciudadanos. Ventanilla �nica | was named 12 CRM para ciudadanos. Ventanilla Única |
| 77 | 15.5 BI Obras P�blicas Municipales | was named 15.5 BI Obras Públicas Municipales |
| 80 | 16.2 Aplicaci�n para m�viles (APP) | was named 16.2 Aplicación para móviles (APP) |
| 85 | 1 Direcci�n de Desarrollo Territorial (No incluye Catastro) | was named 1 Dirección de Desarrollo Territorial (No incluye Catastro) |
| 86 | 4 Direcci�n de Justicia y Vigilancia | was named 4 Dirección de Justicia y Vigilancia |
| 87 | 5 Direcci�n de Desarrollo Humano y Social | was named 5 Dirección de Desarrollo Humano y Social |
| 89 | 8.4 Tesorer�a | was named 8.4 Tesorería |
| 94 | 11 Administraci�n de bomberos | was named 11 Administración de bomberos |
| 95 | 12 CRM para ciudadanos. Ventanilla �nica | was named 12 CRM para ciudadanos. Ventanilla Única |
| 97 | 15.5 BI Obras P�blicas Municipales | was named 15.5 BI Obras Públicas Municipales |
| 100 | 16.2 Aplicaci�n para m�viles (APP) | was named 16.2 Aplicación para móviles (APP) |
| 102 | **Planificar Salida a Producci�n y Soporte** | was named Planificar Salida a Producción y Soporte |
| 103 | Definir Plan de Salida a Producci�n | was named Definir Plan de Salida a Producción |
| 105 | Planificar Administraci�n del Sistema | was named Planificar Administración del Sistema |
| 108 | **ETAPA 4: Preparaci�n Final previo Despliegue en Producci�n - M�dulos SC y AC** | was named ETAPA 4: Preparación Final previo Despliegue en Producción - Módulos SC y AC |
| 109 | **Gesti�n General del Proyecto** | was named Gestión General del Proyecto |
| 111 | Finalizar plan de Salida a Producci�n | was named Finalizar plan de Salida a Producción |
| 113 | **Entrenamiento de Usuarios Funcionales y Certificaci�n de Procesos** | was named Entrenamiento de Usuarios Funcionales y Certificación de Procesos |
| 114 | 1 Direcci�n de Desarrollo Territorial (No incluye Catastro) | was named 1 Dirección de Desarrollo Territorial (No incluye Catastro) |
| 115 | 4 Direcci�n de Justicia y Vigilancia | was named 4 Dirección de Justicia y Vigilancia |
| 116 | 5 Direcci�n de Desarrollo Humano y Social | was named 5 Dirección de Desarrollo Humano y Social |
| 118 | 8.4 Tesorer�a | was named 8.4 Tesorería |
| 123 | 11 Administraci�n de bomberos | was named 11 Administración de bomberos |
| 124 | 12 CRM para ciudadanos. Ventanilla �nica | was named 12 CRM para ciudadanos. Ventanilla Única |
| 126 | 15.5 BI Obras P�blicas Municipales | was named 15.5 BI Obras Públicas Municipales |
| 129 | 16.2 Aplicaci�n para m�viles (APP) | was named 16.2 Aplicación para móviles (APP) |
| 130 | Entrenamiento de Usuario T�cnicos | was named Entrenamiento de Usuario Técnicos |

| ID | Task | Other |
| --- | --- | --- |
| 131 | **Preparaci�n del Sistema** | was named Preparación del Sistema |
| 132 | Completar la Administraci�n del Sistema | was named Completar la Administración del Sistema |
| 133 | Comprobaci�n de la Puesta a Producci�n | was named Comprobación de la Puesta a Producción |
| 134 | **Transici�n** | was named Transición |
| 136 | Realizar la Salida a Producci�n - Carga Inicial y Configuraci�n Inicial | was named Realizar la Salida a Producción - Carga Inicial y Configuración Inicial |
| 139 | **ETAPA 5: Despliegue en Producci�n y Soporte T�cnico - M�dulos SC y AC** | was named ETAPA 5: Despliegue en Producción y Soporte Técnico - Módulos SC y AC |
| 140 | **Soporte en Producci�n** | was named Soporte en Producción |
| 141 | Soporte durante la Salida a Producci�n | was named Soporte durante la Salida a Producción |
| 142 | Resolver incidentes cr�ticos | was named Resolver incidentes críticos |
| 143 | Entregar el soporte y Administraci�n al cliente | was named Entregar el soporte y Administración al cliente |
| 145 | Monitoreo del Sistema y Acompa�amiento ETAPA1 | was named Monitoreo del Sistema y Acompañamiento ETAPA1 |
| 148 | Reuni�n de Cierre de la ETAPA 5 | was named Reunión de Cierre de la ETAPA 5 |
| 150 | **ETAPA 6: Estabilizaci�n, Apoyo Emisi�n 2019 y Desarrollo de funcionalidades no establecidas en el Alcance Contractual** | was named ETAPA 6: Estabilización, Apoyo Emisión 2019 y Desarrollo de funcionalidades no establecidas en el Alcance Contractual |
| 151 | Depuraci�n de Errores de Calidad de Informaci�n fuente migrada (Base Oracle) | was named Depuración de Errores de Calidad de Información fuente migrada (Base Oracle) |
| 152 | Soporte y Mantenimiento de M�dulos de la Fase 1 | was named Soporte y Mantenimiento de Módulos de la Fase 1 |
| 154 | Implementaci�n de Licencia temporal de Modulo de Catastro Urbano SIIM | was named Implementación de Licencia temporal de Modulo de Catastro Urbano SIIM |
| 155 | Migraci�n de informaci�n de Emisi�n de Impuestos de Catastro Urbano 2019 | was named Migración de información de Emisión de Impuestos de Catastro Urbano 2019 |
| 156 | Creaci�n de interfaces mediante ETLs para integraci�n entre Sistema Oracle y SIIM para la recaudaci�n de Impuestos 2019 de Catastro Urbano | was named Creación de interfaces mediante ETLs para integración entre Sistema Oracle y SIIM para la recaudación de Impuestos 2019 de Catastro Urbano |
| 157 | Soporte en Recaudaci�n de Impuestos de Catastro urbano y mejoras 2019 | was named Soporte en Recaudación de Impuestos de Catastro urbano y mejoras 2019 |
| 159 | Reuni�n de Cierre de la FASE 1 | was named Reunión de Cierre de la FASE 1 |
| 161 | **FASE 2: Implementaci�n de M�dulos de Planificaci�n de Recursos Institucionales - PRI** | was named FASE 2: Implementación de Módulos de Planificación de Recursos Institucionales - PRI |
| 162 | **ETAPA 1: Instalaci�n del SIIM - M�dulos PRI** | was named ETAPA 1: Instalación del SIIM - Módulos PRI |
| 163 | **Entrega e Instalaci�n del Software** | was named Entrega e Instalación del Software |
| 165 | **Instalar M�dulos PRI** | was named Instalar Módulos PRI |
| 166 | 2.1 Administraci�n T�cnica | was named 2.1 Administración Técnica |
| 169 | 6.1 Administraci�n de Bienes | was named 6.1 Administración de Bienes |
| 173 | 14 Direcci�n de Planificaci�n Institucional (Incluye control de proyectos de Obras P�blicas | was named 14 Dirección de Planificación Institucional (Incluye control de proyectos de Obras Públicas |
| 175 | 15.8 BI Planificaci�n Institucional | was named 15.8 BI Planificación Institucional |
| 179 | **ETAPA 2: Levantamiento de Caracter�sticas Institucionales - M�dulos PRI** | was named ETAPA 2: Levantamiento de Características Institucionales - Módulos PRI |
| 180 | **Actividades de Gesti�n del Proyecto** | was named Actividades de Gestión del Proyecto |
| 181 | Revisi�n del Plan del Proyecto | was named Revisión del Plan del Proyecto |
| 185 | Crear Documento de Caracter�sticas del Entidad | was named Crear Documento de Características del Entidad |
| 186 | **Revisar el Documento de Caracter�sticas del Entidad** | was named Revisar el Documento de Características del Entidad |
| 187 | Revisar el Documento de Caracter�sticas del Entidad | was named Revisar el Documento de Características del Entidad |
| 191 | **ETAPA 3: Migraci�n de Datos, Configuraci�n y Pruebas de Operaci�n de M�dulos - M�dulos PRI** | was named ETAPA 3: Migración de Datos, Configuración y Pruebas de Operación de Módulos - Módulos PRI |
| 192 | **Gesti�n General del Proyecto** | was named Gestión General del Proyecto |
| 195 | Definir y Preparar la Migraci�n de Datos | was named Definir y Preparar la Migración de Datos |
| 196 | **Configuraci�n del Sistema en Producci�n** | was named Configuración del Sistema en Producción |
| 197 | Instalar el SIIM en Producci�n | was named Instalar el SIIM en Producción |
| 198 | Configurar Inicializaci�n del Sistema | was named Configurar Inicialización del Sistema |
| 199 | Realizar la Migraci�n de Datos | was named Realizar la Migración de Datos |
| 201 | Configuraci�n del Sistema en base al Documento de Caracter�sticas del Entidad | was named Configuración del Sistema en base al Documento de Características del Entidad |
| 204 | **Gesti�n del Cambio Organizacional** | was named Gestión del Cambio Organizacional |
| 205 | Conducir la comunicaci�n de la Gesti�n de Cambios (si es aplicable) | was named Conducir la comunicación de la Gestión de Cambios (si es aplicable) |
| 206 | **Pruebas de validaci�n del Sistema** | was named Pruebas de validación del Sistema |
| 208 | **Conducir Talleres de Validaci�n** | was named Conducir Talleres de Validación |
| 209 | 2.1 Administraci�n T�cnica | was named 2.1 Administración Técnica |
| 212 | 6.1 Administraci�n de Bienes | was named 6.1 Administración de Bienes |
| 216 | 14 Direcci�n de Planificaci�n Institucional (Incluye control de proyectos de Obras P�blicas) | was named 14 Dirección de Planificación Institucional (Incluye control de proyectos de Obras Públicas) |
| 218 | 15.8 BI Planificaci�n Institucional | was named 15.8 BI Planificación Institucional |
| 223 | 2.1 Administraci�n T�cnica | was named 2.1 Administración Técnica |
| 226 | 6.1 Administraci�n de Bienes | was named 6.1 Administración de Bienes |
| 230 | 14 Direcci�n de Planificaci�n Institucional (Incluye control de proyectos de Obras P�blicas) | was named 14 Dirección de Planificación Institucional (Incluye control de proyectos de Obras Públicas) |
| 232 | 15.8 BI Planificaci�n Institucional | was named 15.8 BI Planificación Institucional |
| 234 | **Planificar Salida a Producci�n y Soporte** | was named Planificar Salida a Producción y Soporte |
| 235 | Definir Plan de Salida a Producci�n | was named Definir Plan de Salida a Producción |
| 237 | Planificar Administraci�n del Sistema | was named Planificar Administración del Sistema |
| 240 | **ETAPA 4: Preparaci�n Final previo Despliegue en Producci�n - M�dulos PRI** | was named ETAPA 4: Preparación Final previo Despliegue en Producción - Módulos PRI |
| 241 | **Gesti�n General del Proyecto** | was named Gestión General del Proyecto |
| 243 | Finalizar plan de Salida a Producci�n | was named Finalizar plan de Salida a Producción |
| 245 | **Entrenamiento de Usuarios Funcionales y Certificaci�n de Procesos** | was named Entrenamiento de Usuarios Funcionales y Certificación de Procesos |
| 246 | 2.1 Administraci�n T�cnica | was named 2.1 Administración Técnica |
| 249 | 6.1 Administraci�n de Bienes | was named 6.1 Administración de Bienes |
| 253 | 14 Direcci�n de Planificaci�n Institucional (Incluye control de proyectos de Obras P�blicas) | was named 14 Dirección de Planificación Institucional (Incluye control de proyectos de Obras Públicas) |
| 255 | 15.8 BI Planificaci�n Institucional | was named 15.8 BI Planificación Institucional |
| 256 | Entrenamiento de Usuario T�cnicos | was named Entrenamiento de Usuario Técnicos |
| 257 | **Preparaci�n del Sistema** | was named Preparación del Sistema |
| 258 | Completar la Administraci�n del Sistema | was named Completar la Administración del Sistema |
| 259 | Comprobaci�n de la Puesta a Producci�n | was named Comprobación de la Puesta a Producción |
| 260 | **Transici�n** | was named Transición |

| ID | Task | Other |
| --- | --- | --- |
| 262 | Realizar la Salida a Producci�n - Carga Inicial y Configuraci�n Inicial | was named Realizar la Salida a Producción - Carga Inicial y Configuración Inicial |
| 265 | **ETAPA 5: Despliegue en Producci�n y Soporte T�cnico - M�dulos PRI** | was named ETAPA 5: Despliegue en Producción y Soporte Técnico - Módulos PRI |
| 266 | **Soporte en Producci�n** | was named Soporte en Producción |
| 267 | Soporte durante la Salida a Producci�n | was named Soporte durante la Salida a Producción |
| 268 | Resolver incidentes cr�ticos | was named Resolver incidentes críticos |
| 269 | Entregar el soporte y Administraci�n al cliente | was named Entregar el soporte y Administración al cliente |
| 271 | Monitoreo del Sistema y Acompa�amiento ETAPA2 | was named Monitoreo del Sistema y Acompañamiento ETAPA2 |
| 274 | Reuni�n de Cierre de la FASE 2 | was named Reunión de Cierre de la FASE 2 |
| 276 | **FASE 3: Implementaci�n de M�dulos de Planificaci�n de Recursos Institucionales - PRI** | was named FASE 3: Implementación de Módulos de Planificación de Recursos Institucionales - PRI |
| 277 | **ETAPA 1: Instalaci�n del SIIM - M�dulos PRI** | was named ETAPA 1: Instalación del SIIM - Módulos PRI |
| 278 | **Entrega e Instalaci�n del Software** | was named Entrega e Instalación del Software |
| 280 | Instalar M�dulos PRI | was named Instalar Módulos PRI |
| 284 | **ETAPA 2: Levantamiento de Caracter�sticas Institucionales - M�dulos PRI** | was named ETAPA 2: Levantamiento de Características Institucionales - Módulos PRI |
| 285 | **Actividades de Gesti�n del Proyecto** | was named Actividades de Gestión del Proyecto |
| 286 | Revisi�n del Plan del Proyecto | was named Revisión del Plan del Proyecto |
| 290 | Crear Documento de Caracter�sticas del Entidad | was named Crear Documento de Características del Entidad |
| 291 | **Revisar el Documento de Caracter�sticas del Entidad** | was named Revisar el Documento de Características del Entidad |
| 292 | Revisar el Documento de Caracter�sticas del Entidad | was named Revisar el Documento de Características del Entidad |
| 296 | **ETAPA 3: Migraci�n de Datos, Configuraci�n y Pruebas de Operaci�n de M�dulos - M�dulos PRI** | was named ETAPA 3: Migración de Datos, Configuración y Pruebas de Operación de Módulos - Módulos PRI |
| 297 | **Gesti�n General del Proyecto** | was named Gestión General del Proyecto |
| 300 | Definir y Preparar la Migraci�n de Datos | was named Definir y Preparar la Migración de Datos |
| 301 | **Configuraci�n del Sistema en Producci�n** | was named Configuración del Sistema en Producción |
| 302 | Instalar el SIIM en Producci�n | was named Instalar el SIIM en Producción |
| 303 | Configurar Inicializaci�n del Sistema | was named Configurar Inicialización del Sistema |
| 304 | Realizar la Migraci�n de Datos | was named Realizar la Migración de Datos |
| 306 | Configuraci�n del Sistema en base al Documento de Caracter�sticas del Entidad | was named Configuración del Sistema en base al Documento de Características del Entidad |
| 309 | **Gesti�n del Cambio Organizacional** | was named Gestión del Cambio Organizacional |
| 310 | Conducir la comunicaci�n de la Gesti�n de Cambios (si es aplicable) | was named Conducir la comunicación de la Gestión de Cambios (si es aplicable) |
| 311 | **Pruebas de validaci�n/aceptaci�n del Sistema** | was named Pruebas de validación/aceptación del Sistema |
| 313 | **Conducir Talleres de Validaci�n** | was named Conducir Talleres de Validación |
| 314 | 3.1 Compras P�blicas | was named 3.1 Compras Públicas |
| 316 | 8.5 Gesti�n Jur�dica - Financiera | was named 8.5 Gestión Jurídica - Financiera |
| 318 | 15.3 BI Administraci�n del Talento Humano | was named 15.3 BI Administración del Talento Humano |
| 319 | 15.4 BI Compras P�blicas | was named 15.4 BI Compras Públicas |
| 325 | 3.1 Compras P�blicas | was named 3.1 Compras Públicas |
| 327 | 8.5 Gesti�n Jur�dica - Financiera | was named 8.5 Gestión Jurídica - Financiera |
| 329 | 15.3 BI Administraci�n del Talento Humano | was named 15.3 BI Administración del Talento Humano |
| 330 | 15.4 BI Compras P�blicas | was named 15.4 BI Compras Públicas |
| 333 | **Planificar Salida a Producci�n y Soporte** | was named Planificar Salida a Producción y Soporte |
| 334 | Definir Plan de Salida a Producci�n | was named Definir Plan de Salida a Producción |
| 336 | Planificar Administraci�n del Sistema | was named Planificar Administración del Sistema |
| 339 | **ETAPA 4: Preparaci�n Final previo Despliegue en Producci�n - M�dulos PRI** | was named ETAPA 4: Preparación Final previo Despliegue en Producción - Módulos PRI |
| 340 | **Gesti�n General del Proyecto** | was named Gestión General del Proyecto |
| 342 | Finalizar plan de Salida a Producci�n | was named Finalizar plan de Salida a Producción |
| 344 | **Entrenamiento de Usuarios Funcionales y Certificaci�n de Procesos** | was named Entrenamiento de Usuarios Funcionales y Certificación de Procesos |
| 345 | 3.1 Compras P�blicas | was named 3.1 Compras Públicas |
| 347 | 8.5 Gesti�n Jur�dica - Financiera | was named 8.5 Gestión Jurídica - Financiera |
| 349 | 15.3 BI Administraci�n del Talento Humano | was named 15.3 BI Administración del Talento Humano |
| 350 | 15.4 BI Compras P�blicas | was named 15.4 BI Compras Públicas |
| 352 | Entrenamiento de Usuario T�cnicos | was named Entrenamiento de Usuario Técnicos |
| 353 | **Preparaci�n del Sistema** | was named Preparación del Sistema |
| 354 | Completar la Administraci�n del Sistema | was named Completar la Administración del Sistema |
| 355 | Comprobaci�n de la Puesta a Producci�n | was named Comprobación de la Puesta a Producción |
| 356 | **Transici�n** | was named Transición |
| 358 | Realizar la Salida a Producci�n - Carga Inicial y Configuraci�n Inicial | was named Realizar la Salida a Producción - Carga Inicial y Configuración Inicial |
| 361 | **ETAPA 5: Despliegue en Producci�n y Soporte T�cnico - M�dulos PRI** | was named ETAPA 5: Despliegue en Producción y Soporte Técnico - Módulos PRI |
| 362 | **Soporte en Producci�n** | was named Soporte en Producción |
| 363 | Soporte durante la Salida a Producci�n | was named Soporte durante la Salida a Producción |
| 364 | Resolver incidentes cr�ticos | was named Resolver incidentes críticos |
| 365 | Entregar el soporte y Administraci�n al cliente | was named Entregar el soporte y Administración al cliente |
| 367 | Monitoreo del Sistema y Acompa�amiento | was named Monitoreo del Sistema y Acompañamiento |
| 370 | Reuni�n de Cierre de la FASE 3 y Proyecto | was named Reunión de Cierre de la FASE 3 y Proyecto |
