# Proyecto1.xml

How a schedule from MS Project XML changed from version to version. A marks actual dates.

## Version 1 (saved 2019-08-26, file HOLA.xml)

Note of the change: upate

| ID | WBS | Task | Duration | Start | Finish | Predecessors |
| --- | --- | --- | --- | --- | --- | --- |
| 1 |  | 20190122- Plan del Proyecto de Implementacion del SIIM Daule | 294.29d? | 2018-07-16 A | 2019-08-26 |  |
| 2 | 2 | **Programa de Implementación SIIM** | 294.29d |  |  |  |
| 3 | 2.1 | **FASE 1: Implementación de Módulos de Servicio al Cliente (SC) y Atención al Ciudadano (AC)** | 159.57d |  |  |  |
| 4 | 2.1.1 | **ETAPA 1: Preparación del Proyecto e Instalación del SIIM - Módulos SC y AC** | 9d |  |  |  |
| 5 | 2.1.1.1 | **Actividades de Gestión del Proyecto** | 2.29d |  |  |  |
| 6 |  | Revisión de Información de Contrato y Anexos | 6h |  |  |  |
| 7 |  | Definir la Organización del Proyecto | 4h |  |  | 6FS+6h |
| 8 |  | Kick-off Interno del Proyecto | 6h |  |  | 7FS+4h |
| 9 | 2.1.1.2 | **Preparación del kick-off del Proyecto** | 1.14d |  |  |  |
| 10 |  | Comunicación con el Cliente | 4h |  |  | 8FS+6h |
| 11 |  | Crear la presentación del kick-off | 4h |  |  | 10FS+4h |
| 12 | 2.1.1.3 | **Reunión de Kick-off** | 0.29d |  |  |  |
| 13 |  | Realizar la reunión de kick-off | 2h |  |  | 11FS+4h |
| 14 | 2.1.1.4 | **Entrega e Instalación del Software** | 4.29d |  |  |  |
| 15 | 2.1.1.4.1 | **Instalar SIIM en Servidor** | 4d |  |  | 12FS+0.29d |
| 16 |  | 1 Dirección de Desarrollo Territorial (No incluye Catastro) | 2h |  |  |  |
| 17 |  | 4 Dirección de Justicia y Vigilancia | 2h |  |  | 16FS+2h |
| 18 |  | 5 Dirección de Desarrollo Humano y Social | 2h |  |  | 17FS+2h |
| 19 |  | 8.3 Rentas | 2h |  |  | 18FS+2h |
| 20 |  | 8.4 Tesorería | 2h |  |  | 19FS+2h |
| 21 |  | 9.1 Mercados | 1h |  |  | 20FS+2h |
| 22 |  | 9.2 Cementerio | 1h |  |  | 21FS+1h |
| 23 |  | 9.3 Camal | 1h |  |  | 22FS+1h |
| 24 |  | 10 Registro de la Propiedad y Mercantil | 2h |  |  | 23FS+1h |
| 25 |  | 11 Administración de bomberos | 1h |  |  | 24FS+2h |
| 26 |  | 12 CRM para ciudadanos. Ventanilla Única | 2h |  |  | 25FS+1h |
| 27 |  | 15.1 BI Desarrollo Territorial | 2h |  |  | 26FS+2h |
| 28 |  | 15.5 BI Obras Públicas Municipales | 2h |  |  | 27FS+2h |
| 29 |  | 15.7 BI Registro de la Propiedad y Mercantil | 2h |  |  | 28FS+2h |
| 30 |  | 16.1 Consultas Portal Web | 2h |  |  | 29FS+2h |
| 31 |  | 16.2 Aplicación para móviles (APP) | 2h |  |  | 30FS+2h |
| 32 |  | Entrega de Software | 2h |  |  | 15FS+4d |
| 33 |  | Revisar la ETAPA del Proyecto | 1d |  |  | 14FS+4.29d |
| 34 |  | HITO: FINALIZACION ETAPA 1 | 0d |  |  | 33FS+1d |
| 35 | 2.1.2 | **ETAPA 2: Levantamiento de Características Institucionales - Módulos SC y AC** | 14.71d |  |  | 4FS+9d |
| 36 | 2.1.2.1 | **Actividades de Gestión del Proyecto** | 1.14d |  |  |  |
| 37 |  | Revisión del Plan del Proyecto | 4h |  |  | 33FS+1d |
| 38 |  | Programar talleres de requerimientos de Entidad | 4h |  |  | 37FS+4h |
| 39 | 2.1.2.2 | **Sesiones de Requerimientos del Entidad** | 12d |  |  |  |
| 40 |  | Conducir Sesiones de Requerimientos | 10d |  |  | 38FS+4h |
| 41 |  | Crear Documento de Características del Entidad | 2d |  |  | 40FS+10d |
| 42 | 2.1.2.3 | **Revisar el Documento de Características del Entidad** | 0.57d |  |  |  |
| 43 |  | Revisar el Documento de Características del Entidad | 2h |  |  | 41FS+2d |
| 44 |  | Revisar el Plan del Proyecto | 2h |  |  | 43FS+2h |
| 45 |  | Revisar la ETAPA del Proyecto | 1d |  |  | 42FS+0.57d |
| 46 |  | HITO: FINALIZACION ETAPA 2 | 0d |  |  | 45FS+1d |
| 47 | 2.1.3 | **ETAPA 3: Migración de Datos, Configuración y Pruebas de Operación - Módulos SC y AC** | 56.57d |  |  | 35FS+14.71d |
| 48 | 2.1.3.1 | **Gestión General del Proyecto** | 0.57d |  |  |  |
| 49 |  | Planificar cambio Organizacional | 2h |  |  | 45FS+1d |
| 50 |  | Planificar Entrenamiento a Usuarios Finales | 2h |  |  | 49FS+2h |
| 51 |  | Definir y Preparar la Migración de Datos | 2h |  |  | 49FS+2h |
| 52 | 2.1.3.2 | **Configuración del Sistema en Producción** | 56d |  |  |  |
| 53 |  | Instalar el SIIM en Producción | 1d |  |  | 51FS+2h |
| 54 |  | Configurar Inicialización del Sistema | 1d |  |  | 53FS+1d |
| 55 |  | Realizar la Migración de Datos | 54d |  |  | 54FS+1d |
| 56 |  | Desarrollar Adaptaciones al Software | 10d |  |  | 54FS+1d |
| 57 |  | Configuración del Sistema en base al Documento de Características del Entidad | 3d |  |  | 56FS+10d |
| 58 |  | Configurar Interfaces | 1d |  |  | 57FS+3d |
| 59 |  | Configurar Usuarios y Autorizaciones | 1d |  |  | 58FS+1d |
| 60 | 2.1.3.3 | **Gestión del Cambio Organizacional** | 1d |  |  |  |
| 61 |  | Conducir la comunicación de la Gestión de Cambios (si es aplicable) | 1d |  |  | 59FS+1d |
| 62 | 2.1.3.4 | **Pruebas de validación/aceptación del Sistema** | 3.43d |  |  |  |
| 63 |  | Mantener la Lista Maestra de Procesos de Entidad | 2h |  |  | 61FS+1d |
| 64 | 2.1.3.4.2 | **Conducir Talleres de Validación** | 3.14d |  |  | 63FS+2h |
| 65 |  | 1 Dirección de Desarrollo Territorial (No incluye Catastro) | 2h |  |  |  |
| 66 |  | 4 Dirección de Justicia y Vigilancia | 2h |  |  | 65FS+2h |
| 67 |  | 5 Dirección de Desarrollo Humano y Social | 1h |  |  | 66FS+2h |
| 68 |  | 8.3 Rentas | 2h |  |  | 67FS+1h |
| 69 |  | 8.4 Tesorería | 2h |  |  | 68FS+2h |
| 70 |  | 9.1 Mercados | 1h |  |  | 69FS+2h |

| ID | WBS | Task | Duration | Predecessors |
| --- | --- | --- | --- | --- |
| 71 |  | 9.2 Cementerio | 1h | 70FS+1h |
| 72 |  | 9.3 Camal | 1h | 71FS+1h |
| 73 |  | 10 Registro de la Propiedad y Mercantil | 2h | 72FS+1h |
| 74 |  | 11 Administración de bomberos | 1h | 73FS+2h |
| 75 |  | 12 CRM para ciudadanos. Ventanilla Única | 2h | 74FS+1h |
| 76 |  | 15.1 BI Desarrollo Territorial | 1h | 75FS+2h |
| 77 |  | 15.5 BI Obras Públicas Municipales | 1h | 76FS+1h |
| 78 |  | 15.7 BI Registro de la Propiedad y Mercantil | 1h | 77FS+1h |
| 79 |  | 16.1 Consultas Portal Web | 1h | 78FS+1h |
| 80 |  | 16.2 Aplicación para móviles (APP) | 1h | 79FS+1h |
| 81 | 2.1.3.5 | **Pruebas de Aceptacion Sistema** | 5.43d |  |
| 82 |  | Definir casos de prueba y alcance | 2h | 80FS+1h, 31FS+2h |
| 83 |  | Preparar ambiente de pruebas | 1d | 82FS+2h |
| 84 | 2.1.3.5.3 | **Ejecutar el plan de pruebas de Aceptacion del Sistema** | 3.14d | 83FS+1d |
| 85 |  | 1 Dirección de Desarrollo Territorial (No incluye Catastro) | 2h |  |
| 86 |  | 4 Dirección de Justicia y Vigilancia | 2h | 85FS+2h |
| 87 |  | 5 Dirección de Desarrollo Humano y Social | 1h | 86FS+2h |
| 88 |  | 8.3 Rentas | 2h | 87FS+1h |
| 89 |  | 8.4 Tesorería | 2h | 88FS+2h |
| 90 |  | 9.1 Mercados | 1h | 89FS+2h |
| 91 |  | 9.2 Cementerio | 1h | 90FS+1h |
| 92 |  | 9.3 Camal | 1h | 91FS+1h |
| 93 |  | 10 Registro de la Propiedad y Mercantil | 2h | 92FS+1h |
| 94 |  | 11 Administración de bomberos | 1h | 93FS+2h |
| 95 |  | 12 CRM para ciudadanos. Ventanilla Única | 2h | 94FS+1h |
| 96 |  | 15.1 BI Desarrollo Territorial | 1h | 95FS+2h |
| 97 |  | 15.5 BI Obras Públicas Municipales | 1h | 96FS+1h |
| 98 |  | 15.7 BI Registro de la Propiedad y Mercantil | 1h | 97FS+1h |
| 99 |  | 16.1 Consultas Portal Web | 1h | 98FS+1h |
| 100 |  | 16.2 Aplicación para móviles (APP) | 1h | 99FS+1h |
| 101 |  | Revisar los resultados de las pruebas y necesidades de cambios | 1d | 100FS+1h, 80FS+1h, 31FS+2h |
| 102 | 2.1.3.6 | **Planificar Salida a Producción y Soporte** | 0.29d |  |
| 103 |  | Definir Plan de Salida a Producción | 2h | 101FS+1d |
| 104 |  | Planificar Estrategia de Soporte | 2h | 101FS+1d |
| 105 |  | Planificar Administración del Sistema | 2h | 101FS+1d |
| 106 |  | Revisar la ETAPA del Proyecto | 1d | 102FS+0.29d |
| 107 |  | HITO: FINALIZACION ETAPA 3 | 0d | 106FS+1d |
| 108 | 2.1.4 | **ETAPA 4: Preparación Final previo Despliegue en Producción - Módulos SC y AC** | 19.86d |  |
| 109 | 2.1.4.1 | **Gestión General del Proyecto** | 0.57d |  |
| 110 |  | Confirmar el Plan de Entrenamiento | 2h | 106FS+1d |
| 111 |  | Finalizar plan de Salida a Producción | 2h | 110FS+2h |
| 112 | 2.1.4.2 | **Entrenamiento en Modulos de Areas Funcionales Fase 1** | 16d | 109FS+0.57d |
| 113 | 2.1.4.2.1 | **Entrenamiento de Usuarios Funcionales y Certificación de Procesos** | 12d | 111FS+2h |
| 114 |  | 1 Dirección de Desarrollo Territorial (No incluye Catastro) | 1d |  |
| 115 |  | 4 Dirección de Justicia y Vigilancia | 1d | 114FS+1d |
| 116 |  | 5 Dirección de Desarrollo Humano y Social | 1d | 115FS+1d |
| 117 |  | 8.3 Rentas | 1d | 116FS+1d |
| 118 |  | 8.4 Tesorería | 1d | 117FS+1d |
| 119 |  | 9.1 Mercados | 0.5d | 118FS+1d |
| 120 |  | 9.2 Cementerio | 0.5d | 119FS+0.5d |
| 121 |  | 9.3 Camal | 0.5d | 120FS+0.5d |
| 122 |  | 10 Registro de la Propiedad y Mercantil | 1d | 121FS+0.5d |
| 123 |  | 11 Administración de bomberos | 0.5d | 122FS+1d |
| 124 |  | 12 CRM para ciudadanos. Ventanilla Única | 1d | 123FS+0.5d |
| 125 |  | 15.1 BI Desarrollo Territorial | 0.5d | 124FS+1d |
| 126 |  | 15.5 BI Obras Públicas Municipales | 0.5d | 125FS+0.5d |
| 127 |  | 15.7 BI Registro de la Propiedad y Mercantil | 0.5d | 126FS+0.5d |
| 128 |  | 16.1 Consultas Portal Web | 1d | 127FS+0.5d |
| 129 |  | 16.2 Aplicación para móviles (APP) | 0.5d | 128FS+1d |
| 130 |  | Entrenamiento de Usuario Técnicos | 4d | 129FS+0.5d, 100FS+1h, 80FS+1h, 31FS+2h |
| 131 | 2.1.4.3 | **Preparación del Sistema** | 0.86d | 112FS+16d |
| 132 |  | Completar la Administración del Sistema | 3h |  |
| 133 |  | Comprobación de la Puesta a Producción | 3h | 132FS+3h |
| 134 | 2.1.4.4 | **Transición** | 2.14d | 131FS+0.86d |
| 135 |  | Finalizar Procesamiento de Sistemas Legados | 1h |  |
| 136 |  | Realizar la Salida a Producción - Carga Inicial y Configuración Inicial | 2d | 135FS+1h |
| 137 |  | Revisar la ETAPA del Proyecto | 2h | 134FS+2.14d |
| 138 |  | HITO: FINALIZACION ETAPA 4 | 0d | 137FS+2h |
| 139 | 2.1.5 | **ETAPA 5: Despliegue en Producción y Soporte Técnico - Módulos SC y AC** | 30d | 108FS+19.86d |
| 140 | 2.1.5.1 | **Soporte en Producción** | 30d |  |

| ID | WBS | Task | Duration | Predecessors |
| --- | --- | --- | --- | --- |
| 141 |  | Soporte durante la Salida a Producción | 30d | 137FS+2h |
| 142 |  | Resolver incidentes críticos | 20d | 137FS+2h |
| 143 |  | Entregar el soporte y Administración al cliente | 1d |  |
| 144 | 2.1.5.2 | **Mejora Continua** | 10d |  |
| 145 |  | Monitoreo del Sistema y Acompañamiento ETAPA1 | 10d | 137FS+2h |
| 146 |  | Ajustes y Configuraciones finales al Software acorde a necesidades Entidad | 10d | 137FS+2h |
| 147 | 2.1.5.3 | **Cierre de la ETAPA 5** | 0.29d |  |
| 148 |  | Reunión de Cierre de la ETAPA 5 | 2h | 144FS+10d |
| 149 |  | HITO: FIN DE LA ETAPA 5 | 0d | 148FS+2h |
| 150 | 2.1.6 | **ETAPA 6: Estabilización, Apoyo Emisión 2019 y Desarrollo de funcionalidades no establecidas en el Alcance Contractual** | 57.29d |  |
| 151 |  | Depuración de Errores de Calidad de Información fuente migrada (Base Oracle) | 30d | 139FS+30d |
| 152 |  | Soporte y Mantenimiento de Módulos de la Fase 1 | 30d | 139FS+30d |
| 153 |  | Adaptaciones a Software para incluir Nuevas funcionalidades no contempladas en alcance proyecto | 30d | 139FS+30d |
| 154 |  | Implementación de Licencia temporal de Modulo de Catastro Urbano SIIM | 20d |  |
| 155 |  | Migración de información de Emisión de Impuestos de Catastro Urbano 2019 | 20d |  |
| 156 |  | Creación de interfaces mediante ETLs para integración entre Sistema Oracle y SIIM para la recaudación de Impuestos 2019 de Catastro Urbano | 20d |  |
| 157 |  | Soporte en Recaudación de Impuestos de Catastro urbano y mejoras 2019 | 25d | 156FS+20d |
| 158 | 2.1.6.8 | **Cierre de la FASE 1** | 0.29d |  |
| 159 |  | Reunión de Cierre de la FASE 1 | 2h | 157FS+25d |
| 160 |  | HITO: FIN DE LA FASE 1 | 0d | 159FS+2h |
| 161 | 2.2 | **FASE 2: Implementación de Módulos de Planificación de Recursos Institucionales - PRI** | 88.29d |  |
| 162 | 2.2.1 | **ETAPA 1: Instalación del SIIM - Módulos PRI** | 4.14d |  |
| 163 | 2.2.1.1 | **Entrega e Instalación del Software** | 3.14d |  |
| 164 | 2.2.1.1.1 | **Instalar SIIM en Servidor** | 2.86d |  |
| 165 | 2.2.1.1.1.1 | **Instalar Módulos PRI** | 2.86d | 150FS+57.29d |
| 166 |  | 2.1 Administración Técnica | 2h |  |
| 167 |  | 2.2 Salud Ocupacional y Riesgos | 2h | 166FS+2h |
| 168 |  | 3.2 Adquisiciones | 2h | 167FS+2h |
| 169 |  | 6.1 Administración de Bienes | 2h | 168FS+2h |
| 170 |  | 8.1 Contabilidad | 2h | 169FS+2h |
| 171 |  | 8.2 Presupuestos | 2h | 170FS+2h |
| 172 |  | 13 CRM para Urbanizaciones | 2h | 171FS+2h |
| 173 |  | 14 Dirección de Planificación Institucional (Incluye control de proyectos de Obras Públicas | 2h | 172FS+2h |
| 174 |  | 15.6 Servicios Corporativos | 2h | 173FS+2h |
| 175 |  | 15.8 BI Planificación Institucional | 2h | 174FS+2h |
| 176 |  | Entrega de Software | 2h | 164FS+2.86d |
| 177 |  | Revisar la ETAPA del Proyecto | 1d | 163FS+3.14d |
| 178 |  | HITO: FINALIZACION ETAPA 1 | 0d | 177FS+1d |
| 179 | 2.2.2 | **ETAPA 2: Levantamiento de Características Institucionales - Módulos PRI** | 8.57d | 162FS+4.14d |
| 180 | 2.2.2.1 | **Actividades de Gestión del Proyecto** | 0.57d |  |
| 181 |  | Revisión del Plan del Proyecto | 2h |  |
| 182 |  | Programar talleres de requerimientos de Entidad | 2h | 181FS+2h |
| 183 | 2.2.2.2 | **Sesiones de Requerimientos del Entidad** | 6d | 180FS+0.57d |
| 184 |  | Conducir Sesiones de Requerimientos | 5d |  |
| 185 |  | Crear Documento de Características del Entidad | 1d | 184FS+5d |
| 186 | 2.2.2.3 | **Revisar el Documento de Características del Entidad** | 1d | 183FS+6d |
| 187 |  | Revisar el Documento de Características del Entidad | 4h |  |
| 188 |  | Revisar el Plan del Proyecto | 3h | 187FS+4h |
| 189 |  | Revisar la ETAPA del Proyecto | 1d | 186FS+1d |
| 190 |  | HITO: FINALIZACION ETAPA 2 | 0d | 189FS+1d |
| 191 | 2.2.3 | **ETAPA 3: Migración de Datos, Configuración y Pruebas de Operación de Módulos - Módulos PRI** | 33.71d | 179FS+8.57d |
| 192 | 2.2.3.1 | **Gestión General del Proyecto** | 1.57d |  |
| 193 |  | Planificar cambio Organizacional | 3h |  |
| 194 |  | Planificar Entrenamiento a Usuarios Finales | 4h | 193FS+3h |
| 195 |  | Definir y Preparar la Migración de Datos | 4h | 194FS+4h |
| 196 | 2.2.3.2 | **Configuración del Sistema en Producción** | 19.57d | 192FS+1.57d |
| 197 |  | Instalar el SIIM en Producción | 4h |  |
| 198 |  | Configurar Inicialización del Sistema | 1d | 197FS+4h |
| 199 |  | Realizar la Migración de Datos | 13d | 198FS+1d |
| 200 |  | Desarrollar Adaptaciones al Software | 2d | 199FS+13d |
| 201 |  | Configuración del Sistema en base al Documento de Características del Entidad | 1d | 200FS+2d |
| 202 |  | Configurar Interfaces | 1d | 201FS+1d |
| 203 |  | Configurar Usuarios y Autorizaciones | 1d | 202FS+1d |
| 204 | 2.2.3.3 | **Gestión del Cambio Organizacional** | 0.29d | 196FS+19.57d |
| 205 |  | Conducir la comunicación de la Gestión de Cambios (si es aplicable) | 2h |  |
| 206 | 2.2.3.4 | **Pruebas de validación del Sistema** | 4.57d | 204FS+0.29d |
| 207 |  | Mantener la Lista Maestra de Procesos de Entidad | 4h |  |
| 208 | 2.2.3.4.2 | **Conducir Talleres de Validación** | 4d | 207FS+4h |
| 209 |  | 2.1 Administración Técnica | 4h |  |
| 210 |  | 2.2 Salud Ocupacional y Riesgos | 2h | 209FS+4h |

| ID | WBS | Task | Duration | Predecessors |
| --- | --- | --- | --- | --- |
| 211 |  | 3.2 Adquisiciones | 4h | 210FS+2h |
| 212 |  | 6.1 Administración de Bienes | 2h | 211FS+4h |
| 213 |  | 8.1 Contabilidad | 4h | 212FS+2h |
| 214 |  | 8.2 Presupuestos | 4h | 213FS+4h |
| 215 |  | 13 CRM para Urbanizaciones | 2h | 214FS+4h |
| 216 |  | 14 Dirección de Planificación Institucional (Incluye control de proyectos de Obras Públicas) | 2h | 215FS+2h |
| 217 |  | 15.6 BI Servicios Corporativos | 2h | 216FS+2h |
| 218 |  | 15.8 BI Planificación Institucional | 2h | 217FS+2h |
| 219 | 2.2.3.5 | **Pruebas de aceptacion del Sistema** | 5.43d | 206FS+4.57d |
| 220 |  | Definir casos de prueba y alcance | 3h |  |
| 221 |  | Preparar ambiente de pruebas | 1d | 220FS+3h |
| 222 | 2.2.3.5.3 | **Ejecutar el plan de pruebas** | 4d | 221FS+1d |
| 223 |  | 2.1 Administración Técnica | 4h |  |
| 224 |  | 2.2 Salud Ocupacional y Riesgos | 2h | 223FS+4h |
| 225 |  | 3.2 Adquisiciones | 4h | 224FS+2h |
| 226 |  | 6.1 Administración de Bienes | 2h | 225FS+4h |
| 227 |  | 8.1 Contabilidad | 4h | 226FS+2h |
| 228 |  | 8.2 Presupuestos | 4h | 227FS+4h |
| 229 |  | 13 CRM para Urbanizaciones | 2h | 228FS+4h |
| 230 |  | 14 Dirección de Planificación Institucional (Incluye control de proyectos de Obras Públicas) | 2h | 229FS+2h |
| 231 |  | 15.6 BI Servicios Corporativos | 2h | 230FS+2h |
| 232 |  | 15.8 BI Planificación Institucional | 2h | 231FS+2h |
| 233 |  | Revisar los resultados de las pruebas y necesidades de cambios | 1d |  |
| 234 | 2.2.3.6 | **Planificar Salida a Producción y Soporte** | 1.29d | 219FS+5.43d |
| 235 |  | Definir Plan de Salida a Producción | 3h |  |
| 236 |  | Planificar Estrategia de Soporte | 3h | 235FS+3h |
| 237 |  | Planificar Administración del Sistema | 3h | 236FS+3h |
| 238 |  | Revisar la ETAPA del Proyecto | 1d | 234FS+1.29d |
| 239 |  | HITO: FINALIZACION ETAPA 3 | 0d | 238FS+1d |
| 240 | 2.2.4 | **ETAPA 4: Preparación Final previo Despliegue en Producción - Módulos PRI** | 11.43d | 191FS+33.71d |
| 241 | 2.2.4.1 | **Gestión General del Proyecto** | 1.14d |  |
| 242 |  | Confirmar el Plan de Entrenamiento | 4h |  |
| 243 |  | Finalizar plan de Salida a Producción | 4h | 242FS+4h |
| 244 | 2.2.4.2 | **Entrenamiento** | 6d | 241FS+1.14d |
| 245 | 2.2.4.2.1 | **Entrenamiento de Usuarios Funcionales y Certificación de Procesos** | 4d |  |
| 246 |  | 2.1 Administración Técnica | 4h |  |
| 247 |  | 2.2 Salud Ocupacional y Riesgos | 2h | 246FS+4h |
| 248 |  | 3.2 Adquisiciones | 4h | 247FS+2h |
| 249 |  | 6.1 Administración de Bienes | 2h | 248FS+4h |
| 250 |  | 8.1 Contabilidad | 4h | 249FS+2h |
| 251 |  | 8.2 Presupuestos | 4h | 250FS+4h |
| 252 |  | 13 CRM para Urbanizaciones | 2h | 251FS+4h |
| 253 |  | 14 Dirección de Planificación Institucional (Incluye control de proyectos de Obras Públicas) | 2h | 252FS+2h |
| 254 |  | 15.6 BI Servicios Corporativos | 2h | 253FS+2h |
| 255 |  | 15.8 BI Planificación Institucional | 2h | 254FS+2h |
| 256 |  | Entrenamiento de Usuario Técnicos | 6d |  |
| 257 | 2.2.4.3 | **Preparación del Sistema** | 1.43d | 244FS+6d |
| 258 |  | Completar la Administración del Sistema | 5h |  |
| 259 |  | Comprobación de la Puesta a Producción | 5h | 258FS+5h |
| 260 | 2.2.4.4 | **Transición** | 2.57d | 257FS+1.43d |
| 261 |  | Finalizar Procesamiento de Sistemas Legados | 4h |  |
| 262 |  | Realizar la Salida a Producción - Carga Inicial y Configuración Inicial | 2d | 261FS+4h |
| 263 |  | Revisar la ETAPA del Proyecto | 2h | 260FS+2.57d |
| 264 |  | HITO: FINALIZACION ETAPA 4 | 0d | 263FS+2h |
| 265 | 2.2.5 | **ETAPA 5: Despliegue en Producción y Soporte Técnico - Módulos PRI** | 30.43d | 240FS+11.43d |
| 266 | 2.2.5.1 | **Soporte en Producción** | 15d |  |
| 267 |  | Soporte durante la Salida a Producción | 15d |  |
| 268 |  | Resolver incidentes críticos | 15d | 263FS+2h |
| 269 |  | Entregar el soporte y Administración al cliente | 2d | 263FS+2h |
| 270 | 2.2.5.2 | **Mejora Continua** | 15d | 266FS+15d |
| 271 |  | Monitoreo del Sistema y Acompañamiento ETAPA2 | 15d | 263FS+2h |
| 272 |  | Ajustes y Configuraciones finales al Software acorde a necesidades Entidad | 15d | 263FS+2h |
| 273 | 2.2.5.3 | **Cierre de la FASE 2** | 0.43d | 270FS+15d |
| 274 |  | Reunión de Cierre de la FASE 2 | 3h |  |
| 275 |  | HITO: FIN DE LA FASE 2 | 0d | 273FS+0.43d |
| 276 | 2.3 | **FASE 3: Implementación de Módulos de Planificación de Recursos Institucionales - PRI** | 76.86d |  |
| 277 | 2.3.1 | **ETAPA 1: Instalación del SIIM - Módulos PRI** | 4.29d |  |
| 278 | 2.3.1.1 | **Entrega e Instalación del Software** | 3.29d |  |
| 279 | 2.3.1.1.1 | **Instalar SIIM en Servidor** | 3d |  |
| 280 |  | Instalar Módulos PRI | 3d | 264 |

| ID | WBS | Task | Duration | Predecessors |
| --- | --- | --- | --- | --- |
| 281 |  | Entrega de Software | 2h | 279FS+3d |
| 282 |  | Revisar la ETAPA del Proyecto | 1d | 278FS+3.29d |
| 283 |  | HITO: FINALIZACION ETAPA 1 | 0d | 282FS+1d |
| 284 | 2.3.2 | **ETAPA 2: Levantamiento de Características Institucionales - Módulos PRI** | 8.57d | 277FS+4.29d |
| 285 | 2.3.2.1 | **Actividades de Gestión del Proyecto** | 0.57d |  |
| 286 |  | Revisión del Plan del Proyecto | 2h |  |
| 287 |  | Programar talleres de requerimientos de Entidad | 2h | 286FS+2h |
| 288 | 2.3.2.2 | **Sesiones de Requerimientos del Entidad** | 6d | 285FS+0.57d |
| 289 |  | Conducir Sesiones de Requerimientos | 3d |  |
| 290 |  | Crear Documento de Características del Entidad | 3d | 289FS+3d |
| 291 | 2.3.2.3 | **Revisar el Documento de Características del Entidad** | 1d | 288FS+6d |
| 292 |  | Revisar el Documento de Características del Entidad | 4h |  |
| 293 |  | Revisar el Plan del Proyecto | 3h | 292FS+4h |
| 294 |  | Revisar la ETAPA del Proyecto | 1d | 291FS+1d |
| 295 |  | HITO: FINALIZACION ETAPA 2 | 0d | 294FS+1d |
| 296 | 2.3.3 | **ETAPA 3: Migración de Datos, Configuración y Pruebas de Operación de Módulos - Módulos PRI** | 33.43d | 284FS+8.57d |
| 297 | 2.3.3.1 | **Gestión General del Proyecto** | 1.57d |  |
| 298 |  | Planificar cambio Organizacional | 3h |  |
| 299 |  | Planificar Entrenamiento a Usuarios Finales | 4h | 298FS+3h |
| 300 |  | Definir y Preparar la Migración de Datos | 4h | 299FS+4h |
| 301 | 2.3.3.2 | **Configuración del Sistema en Producción** | 20.57d | 297FS+1.57d |
| 302 |  | Instalar el SIIM en Producción | 4h |  |
| 303 |  | Configurar Inicialización del Sistema | 1d | 302FS+4h |
| 304 |  | Realizar la Migración de Datos | 10d | 303FS+1d |
| 305 |  | Desarrollar Adaptaciones al Software | 5d | 304FS+10d |
| 306 |  | Configuración del Sistema en base al Documento de Características del Entidad | 2d | 305FS+5d |
| 307 |  | Configurar Interfaces | 1d | 306FS+2d |
| 308 |  | Configurar Usuarios y Autorizaciones | 1d | 307FS+1d |
| 309 | 2.3.3.3 | **Gestión del Cambio Organizacional** | 2d | 301FS+20.57d |
| 310 |  | Conducir la comunicación de la Gestión de Cambios (si es aplicable) | 2d |  |
| 311 | 2.3.3.4 | **Pruebas de validación/aceptación del Sistema** | 2.57d | 309FS+2d |
| 312 |  | Mantener la Lista Maestra de Procesos de Entidad | 4h |  |
| 313 | 2.3.3.4.2 | **Conducir Talleres de Validación** | 2d | 312FS+4h |
| 314 |  | 3.1 Compras Públicas | 2h |  |
| 315 |  | 6.2 Servicios Generales | 2h | 314FS+2h |
| 316 |  | 8.5 Gestión Jurídica - Financiera | 2h | 315FS+2h |
| 317 |  | 15.2 BI Financiero | 2h | 316FS+2h |
| 318 |  | 15.3 BI Administración del Talento Humano | 2h | 317FS+2h |
| 319 |  | 15.4 BI Compras Públicas | 2h | 318FS+2h |
| 320 |  | 15.9 Tablero de Control | 2h | 319FS+2h |
| 321 | 2.3.3.5 | **Pruebas de aceptacion del Sistema** | 4.43d | 311FS+2.57d |
| 322 |  | Definir casos de prueba y alcance | 3h |  |
| 323 |  | Preparar ambiente de pruebas | 1d | 322FS+3h |
| 324 | 2.3.3.5.3 | **Ejecutar el plan de pruebas** | 2d | 323FS+1d |
| 325 |  | 3.1 Compras Públicas | 2h |  |
| 326 |  | 6.2 Servicios Generales | 2h | 325FS+2h |
| 327 |  | 8.5 Gestión Jurídica - Financiera | 2h | 326FS+2h |
| 328 |  | 15.2 BI Financiero | 2h | 327FS+2h |
| 329 |  | 15.3 BI Administración del Talento Humano | 2h | 328FS+2h |
| 330 |  | 15.4 BI Compras Públicas | 2h | 329FS+2h |
| 331 |  | 15.9 Tablero de Control | 2h | 330FS+2h |
| 332 |  | Revisar los resultados de las pruebas y necesidades de cambios | 1d | 331FS+2h, 320FS+2h |
| 333 | 2.3.3.6 | **Planificar Salida a Producción y Soporte** | 1.29d | 321FS+4.43d |
| 334 |  | Definir Plan de Salida a Producción | 3h |  |
| 335 |  | Planificar Estrategia de Soporte | 3h | 334FS+3h |
| 336 |  | Planificar Administración del Sistema | 3h | 335FS+3h |
| 337 |  | Revisar la ETAPA del Proyecto | 1d | 333FS+1.29d |
| 338 |  | HITO: FINALIZACION ETAPA 3 | 0d | 337FS+1d |
| 339 | 2.3.4 | **ETAPA 4: Preparación Final previo Despliegue en Producción - Módulos PRI** | 12.43d | 296FS+33.43d |
| 340 | 2.3.4.1 | **Gestión General del Proyecto** | 1.14d |  |
| 341 |  | Confirmar el Plan de Entrenamiento | 4h |  |
| 342 |  | Finalizar plan de Salida a Producción | 4h | 341FS+4h |
| 343 | 2.3.4.2 | **Entrenamiento** | 7d | 340FS+1.14d |
| 344 | 2.3.4.2.1 | **Entrenamiento de Usuarios Funcionales y Certificación de Procesos** | 4d |  |
| 345 |  | 3.1 Compras Públicas | 4h |  |
| 346 |  | 6.2 Servicios Generales | 4h | 345FS+4h |
| 347 |  | 8.5 Gestión Jurídica - Financiera | 4h | 346FS+4h |
| 348 |  | 15.2 BI Financiero | 4h | 347FS+4h |
| 349 |  | 15.3 BI Administración del Talento Humano | 4h | 348FS+4h |
| 350 |  | 15.4 BI Compras Públicas | 4h | 349FS+4h |

| ID | WBS | Task | Duration | Predecessors |
| --- | --- | --- | --- | --- |
| 351 |  | 15.9 Tablero de Control | 4h | 350FS+4h |
| 352 |  | Entrenamiento de Usuario Técnicos | 3d | 351FS+4h |
| 353 | 2.3.4.3 | **Preparación del Sistema** | 1.43d | 343FS+7d |
| 354 |  | Completar la Administración del Sistema | 5h |  |
| 355 |  | Comprobación de la Puesta a Producción | 5h | 354FS+5h |
| 356 | 2.3.4.4 | **Transición** | 2.57d | 353FS+1.43d |
| 357 |  | Finalizar Procesamiento de Sistemas Legados | 4h |  |
| 358 |  | Realizar la Salida a Producción - Carga Inicial y Configuración Inicial | 2d | 357FS+4h |
| 359 |  | Revisar la ETAPA del Proyecto | 2h | 356FS+2.57d |
| 360 |  | HITO: FINALIZACION ETAPA 4 | 0d | 359FS+2h |
| 361 | 2.3.5 | **ETAPA 5: Despliegue en Producción y Soporte Técnico - Módulos PRI** | 15.43d | 339FS+12.43d |
| 362 | 2.3.5.1 | **Soporte en Producción** | 10d |  |
| 363 |  | Soporte durante la Salida a Producción | 5d |  |
| 364 |  | Resolver incidentes críticos | 3d | 363FS+5d |
| 365 |  | Entregar el soporte y Administración al cliente | 2d | 364FS+3d |
| 366 | 2.3.5.2 | **Mejora Continua** | 15d | 339FS+12.43d |
| 367 |  | Monitoreo del Sistema y Acompañamiento | 15d |  |
| 368 |  | Ajustes y Configuraciones finales al Software acorde a necesidades Entidad | 15d | 339FS+12.43d |
| 369 | 2.3.5.3 | **Cierre de la FASE 3 y Proyecto** | 0.43d | 366FS+15d |
| 370 |  | Reunión de Cierre de la FASE 3 y Proyecto | 3h |  |
| 371 |  | HITO: FIN DE LA FASE 3 y Proyecto | 0d | 366FS+15d |

## Version 2 (saved 2019-08-26, file hola.xml)

Note of the change: up

Last finish stays 2019-08-26.

Changed:

| ID | Task | Start | Duration | Other |
| --- | --- | --- | --- | --- |
| 1 | 20190122- Plan del Proyecto de Implementacion del SIIM Daule | 2018-07-16 A → 2019-08-26 (+406d) | 294.29d? → 0d? |  |
| 2 | **Programa de Implementación SIIM** |  | 294.29d → 0d |  |
| 3 | **FASE 1: Implementación de Módulos de Servicio al Cliente (SC) y Atención al Ciudadano (AC)** |  | 159.57d → 0d |  |
| 4 | **ETAPA 1: Preparación del Proyecto e Instalación del SIIM - Módulos SC y AC** |  | 9d → 0d |  |
| 5 | **Actividades de Gestión del Proyecto** |  | 2.29d → 0d |  |
| 6 | Revisión de Información de Contrato y Anexos |  |  | resources Gerente de Proyecto PlanERP; Líder del Proyecto/Desarrollo PlanERP → none |
| 7 | Definir la Organización del Proyecto |  |  | resources Gerente de Proyecto PlanERP; Líder del Proyecto/Desarrollo PlanERP → none |
| 8 | Kick-off Interno del Proyecto |  |  | resources Gerente de Proyecto PlanERP; Líder del Proyecto/Desarrollo PlanERP → none |
| 9 | **Preparación del kick-off del Proyecto** |  | 1.14d → 0d |  |
| 10 | Comunicación con el Cliente |  |  | resources Administrador de Contrato - Cliente; Gerente de Proyecto PlanERP → none |
| 11 | Crear la presentación del kick-off |  |  | resources Gerente de Proyecto PlanERP; Líder del Proyecto/Desarrollo PlanERP → none |
| 12 | **Reunión de Kick-off** |  | 0.29d → 0d |  |
| 13 | Realizar la reunión de kick-off |  |  | resources Administrador de Contrato - Cliente; Líder Funcional - Usuario Experto - Cliente; Gerente de Proyecto PlanERP; Líder Técnico - Cliente; Líder del Proyecto/Desarrollo PlanERP → none |
| 14 | **Entrega e Instalación del Software** |  | 4.29d → 0d |  |
| 15 | **Instalar SIIM en Servidor** |  | 4d → 0d | resources Funcionarios Técnicos - Cliente → none |
| 32 | Entrega de Software |  |  | resources Gerente de Proyecto PlanERP; Administrador de Contrato - Cliente → none |
| 33 | Revisar la ETAPA del Proyecto |  |  | resources Administrador de Contrato - Cliente; Gerente de Proyecto PlanERP; Analista de Calidad PlanERP → none |
| 35 | **ETAPA 2: Levantamiento de Características Institucionales - Módulos SC y AC** |  | 14.71d → 0d |  |
| 36 | **Actividades de Gestión del Proyecto** |  | 1.14d → 0d |  |
| 37 | Revisión del Plan del Proyecto |  |  | resources Administrador de Contrato - Cliente; Gerente de Proyecto PlanERP → none |
| 38 | Programar talleres de requerimientos de Entidad |  |  | resources Administrador de Contrato - Cliente; Gerente de Proyecto PlanERP → none |
| 39 | **Sesiones de Requerimientos del Entidad** |  | 12d → 0d |  |
| 40 | Conducir Sesiones de Requerimientos |  |  | resources Funcionarios Técnicos - Cliente; Analista Procesos PlanERP; Consultor Especialista en Procesos de GADs PlanERP → none |
| 41 | Crear Documento de Características del Entidad |  |  | resources Analista Procesos PlanERP; Funcionarios Técnicos - Cliente; Consultor Especialista en Procesos de GADs PlanERP → none |
| 42 | **Revisar el Documento de Características del Entidad** |  | 0.57d → 0d |  |
| 43 | Revisar el Documento de Características del Entidad |  |  | resources Administrador de Contrato - Cliente; Gerente de Proyecto PlanERP; Analista de Calidad PlanERP; Consultor Especialista en Procesos de GADs PlanERP; Analista Procesos PlanERP → none |
| 44 | Revisar el Plan del Proyecto |  |  | resources Administrador de Contrato - Cliente; Gerente de Proyecto PlanERP → none |
| 45 | Revisar la ETAPA del Proyecto |  |  | resources Administrador de Contrato - Cliente; Gerente de Proyecto PlanERP; Líder del Proyecto/Desarrollo PlanERP; Analista de Calidad PlanERP → none |
| 47 | **ETAPA 3: Migración de Datos, Configuración y Pruebas de Operación - Módulos SC y AC** |  | 56.57d → 0d |  |
| 48 | **Gestión General del Proyecto** |  | 0.57d → 0d |  |
| 49 | Planificar cambio Organizacional |  |  | resources Administrador de Contrato - Cliente; Gerente de Proyecto PlanERP; Líder del Proyecto/Desarrollo PlanERP → none |
| 50 | Planificar Entrenamiento a Usuarios Finales |  |  | resources Administrador de Contrato - Cliente; Gerente de Proyecto PlanERP; Líder del Proyecto/Desarrollo PlanERP → none |
| 51 | Definir y Preparar la Migración de Datos |  |  | resources Funcionarios Técnicos - Cliente; Líder del Proyecto/Desarrollo PlanERP; Especialista Base de Datos PlanERP → none |
| 52 | **Configuración del Sistema en Producción** |  | 56d → 0d |  |
| 53 | Instalar el SIIM en Producción |  |  | resources Funcionarios Técnicos - Cliente; Analista Procesos PlanERP; Desarrollador PlanERP; Líder del Proyecto/Desarrollo PlanERP; Especialista Base de Datos PlanERP → none |
| 54 | Configurar Inicialización del Sistema |  |  | resources Funcionarios Técnicos - Cliente; Analista Procesos PlanERP; Desarrollador PlanERP; Líder del Proyecto/Desarrollo PlanERP; Especialista Base de Datos PlanERP → none |
| 55 | Realizar la Migración de Datos |  |  | resources Funcionarios Técnicos - Cliente; Analista Procesos PlanERP; Desarrollador PlanERP; Líder del Proyecto/Desarrollo PlanERP; Especialista Base de Datos PlanERP → none |
| 56 | Desarrollar Adaptaciones al Software |  |  | resources Funcionarios Técnicos - Cliente; Analista Procesos PlanERP; Desarrollador PlanERP; Líder del Proyecto/Desarrollo PlanERP; Especialista Base de Datos PlanERP → none |
| 57 | Configuración del Sistema en base al Documento de Características del Entidad |  |  | resources Funcionarios Técnicos - Cliente; Analista Procesos PlanERP; Desarrollador PlanERP; Líder del Proyecto/Desarrollo PlanERP; Especialista Base de Datos PlanERP → none |
| 58 | Configurar Interfaces |  |  | resources Funcionarios Técnicos - Cliente; Analista Procesos PlanERP; Desarrollador PlanERP; Líder del Proyecto/Desarrollo PlanERP; Especialista Base de Datos PlanERP → none |
| 59 | Configurar Usuarios y Autorizaciones |  |  | resources Funcionarios Técnicos - Cliente; Analista Procesos PlanERP; Desarrollador PlanERP; Líder del Proyecto/Desarrollo PlanERP; Especialista Base de Datos PlanERP → none |
| 60 | **Gestión del Cambio Organizacional** |  | 1d → 0d |  |
| 61 | Conducir la comunicación de la Gestión de Cambios (si es aplicable) |  |  | resources Administrador de Contrato - Cliente; Líder Funcional - Usuario Experto - Cliente; Gerente de Proyecto PlanERP; Consultor Especialista en Procesos de GADs PlanERP → none |
| 62 | **Pruebas de validación/aceptación del Sistema** |  | 3.43d → 0d |  |
| 63 | Mantener la Lista Maestra de Procesos de Entidad |  |  | resources Líder Funcional - Usuario Experto - Cliente; Gerente de Proyecto PlanERP; Líder del Proyecto/Desarrollo PlanERP; Analista Procesos PlanERP; Consultor Especialista en Procesos de GADs PlanERP → none |
| 64 | **Conducir Talleres de Validación** |  | 3.14d → 0d | resources Líder Funcional - Usuario Experto - Cliente; Analista Procesos PlanERP; Analista de Calidad PlanERP; Consultor Especialista en Procesos de GADs PlanERP → none |
| 81 | **Pruebas de Aceptacion Sistema** |  | 5.43d → 0d |  |
| 82 | Definir casos de prueba y alcance |  |  | resources Líder Funcional - Usuario Experto - Cliente; Líder del Proyecto/Desarrollo PlanERP; Analista de Calidad PlanERP; Funcionarios Técnicos - Cliente → none |
| 83 | Preparar ambiente de pruebas |  |  | resources Funcionarios Técnicos - Cliente; Líder Funcional - Usuario Experto - Cliente; Líder del Proyecto/Desarrollo PlanERP; Analista de Calidad PlanERP → none |
| 84 | **Ejecutar el plan de pruebas de Aceptacion del Sistema** |  | 3.14d → 0d | resources Líder Funcional - Usuario Experto - Cliente; Líder del Proyecto/Desarrollo PlanERP; Analista de Calidad PlanERP; Funcionarios Técnicos - Cliente; Consultor Especialista en Procesos de GADs PlanERP → none |
| 101 | Revisar los resultados de las pruebas y necesidades de cambios |  |  | resources Administrador de Contrato - Cliente; Gerente de Proyecto PlanERP; Analista de Calidad PlanERP; Consultor Especialista en Procesos de GADs PlanERP → none |
| 102 | **Planificar Salida a Producción y Soporte** |  | 0.29d → 0d |  |
| 103 | Definir Plan de Salida a Producción |  |  | resources Administrador de Contrato - Cliente; Líder Funcional - Usuario Experto - Cliente; Gerente de Proyecto PlanERP; Líder del Proyecto/Desarrollo PlanERP → none |
| 104 | Planificar Estrategia de Soporte |  |  | resources Administrador de Contrato - Cliente; Líder Funcional - Usuario Experto - Cliente; Gerente de Proyecto PlanERP; Líder del Proyecto/Desarrollo PlanERP → none |
| 105 | Planificar Administración del Sistema |  |  | resources Administrador de Contrato - Cliente; Líder Funcional - Usuario Experto - Cliente; Gerente de Proyecto PlanERP; Líder del Proyecto/Desarrollo PlanERP → none |
| 106 | Revisar la ETAPA del Proyecto |  |  | resources Administrador de Contrato - Cliente; Gerente de Proyecto PlanERP; Líder del Proyecto/Desarrollo PlanERP; Analista de Calidad PlanERP → none |
| 108 | **ETAPA 4: Preparación Final previo Despliegue en Producción - Módulos SC y AC** |  | 19.86d → 0d |  |
| 109 | **Gestión General del Proyecto** |  | 0.57d → 0d |  |
| 110 | Confirmar el Plan de Entrenamiento |  |  | resources Administrador de Contrato - Cliente; Funcionarios Técnicos - Cliente; Gerente de Proyecto PlanERP; Líder del Proyecto/Desarrollo PlanERP → none |
| 111 | Finalizar plan de Salida a Producción |  |  | resources Administrador de Contrato - Cliente; Funcionarios Técnicos - Cliente; Gerente de Proyecto PlanERP; Líder del Proyecto/Desarrollo PlanERP; Analista de Calidad PlanERP → none |
| 112 | **Entrenamiento en Modulos de Areas Funcionales Fase 1** |  | 16d → 0d |  |
| 113 | **Entrenamiento de Usuarios Funcionales y Certificación de Procesos** |  | 12d → 0d | resources Líder Funcional - Usuario Experto - Cliente; Usuarios Finales - Cliente; Funcionarios Técnicos - Cliente; Analista Procesos PlanERP; Desarrollador PlanERP; Consultor Especialista en Procesos de GADs PlanERP → none |
| 130 | Entrenamiento de Usuario Técnicos |  |  | resources Funcionarios Técnicos - Cliente; Desarrollador PlanERP; Especialista Base de Datos PlanERP; Líder del Proyecto/Desarrollo PlanERP → none |
| 131 | **Preparación del Sistema** |  | 0.86d → 0d |  |
| 132 | Completar la Administración del Sistema |  |  | resources Funcionarios Técnicos - Cliente; Desarrollador PlanERP; Analista Procesos PlanERP → none |
| 133 | Comprobación de la Puesta a Producción |  |  | resources Funcionarios Técnicos - Cliente; Administrador de Contrato - Cliente; Analista de Calidad PlanERP; Líder del Proyecto/Desarrollo PlanERP → none |
| 134 | **Transición** |  | 2.14d → 0d |  |
| 135 | Finalizar Procesamiento de Sistemas Legados |  |  | resources Administrador de Contrato - Cliente; Líder Funcional - Usuario Experto - Cliente; Desarrollador PlanERP; Líder del Proyecto/Desarrollo PlanERP; Especialista Base de Datos PlanERP → none |
| 136 | Realizar la Salida a Producción - Carga Inicial y Configuración Inicial |  |  | resources Administrador de Contrato - Cliente; Líder Funcional - Usuario Experto - Cliente; Desarrollador PlanERP; Líder del Proyecto/Desarrollo PlanERP; Especialista Base de Datos PlanERP → none |
| 137 | Revisar la ETAPA del Proyecto |  |  | resources Administrador de Contrato - Cliente; Gerente de Proyecto PlanERP; Líder del Proyecto/Desarrollo PlanERP; Analista de Calidad PlanERP → none |

| ID | Task | Duration | Other |
| --- | --- | --- | --- |
| 139 | **ETAPA 5: Despliegue en Producción y Soporte Técnico - Módulos SC y AC** | 30d → 0d |  |
| 140 | **Soporte en Producción** | 30d → 0d |  |
| 141 | Soporte durante la Salida a Producción |  | resources Funcionarios Técnicos - Cliente; Desarrollador PlanERP; Analista Procesos PlanERP; Especialista Base de Datos PlanERP; Consultor Especialista en Procesos de GADs PlanERP → none |
| 142 | Resolver incidentes críticos |  | resources Funcionarios Técnicos - Cliente; Desarrollador PlanERP; Analista Procesos PlanERP; Especialista Base de Datos PlanERP; Consultor Especialista en Procesos de GADs PlanERP → none |
| 143 | Entregar el soporte y Administración al cliente |  | resources Funcionarios Técnicos - Cliente; Desarrollador PlanERP; Analista Procesos PlanERP; Especialista Base de Datos PlanERP; Consultor Especialista en Procesos de GADs PlanERP → none |
| 144 | **Mejora Continua** | 10d → 0d |  |
| 145 | Monitoreo del Sistema y Acompañamiento ETAPA1 |  | resources Administrador de Contrato - Cliente; Funcionarios Técnicos - Cliente; Líder Funcional - Usuario Experto - Cliente; Especialista Base de Datos PlanERP; Líder del Proyecto/Desarrollo PlanERP; Consultor Especialista en Procesos de GADs PlanERP → none |
| 146 | Ajustes y Configuraciones finales al Software acorde a necesidades Entidad |  | resources Administrador de Contrato - Cliente; Funcionarios Técnicos - Cliente; Líder Funcional - Usuario Experto - Cliente; Especialista Base de Datos PlanERP; Líder del Proyecto/Desarrollo PlanERP; Consultor Especialista en Procesos de GADs PlanERP → none |
| 147 | **Cierre de la ETAPA 5** | 0.29d → 0d |  |
| 148 | Reunión de Cierre de la ETAPA 5 |  | resources Administrador de Contrato - Cliente; Líder Funcional - Usuario Experto - Cliente; Funcionarios Técnicos - Cliente; Gerente de Proyecto PlanERP; Líder del Proyecto/Desarrollo PlanERP; Analista de Calidad PlanERP → none |
| 150 | **ETAPA 6: Estabilización, Apoyo Emisión 2019 y Desarrollo de funcionalidades no establecidas en el Alcance Contractual** | 57.29d → 0d |  |
| 158 | **Cierre de la FASE 1** | 0.29d → 0d |  |
| 159 | Reunión de Cierre de la FASE 1 |  | resources Administrador de Contrato - Cliente; Líder Funcional - Usuario Experto - Cliente; Funcionarios Técnicos - Cliente; Gerente de Proyecto PlanERP; Líder del Proyecto/Desarrollo PlanERP; Analista de Calidad PlanERP → none |
| 161 | **FASE 2: Implementación de Módulos de Planificación de Recursos Institucionales - PRI** | 88.29d → 0d |  |
| 162 | **ETAPA 1: Instalación del SIIM - Módulos PRI** | 4.14d → 0d |  |
| 163 | **Entrega e Instalación del Software** | 3.14d → 0d |  |
| 164 | **Instalar SIIM en Servidor** | 2.86d → 0d | resources Funcionarios Técnicos - Cliente → none |
| 165 | **Instalar Módulos PRI** | 2.86d → 0d | resources Funcionarios Técnicos - Cliente; Desarrollador PlanERP; Líder del Proyecto/Desarrollo PlanERP → none |
| 176 | Entrega de Software |  | resources Gerente de Proyecto PlanERP; Administrador de Contrato - Cliente → none |
| 177 | Revisar la ETAPA del Proyecto |  | resources Administrador de Contrato - Cliente; Gerente de Proyecto PlanERP; Analista de Calidad PlanERP → none |
| 179 | **ETAPA 2: Levantamiento de Características Institucionales - Módulos PRI** | 8.57d → 0d |  |
| 180 | **Actividades de Gestión del Proyecto** | 0.57d → 0d |  |
| 181 | Revisión del Plan del Proyecto |  | resources Administrador de Contrato - Cliente; Gerente de Proyecto PlanERP → none |
| 182 | Programar talleres de requerimientos de Entidad |  | resources Administrador de Contrato - Cliente; Gerente de Proyecto PlanERP → none |
| 183 | **Sesiones de Requerimientos del Entidad** | 6d → 0d |  |
| 184 | Conducir Sesiones de Requerimientos |  | resources Funcionarios Técnicos - Cliente; Analista Procesos PlanERP; Consultor Especialista en Procesos de GADs PlanERP → none |
| 185 | Crear Documento de Características del Entidad |  | resources Analista Procesos PlanERP; Funcionarios Técnicos - Cliente; Consultor Especialista en Procesos de GADs PlanERP → none |
| 186 | **Revisar el Documento de Características del Entidad** | 1d → 0d |  |
| 187 | Revisar el Documento de Características del Entidad |  | resources Administrador de Contrato - Cliente; Gerente de Proyecto PlanERP; Analista de Calidad PlanERP; Consultor Especialista en Procesos de GADs PlanERP; Analista Procesos PlanERP → none |
| 188 | Revisar el Plan del Proyecto |  | resources Administrador de Contrato - Cliente; Gerente de Proyecto PlanERP → none |
| 189 | Revisar la ETAPA del Proyecto |  | resources Administrador de Contrato - Cliente; Gerente de Proyecto PlanERP; Líder del Proyecto/Desarrollo PlanERP; Analista de Calidad PlanERP → none |
| 191 | **ETAPA 3: Migración de Datos, Configuración y Pruebas de Operación de Módulos - Módulos PRI** | 33.71d → 0d |  |
| 192 | **Gestión General del Proyecto** | 1.57d → 0d |  |
| 193 | Planificar cambio Organizacional |  | resources Administrador de Contrato - Cliente; Gerente de Proyecto PlanERP; Líder del Proyecto/Desarrollo PlanERP → none |
| 194 | Planificar Entrenamiento a Usuarios Finales |  | resources Administrador de Contrato - Cliente; Gerente de Proyecto PlanERP; Líder del Proyecto/Desarrollo PlanERP → none |
| 195 | Definir y Preparar la Migración de Datos |  | resources Funcionarios Técnicos - Cliente; Líder del Proyecto/Desarrollo PlanERP; Especialista Base de Datos PlanERP → none |
| 196 | **Configuración del Sistema en Producción** | 19.57d → 0d |  |
| 197 | Instalar el SIIM en Producción |  | resources Funcionarios Técnicos - Cliente; Analista Procesos PlanERP; Desarrollador PlanERP; Líder del Proyecto/Desarrollo PlanERP; Especialista Base de Datos PlanERP → none |
| 198 | Configurar Inicialización del Sistema |  | resources Funcionarios Técnicos - Cliente; Analista Procesos PlanERP; Desarrollador PlanERP; Líder del Proyecto/Desarrollo PlanERP; Especialista Base de Datos PlanERP → none |
| 199 | Realizar la Migración de Datos |  | resources Funcionarios Técnicos - Cliente; Analista Procesos PlanERP; Desarrollador PlanERP; Líder del Proyecto/Desarrollo PlanERP; Especialista Base de Datos PlanERP → none |
| 200 | Desarrollar Adaptaciones al Software |  | resources Funcionarios Técnicos - Cliente; Analista Procesos PlanERP; Desarrollador PlanERP; Líder del Proyecto/Desarrollo PlanERP; Especialista Base de Datos PlanERP → none |
| 201 | Configuración del Sistema en base al Documento de Características del Entidad |  | resources Funcionarios Técnicos - Cliente; Analista Procesos PlanERP; Desarrollador PlanERP; Líder del Proyecto/Desarrollo PlanERP; Especialista Base de Datos PlanERP → none |
| 202 | Configurar Interfaces |  | resources Funcionarios Técnicos - Cliente; Analista Procesos PlanERP; Desarrollador PlanERP; Líder del Proyecto/Desarrollo PlanERP; Especialista Base de Datos PlanERP → none |
| 203 | Configurar Usuarios y Autorizaciones |  | resources Funcionarios Técnicos - Cliente; Analista Procesos PlanERP; Desarrollador PlanERP; Líder del Proyecto/Desarrollo PlanERP; Especialista Base de Datos PlanERP → none |
| 204 | **Gestión del Cambio Organizacional** | 0.29d → 0d |  |
| 205 | Conducir la comunicación de la Gestión de Cambios (si es aplicable) |  | resources Administrador de Contrato - Cliente; Líder Funcional - Usuario Experto - Cliente; Gerente de Proyecto PlanERP; Consultor Especialista en Procesos de GADs PlanERP → none |
| 206 | **Pruebas de validación del Sistema** | 4.57d → 0d |  |
| 207 | Mantener la Lista Maestra de Procesos de Entidad |  | resources Líder Funcional - Usuario Experto - Cliente; Gerente de Proyecto PlanERP; Líder del Proyecto/Desarrollo PlanERP; Analista Procesos PlanERP; Consultor Especialista en Procesos de GADs PlanERP → none |
| 208 | **Conducir Talleres de Validación** | 4d → 0d | resources Líder Funcional - Usuario Experto - Cliente; Analista Procesos PlanERP; Analista de Calidad PlanERP; Consultor Especialista en Procesos de GADs PlanERP → none |
| 219 | **Pruebas de aceptacion del Sistema** | 5.43d → 0d |  |
| 220 | Definir casos de prueba y alcance |  | resources Líder Funcional - Usuario Experto - Cliente; Líder del Proyecto/Desarrollo PlanERP; Analista de Calidad PlanERP; Funcionarios Técnicos - Cliente → none |
| 221 | Preparar ambiente de pruebas |  | resources Funcionarios Técnicos - Cliente; Líder Funcional - Usuario Experto - Cliente; Líder del Proyecto/Desarrollo PlanERP; Analista de Calidad PlanERP → none |
| 222 | **Ejecutar el plan de pruebas** | 4d → 0d | resources Líder Funcional - Usuario Experto - Cliente; Líder del Proyecto/Desarrollo PlanERP; Analista de Calidad PlanERP; Funcionarios Técnicos - Cliente; Consultor Especialista en Procesos de GADs PlanERP → none |
| 233 | Revisar los resultados de las pruebas y necesidades de cambios |  | resources Administrador de Contrato - Cliente; Gerente de Proyecto PlanERP; Analista de Calidad PlanERP; Consultor Especialista en Procesos de GADs PlanERP → none |
| 234 | **Planificar Salida a Producción y Soporte** | 1.29d → 0d |  |
| 235 | Definir Plan de Salida a Producción |  | resources Administrador de Contrato - Cliente; Líder Funcional - Usuario Experto - Cliente; Gerente de Proyecto PlanERP; Líder del Proyecto/Desarrollo PlanERP → none |
| 236 | Planificar Estrategia de Soporte |  | resources Administrador de Contrato - Cliente; Líder Funcional - Usuario Experto - Cliente; Gerente de Proyecto PlanERP; Líder del Proyecto/Desarrollo PlanERP → none |
| 237 | Planificar Administración del Sistema |  | resources Administrador de Contrato - Cliente; Líder Funcional - Usuario Experto - Cliente; Gerente de Proyecto PlanERP; Líder del Proyecto/Desarrollo PlanERP → none |
| 238 | Revisar la ETAPA del Proyecto |  | resources Administrador de Contrato - Cliente; Gerente de Proyecto PlanERP; Líder del Proyecto/Desarrollo PlanERP; Analista de Calidad PlanERP → none |
| 240 | **ETAPA 4: Preparación Final previo Despliegue en Producción - Módulos PRI** | 11.43d → 0d |  |
| 241 | **Gestión General del Proyecto** | 1.14d → 0d |  |
| 242 | Confirmar el Plan de Entrenamiento |  | resources Administrador de Contrato - Cliente; Funcionarios Técnicos - Cliente; Gerente de Proyecto PlanERP; Líder del Proyecto/Desarrollo PlanERP → none |
| 243 | Finalizar plan de Salida a Producción |  | resources Administrador de Contrato - Cliente; Funcionarios Técnicos - Cliente; Gerente de Proyecto PlanERP; Líder del Proyecto/Desarrollo PlanERP; Analista de Calidad PlanERP → none |
| 244 | **Entrenamiento** | 6d → 0d |  |
| 245 | **Entrenamiento de Usuarios Funcionales y Certificación de Procesos** | 4d → 0d | resources Líder Funcional - Usuario Experto - Cliente; Usuarios Finales - Cliente; Funcionarios Técnicos - Cliente; Analista Procesos PlanERP; Desarrollador PlanERP; Consultor Especialista en Procesos de GADs PlanERP → none |
| 256 | Entrenamiento de Usuario Técnicos |  | resources Funcionarios Técnicos - Cliente; Desarrollador PlanERP; Especialista Base de Datos PlanERP; Líder del Proyecto/Desarrollo PlanERP → none |
| 257 | **Preparación del Sistema** | 1.43d → 0d |  |
| 258 | Completar la Administración del Sistema |  | resources Funcionarios Técnicos - Cliente; Desarrollador PlanERP; Analista Procesos PlanERP → none |
| 259 | Comprobación de la Puesta a Producción |  | resources Funcionarios Técnicos - Cliente; Administrador de Contrato - Cliente; Analista de Calidad PlanERP; Líder del Proyecto/Desarrollo PlanERP → none |
| 260 | **Transición** | 2.57d → 0d |  |

| ID | Task | Duration | Other |
| --- | --- | --- | --- |
| 261 | Finalizar Procesamiento de Sistemas Legados |  | resources Administrador de Contrato - Cliente; Líder Funcional - Usuario Experto - Cliente; Desarrollador PlanERP; Líder del Proyecto/Desarrollo PlanERP; Especialista Base de Datos PlanERP → none |
| 262 | Realizar la Salida a Producción - Carga Inicial y Configuración Inicial |  | resources Administrador de Contrato - Cliente; Líder Funcional - Usuario Experto - Cliente; Desarrollador PlanERP; Líder del Proyecto/Desarrollo PlanERP; Especialista Base de Datos PlanERP → none |
| 263 | Revisar la ETAPA del Proyecto |  | resources Administrador de Contrato - Cliente; Gerente de Proyecto PlanERP; Líder del Proyecto/Desarrollo PlanERP; Analista de Calidad PlanERP → none |
| 265 | **ETAPA 5: Despliegue en Producción y Soporte Técnico - Módulos PRI** | 30.43d → 0d |  |
| 266 | **Soporte en Producción** | 15d → 0d |  |
| 267 | Soporte durante la Salida a Producción |  | resources Funcionarios Técnicos - Cliente; Desarrollador PlanERP; Analista Procesos PlanERP; Especialista Base de Datos PlanERP; Consultor Especialista en Procesos de GADs PlanERP → none |
| 268 | Resolver incidentes críticos |  | resources Funcionarios Técnicos - Cliente; Desarrollador PlanERP; Analista Procesos PlanERP; Especialista Base de Datos PlanERP; Consultor Especialista en Procesos de GADs PlanERP → none |
| 269 | Entregar el soporte y Administración al cliente |  | resources Funcionarios Técnicos - Cliente; Desarrollador PlanERP; Analista Procesos PlanERP; Especialista Base de Datos PlanERP; Consultor Especialista en Procesos de GADs PlanERP → none |
| 270 | **Mejora Continua** | 15d → 0d |  |
| 271 | Monitoreo del Sistema y Acompañamiento ETAPA2 |  | resources Administrador de Contrato - Cliente; Funcionarios Técnicos - Cliente; Líder Funcional - Usuario Experto - Cliente; Especialista Base de Datos PlanERP; Líder del Proyecto/Desarrollo PlanERP; Consultor Especialista en Procesos de GADs PlanERP → none |
| 272 | Ajustes y Configuraciones finales al Software acorde a necesidades Entidad |  | resources Administrador de Contrato - Cliente; Funcionarios Técnicos - Cliente; Líder Funcional - Usuario Experto - Cliente; Especialista Base de Datos PlanERP; Líder del Proyecto/Desarrollo PlanERP; Consultor Especialista en Procesos de GADs PlanERP → none |
| 273 | **Cierre de la FASE 2** | 0.43d → 0d |  |
| 274 | Reunión de Cierre de la FASE 2 |  | resources Administrador de Contrato - Cliente; Líder Funcional - Usuario Experto - Cliente; Funcionarios Técnicos - Cliente; Gerente de Proyecto PlanERP; Líder del Proyecto/Desarrollo PlanERP; Analista de Calidad PlanERP → none |
| 276 | **FASE 3: Implementación de Módulos de Planificación de Recursos Institucionales - PRI** | 76.86d → 0d |  |
| 277 | **ETAPA 1: Instalación del SIIM - Módulos PRI** | 4.29d → 0d |  |
| 278 | **Entrega e Instalación del Software** | 3.29d → 0d |  |
| 279 | **Instalar SIIM en Servidor** | 3d → 0d | resources Funcionarios Técnicos - Cliente → none |
| 280 | Instalar Módulos PRI |  | resources Funcionarios Técnicos - Cliente; Desarrollador PlanERP; Líder del Proyecto/Desarrollo PlanERP → none |
| 281 | Entrega de Software |  | resources Gerente de Proyecto PlanERP; Administrador de Contrato - Cliente → none |
| 282 | Revisar la ETAPA del Proyecto |  | resources Administrador de Contrato - Cliente; Gerente de Proyecto PlanERP; Analista de Calidad PlanERP → none |
| 284 | **ETAPA 2: Levantamiento de Características Institucionales - Módulos PRI** | 8.57d → 0d |  |
| 285 | **Actividades de Gestión del Proyecto** | 0.57d → 0d |  |
| 286 | Revisión del Plan del Proyecto |  | resources Administrador de Contrato - Cliente; Gerente de Proyecto PlanERP → none |
| 287 | Programar talleres de requerimientos de Entidad |  | resources Administrador de Contrato - Cliente; Gerente de Proyecto PlanERP → none |
| 288 | **Sesiones de Requerimientos del Entidad** | 6d → 0d |  |
| 289 | Conducir Sesiones de Requerimientos |  | resources Funcionarios Técnicos - Cliente; Analista Procesos PlanERP; Consultor Especialista en Procesos de GADs PlanERP → none |
| 290 | Crear Documento de Características del Entidad |  | resources Analista Procesos PlanERP; Funcionarios Técnicos - Cliente; Consultor Especialista en Procesos de GADs PlanERP → none |
| 291 | **Revisar el Documento de Características del Entidad** | 1d → 0d |  |
| 292 | Revisar el Documento de Características del Entidad |  | resources Administrador de Contrato - Cliente; Gerente de Proyecto PlanERP; Analista de Calidad PlanERP; Consultor Especialista en Procesos de GADs PlanERP; Analista Procesos PlanERP → none |
| 293 | Revisar el Plan del Proyecto |  | resources Administrador de Contrato - Cliente; Gerente de Proyecto PlanERP → none |
| 294 | Revisar la ETAPA del Proyecto |  | resources Administrador de Contrato - Cliente; Gerente de Proyecto PlanERP; Líder del Proyecto/Desarrollo PlanERP; Analista de Calidad PlanERP → none |
| 296 | **ETAPA 3: Migración de Datos, Configuración y Pruebas de Operación de Módulos - Módulos PRI** | 33.43d → 0d |  |
| 297 | **Gestión General del Proyecto** | 1.57d → 0d |  |
| 298 | Planificar cambio Organizacional |  | resources Administrador de Contrato - Cliente; Gerente de Proyecto PlanERP; Líder del Proyecto/Desarrollo PlanERP → none |
| 299 | Planificar Entrenamiento a Usuarios Finales |  | resources Administrador de Contrato - Cliente; Gerente de Proyecto PlanERP; Líder del Proyecto/Desarrollo PlanERP → none |
| 300 | Definir y Preparar la Migración de Datos |  | resources Funcionarios Técnicos - Cliente; Líder del Proyecto/Desarrollo PlanERP; Especialista Base de Datos PlanERP → none |
| 301 | **Configuración del Sistema en Producción** | 20.57d → 0d |  |
| 302 | Instalar el SIIM en Producción |  | resources Funcionarios Técnicos - Cliente; Analista Procesos PlanERP; Desarrollador PlanERP; Líder del Proyecto/Desarrollo PlanERP; Especialista Base de Datos PlanERP → none |
| 303 | Configurar Inicialización del Sistema |  | resources Funcionarios Técnicos - Cliente; Analista Procesos PlanERP; Desarrollador PlanERP; Líder del Proyecto/Desarrollo PlanERP; Especialista Base de Datos PlanERP → none |
| 304 | Realizar la Migración de Datos |  | resources Funcionarios Técnicos - Cliente; Analista Procesos PlanERP; Desarrollador PlanERP; Líder del Proyecto/Desarrollo PlanERP; Especialista Base de Datos PlanERP → none |
| 305 | Desarrollar Adaptaciones al Software |  | resources Funcionarios Técnicos - Cliente; Analista Procesos PlanERP; Desarrollador PlanERP; Líder del Proyecto/Desarrollo PlanERP; Especialista Base de Datos PlanERP → none |
| 306 | Configuración del Sistema en base al Documento de Características del Entidad |  | resources Funcionarios Técnicos - Cliente; Analista Procesos PlanERP; Desarrollador PlanERP; Líder del Proyecto/Desarrollo PlanERP; Especialista Base de Datos PlanERP → none |
| 307 | Configurar Interfaces |  | resources Funcionarios Técnicos - Cliente; Analista Procesos PlanERP; Desarrollador PlanERP; Líder del Proyecto/Desarrollo PlanERP; Especialista Base de Datos PlanERP → none |
| 308 | Configurar Usuarios y Autorizaciones |  | resources Funcionarios Técnicos - Cliente; Analista Procesos PlanERP; Desarrollador PlanERP; Líder del Proyecto/Desarrollo PlanERP; Especialista Base de Datos PlanERP → none |
| 309 | **Gestión del Cambio Organizacional** | 2d → 0d |  |
| 310 | Conducir la comunicación de la Gestión de Cambios (si es aplicable) |  | resources Administrador de Contrato - Cliente; Líder Funcional - Usuario Experto - Cliente; Gerente de Proyecto PlanERP; Consultor Especialista en Procesos de GADs PlanERP → none |
| 311 | **Pruebas de validación/aceptación del Sistema** | 2.57d → 0d |  |
| 312 | Mantener la Lista Maestra de Procesos de Entidad |  | resources Líder Funcional - Usuario Experto - Cliente; Gerente de Proyecto PlanERP; Líder del Proyecto/Desarrollo PlanERP; Analista Procesos PlanERP; Consultor Especialista en Procesos de GADs PlanERP → none |
| 313 | **Conducir Talleres de Validación** | 2d → 0d | resources Líder Funcional - Usuario Experto - Cliente; Analista Procesos PlanERP; Analista de Calidad PlanERP; Consultor Especialista en Procesos de GADs PlanERP → none |
| 321 | **Pruebas de aceptacion del Sistema** | 4.43d → 0d |  |
| 322 | Definir casos de prueba y alcance |  | resources Líder Funcional - Usuario Experto - Cliente; Líder del Proyecto/Desarrollo PlanERP; Analista de Calidad PlanERP; Funcionarios Técnicos - Cliente → none |
| 323 | Preparar ambiente de pruebas |  | resources Funcionarios Técnicos - Cliente; Líder Funcional - Usuario Experto - Cliente; Líder del Proyecto/Desarrollo PlanERP; Analista de Calidad PlanERP → none |
| 324 | **Ejecutar el plan de pruebas** | 2d → 0d | resources Líder Funcional - Usuario Experto - Cliente; Líder del Proyecto/Desarrollo PlanERP; Analista de Calidad PlanERP; Funcionarios Técnicos - Cliente; Consultor Especialista en Procesos de GADs PlanERP → none |
| 332 | Revisar los resultados de las pruebas y necesidades de cambios |  | resources Administrador de Contrato - Cliente; Gerente de Proyecto PlanERP; Analista de Calidad PlanERP; Consultor Especialista en Procesos de GADs PlanERP → none |
| 333 | **Planificar Salida a Producción y Soporte** | 1.29d → 0d |  |
| 334 | Definir Plan de Salida a Producción |  | resources Administrador de Contrato - Cliente; Líder Funcional - Usuario Experto - Cliente; Gerente de Proyecto PlanERP; Líder del Proyecto/Desarrollo PlanERP → none |
| 335 | Planificar Estrategia de Soporte |  | resources Administrador de Contrato - Cliente; Líder Funcional - Usuario Experto - Cliente; Gerente de Proyecto PlanERP; Líder del Proyecto/Desarrollo PlanERP → none |
| 336 | Planificar Administración del Sistema |  | resources Administrador de Contrato - Cliente; Líder Funcional - Usuario Experto - Cliente; Gerente de Proyecto PlanERP; Líder del Proyecto/Desarrollo PlanERP → none |
| 337 | Revisar la ETAPA del Proyecto |  | resources Administrador de Contrato - Cliente; Gerente de Proyecto PlanERP; Líder del Proyecto/Desarrollo PlanERP; Analista de Calidad PlanERP → none |
| 339 | **ETAPA 4: Preparación Final previo Despliegue en Producción - Módulos PRI** | 12.43d → 0d |  |
| 340 | **Gestión General del Proyecto** | 1.14d → 0d |  |
| 341 | Confirmar el Plan de Entrenamiento |  | resources Administrador de Contrato - Cliente; Funcionarios Técnicos - Cliente; Gerente de Proyecto PlanERP; Líder del Proyecto/Desarrollo PlanERP → none |
| 342 | Finalizar plan de Salida a Producción |  | resources Administrador de Contrato - Cliente; Funcionarios Técnicos - Cliente; Gerente de Proyecto PlanERP; Líder del Proyecto/Desarrollo PlanERP; Analista de Calidad PlanERP → none |
| 343 | **Entrenamiento** | 7d → 0d |  |
| 344 | **Entrenamiento de Usuarios Funcionales y Certificación de Procesos** | 4d → 0d | resources Líder Funcional - Usuario Experto - Cliente; Usuarios Finales - Cliente; Funcionarios Técnicos - Cliente; Analista Procesos PlanERP; Desarrollador PlanERP; Consultor Especialista en Procesos de GADs PlanERP → none |
| 352 | Entrenamiento de Usuario Técnicos |  | resources Funcionarios Técnicos - Cliente; Desarrollador PlanERP; Especialista Base de Datos PlanERP; Líder del Proyecto/Desarrollo PlanERP → none |
| 353 | **Preparación del Sistema** | 1.43d → 0d |  |
| 354 | Completar la Administración del Sistema |  | resources Funcionarios Técnicos - Cliente; Desarrollador PlanERP; Analista Procesos PlanERP → none |
| 355 | Comprobación de la Puesta a Producción |  | resources Funcionarios Técnicos - Cliente; Administrador de Contrato - Cliente; Analista de Calidad PlanERP; Líder del Proyecto/Desarrollo PlanERP → none |
| 356 | **Transición** | 2.57d → 0d |  |

| ID | Task | Duration | Other |
| --- | --- | --- | --- |
| 357 | Finalizar Procesamiento de Sistemas Legados |  | resources Administrador de Contrato - Cliente; Líder Funcional - Usuario Experto - Cliente; Desarrollador PlanERP; Líder del Proyecto/Desarrollo PlanERP; Especialista Base de Datos PlanERP → none |
| 358 | Realizar la Salida a Producción - Carga Inicial y Configuración Inicial |  | resources Administrador de Contrato - Cliente; Líder Funcional - Usuario Experto - Cliente; Desarrollador PlanERP; Líder del Proyecto/Desarrollo PlanERP; Especialista Base de Datos PlanERP → none |
| 359 | Revisar la ETAPA del Proyecto |  | resources Administrador de Contrato - Cliente; Gerente de Proyecto PlanERP; Líder del Proyecto/Desarrollo PlanERP; Analista de Calidad PlanERP → none |
| 361 | **ETAPA 5: Despliegue en Producción y Soporte Técnico - Módulos PRI** | 15.43d → 0d |  |
| 362 | **Soporte en Producción** | 10d → 0d |  |
| 363 | Soporte durante la Salida a Producción |  | resources Funcionarios Técnicos - Cliente; Desarrollador PlanERP; Analista Procesos PlanERP; Especialista Base de Datos PlanERP; Consultor Especialista en Procesos de GADs PlanERP → none |
| 364 | Resolver incidentes críticos |  | resources Funcionarios Técnicos - Cliente; Desarrollador PlanERP; Analista Procesos PlanERP; Especialista Base de Datos PlanERP; Consultor Especialista en Procesos de GADs PlanERP → none |
| 365 | Entregar el soporte y Administración al cliente |  | resources Funcionarios Técnicos - Cliente; Desarrollador PlanERP; Analista Procesos PlanERP; Especialista Base de Datos PlanERP; Consultor Especialista en Procesos de GADs PlanERP → none |
| 366 | **Mejora Continua** | 15d → 0d |  |
| 367 | Monitoreo del Sistema y Acompañamiento |  | resources Administrador de Contrato - Cliente; Funcionarios Técnicos - Cliente; Líder Funcional - Usuario Experto - Cliente; Especialista Base de Datos PlanERP; Líder del Proyecto/Desarrollo PlanERP; Consultor Especialista en Procesos de GADs PlanERP → none |
| 368 | Ajustes y Configuraciones finales al Software acorde a necesidades Entidad |  | resources Administrador de Contrato - Cliente; Funcionarios Técnicos - Cliente; Líder Funcional - Usuario Experto - Cliente; Especialista Base de Datos PlanERP; Líder del Proyecto/Desarrollo PlanERP; Consultor Especialista en Procesos de GADs PlanERP → none |
| 369 | **Cierre de la FASE 3 y Proyecto** | 0.43d → 0d |  |
| 370 | Reunión de Cierre de la FASE 3 y Proyecto |  | resources Administrador de Contrato - Cliente; Líder Funcional - Usuario Experto - Cliente; Funcionarios Técnicos - Cliente; Gerente de Proyecto PlanERP; Líder del Proyecto/Desarrollo PlanERP; Analista de Calidad PlanERP → none |

## Version 3 (saved 2019-08-30, file 20190122- Plan del Proyecto de Implementacion del SIIM Daule.xml)

Last finish 2019-08-26 → none.

Removed: 1 20190122- Plan del Proyecto de Implementacion del SIIM Daule

Changed:

| ID | Task | Duration | Other |
| --- | --- | --- | --- |
| 1 | Programa de Implementación SIIM | 0d → 294.29d |  |
| 2 | **FASE 1: Implementación de Módulos de Servicio al Cliente (SC) y Atención al Ciudadano (AC)** | 0d → 159.57d |  |
| 3 | **ETAPA 1: Preparación del Proyecto e Instalación del SIIM - Módulos SC y AC** | 0d → 9d |  |
| 4 | **Actividades de Gestión del Proyecto** | 0d → 2.29d |  |
| 5 | Revisión de Información de Contrato y Anexos |  | resources none → Gerente de Proyecto PlanERP; Líder del Proyecto/Desarrollo PlanERP |
| 6 | Definir la Organización del Proyecto |  | resources none → Gerente de Proyecto PlanERP; Líder del Proyecto/Desarrollo PlanERP |
| 7 | Kick-off Interno del Proyecto |  | resources none → Gerente de Proyecto PlanERP; Líder del Proyecto/Desarrollo PlanERP |
| 8 | **Preparación del kick-off del Proyecto** | 0d → 1.14d |  |
| 9 | Comunicación con el Cliente |  | resources none → Administrador de Contrato - Cliente; Gerente de Proyecto PlanERP |
| 10 | Crear la presentación del kick-off |  | resources none → Gerente de Proyecto PlanERP; Líder del Proyecto/Desarrollo PlanERP |
| 11 | **Reunión de Kick-off** | 0d → 0.29d |  |
| 12 | Realizar la reunión de kick-off |  | resources none → Administrador de Contrato - Cliente; Líder Funcional - Usuario Experto - Cliente; Gerente de Proyecto PlanERP; Líder Técnico - Cliente; Líder del Proyecto/Desarrollo PlanERP |
| 13 | **Entrega e Instalación del Software** | 0d → 4.29d |  |
| 14 | **Instalar SIIM en Servidor** | 0d → 4d | resources none → Funcionarios Técnicos - Cliente |
| 31 | Entrega de Software |  | resources none → Gerente de Proyecto PlanERP; Administrador de Contrato - Cliente |
| 32 | Revisar la ETAPA del Proyecto |  | resources none → Administrador de Contrato - Cliente; Gerente de Proyecto PlanERP; Analista de Calidad PlanERP |
| 34 | **ETAPA 2: Levantamiento de Características Institucionales - Módulos SC y AC** | 0d → 14.71d |  |
| 35 | **Actividades de Gestión del Proyecto** | 0d → 1.14d |  |
| 36 | Revisión del Plan del Proyecto |  | resources none → Administrador de Contrato - Cliente; Gerente de Proyecto PlanERP |
| 37 | Programar talleres de requerimientos de Entidad |  | resources none → Administrador de Contrato - Cliente; Gerente de Proyecto PlanERP |
| 38 | **Sesiones de Requerimientos del Entidad** | 0d → 12d |  |
| 39 | Conducir Sesiones de Requerimientos |  | resources none → Funcionarios Técnicos - Cliente; Analista Procesos PlanERP; Consultor Especialista en Procesos de GADs PlanERP |
| 40 | Crear Documento de Características del Entidad |  | resources none → Analista Procesos PlanERP; Funcionarios Técnicos - Cliente; Consultor Especialista en Procesos de GADs PlanERP |
| 41 | **Revisar el Documento de Características del Entidad** | 0d → 0.57d |  |
| 42 | Revisar el Documento de Características del Entidad |  | resources none → Administrador de Contrato - Cliente; Gerente de Proyecto PlanERP; Analista de Calidad PlanERP; Consultor Especialista en Procesos de GADs PlanERP; Analista Procesos PlanERP |
| 43 | Revisar el Plan del Proyecto |  | resources none → Administrador de Contrato - Cliente; Gerente de Proyecto PlanERP |
| 44 | Revisar la ETAPA del Proyecto |  | resources none → Administrador de Contrato - Cliente; Gerente de Proyecto PlanERP; Líder del Proyecto/Desarrollo PlanERP; Analista de Calidad PlanERP |
| 46 | **ETAPA 3: Migración de Datos, Configuración y Pruebas de Operación - Módulos SC y AC** | 0d → 56.57d |  |
| 47 | **Gestión General del Proyecto** | 0d → 0.57d |  |
| 48 | Planificar cambio Organizacional |  | resources none → Administrador de Contrato - Cliente; Gerente de Proyecto PlanERP; Líder del Proyecto/Desarrollo PlanERP |
| 49 | Planificar Entrenamiento a Usuarios Finales |  | resources none → Administrador de Contrato - Cliente; Gerente de Proyecto PlanERP; Líder del Proyecto/Desarrollo PlanERP |
| 50 | Definir y Preparar la Migración de Datos |  | resources none → Funcionarios Técnicos - Cliente; Líder del Proyecto/Desarrollo PlanERP; Especialista Base de Datos PlanERP |
| 51 | **Configuración del Sistema en Producción** | 0d → 56d |  |
| 52 | Instalar el SIIM en Producción |  | resources none → Funcionarios Técnicos - Cliente; Analista Procesos PlanERP; Desarrollador PlanERP; Líder del Proyecto/Desarrollo PlanERP; Especialista Base de Datos PlanERP |
| 53 | Configurar Inicialización del Sistema |  | resources none → Funcionarios Técnicos - Cliente; Analista Procesos PlanERP; Desarrollador PlanERP; Líder del Proyecto/Desarrollo PlanERP; Especialista Base de Datos PlanERP |
| 54 | Realizar la Migración de Datos |  | resources none → Funcionarios Técnicos - Cliente; Analista Procesos PlanERP; Desarrollador PlanERP; Líder del Proyecto/Desarrollo PlanERP; Especialista Base de Datos PlanERP |
| 55 | Desarrollar Adaptaciones al Software |  | resources none → Funcionarios Técnicos - Cliente; Analista Procesos PlanERP; Desarrollador PlanERP; Líder del Proyecto/Desarrollo PlanERP; Especialista Base de Datos PlanERP |
| 56 | Configuración del Sistema en base al Documento de Características del Entidad |  | resources none → Funcionarios Técnicos - Cliente; Analista Procesos PlanERP; Desarrollador PlanERP; Líder del Proyecto/Desarrollo PlanERP; Especialista Base de Datos PlanERP |
| 57 | Configurar Interfaces |  | resources none → Funcionarios Técnicos - Cliente; Analista Procesos PlanERP; Desarrollador PlanERP; Líder del Proyecto/Desarrollo PlanERP; Especialista Base de Datos PlanERP |
| 58 | Configurar Usuarios y Autorizaciones |  | resources none → Funcionarios Técnicos - Cliente; Analista Procesos PlanERP; Desarrollador PlanERP; Líder del Proyecto/Desarrollo PlanERP; Especialista Base de Datos PlanERP |
| 59 | **Gestión del Cambio Organizacional** | 0d → 1d |  |
| 60 | Conducir la comunicación de la Gestión de Cambios (si es aplicable) |  | resources none → Administrador de Contrato - Cliente; Líder Funcional - Usuario Experto - Cliente; Gerente de Proyecto PlanERP; Consultor Especialista en Procesos de GADs PlanERP |
| 61 | **Pruebas de validación/aceptación del Sistema** | 0d → 3.43d |  |
| 62 | Mantener la Lista Maestra de Procesos de Entidad |  | resources none → Líder Funcional - Usuario Experto - Cliente; Gerente de Proyecto PlanERP; Líder del Proyecto/Desarrollo PlanERP; Analista Procesos PlanERP; Consultor Especialista en Procesos de GADs PlanERP |
| 63 | **Conducir Talleres de Validación** | 0d → 3.14d | resources none → Líder Funcional - Usuario Experto - Cliente; Analista Procesos PlanERP; Analista de Calidad PlanERP; Consultor Especialista en Procesos de GADs PlanERP |
| 80 | **Pruebas de Aceptacion Sistema** | 0d → 5.43d |  |
| 81 | Definir casos de prueba y alcance |  | resources none → Líder Funcional - Usuario Experto - Cliente; Líder del Proyecto/Desarrollo PlanERP; Analista de Calidad PlanERP; Funcionarios Técnicos - Cliente |
| 82 | Preparar ambiente de pruebas |  | resources none → Funcionarios Técnicos - Cliente; Líder Funcional - Usuario Experto - Cliente; Líder del Proyecto/Desarrollo PlanERP; Analista de Calidad PlanERP |
| 83 | **Ejecutar el plan de pruebas de Aceptacion del Sistema** | 0d → 3.14d | resources none → Líder Funcional - Usuario Experto - Cliente; Líder del Proyecto/Desarrollo PlanERP; Analista de Calidad PlanERP; Funcionarios Técnicos - Cliente; Consultor Especialista en Procesos de GADs PlanERP |
| 100 | Revisar los resultados de las pruebas y necesidades de cambios |  | resources none → Administrador de Contrato - Cliente; Gerente de Proyecto PlanERP; Analista de Calidad PlanERP; Consultor Especialista en Procesos de GADs PlanERP |
| 101 | **Planificar Salida a Producción y Soporte** | 0d → 0.29d |  |
| 102 | Definir Plan de Salida a Producción |  | resources none → Administrador de Contrato - Cliente; Líder Funcional - Usuario Experto - Cliente; Gerente de Proyecto PlanERP; Líder del Proyecto/Desarrollo PlanERP |
| 103 | Planificar Estrategia de Soporte |  | resources none → Administrador de Contrato - Cliente; Líder Funcional - Usuario Experto - Cliente; Gerente de Proyecto PlanERP; Líder del Proyecto/Desarrollo PlanERP |
| 104 | Planificar Administración del Sistema |  | resources none → Administrador de Contrato - Cliente; Líder Funcional - Usuario Experto - Cliente; Gerente de Proyecto PlanERP; Líder del Proyecto/Desarrollo PlanERP |
| 105 | Revisar la ETAPA del Proyecto |  | resources none → Administrador de Contrato - Cliente; Gerente de Proyecto PlanERP; Líder del Proyecto/Desarrollo PlanERP; Analista de Calidad PlanERP |
| 107 | **ETAPA 4: Preparación Final previo Despliegue en Producción - Módulos SC y AC** | 0d → 19.86d |  |
| 108 | **Gestión General del Proyecto** | 0d → 0.57d |  |
| 109 | Confirmar el Plan de Entrenamiento |  | resources none → Administrador de Contrato - Cliente; Funcionarios Técnicos - Cliente; Gerente de Proyecto PlanERP; Líder del Proyecto/Desarrollo PlanERP |
| 110 | Finalizar plan de Salida a Producción |  | resources none → Administrador de Contrato - Cliente; Funcionarios Técnicos - Cliente; Gerente de Proyecto PlanERP; Líder del Proyecto/Desarrollo PlanERP; Analista de Calidad PlanERP |
| 111 | **Entrenamiento en Modulos de Areas Funcionales Fase 1** | 0d → 16d |  |
| 112 | **Entrenamiento de Usuarios Funcionales y Certificación de Procesos** | 0d → 12d | resources none → Líder Funcional - Usuario Experto - Cliente; Usuarios Finales - Cliente; Funcionarios Técnicos - Cliente; Analista Procesos PlanERP; Desarrollador PlanERP; Consultor Especialista en Procesos de GADs PlanERP |
| 129 | Entrenamiento de Usuario Técnicos |  | resources none → Funcionarios Técnicos - Cliente; Desarrollador PlanERP; Especialista Base de Datos PlanERP; Líder del Proyecto/Desarrollo PlanERP |
| 130 | **Preparación del Sistema** | 0d → 0.86d |  |
| 131 | Completar la Administración del Sistema |  | resources none → Funcionarios Técnicos - Cliente; Desarrollador PlanERP; Analista Procesos PlanERP |
| 132 | Comprobación de la Puesta a Producción |  | resources none → Funcionarios Técnicos - Cliente; Administrador de Contrato - Cliente; Analista de Calidad PlanERP; Líder del Proyecto/Desarrollo PlanERP |
| 133 | **Transición** | 0d → 2.14d |  |
| 134 | Finalizar Procesamiento de Sistemas Legados |  | resources none → Administrador de Contrato - Cliente; Líder Funcional - Usuario Experto - Cliente; Desarrollador PlanERP; Líder del Proyecto/Desarrollo PlanERP; Especialista Base de Datos PlanERP |
| 135 | Realizar la Salida a Producción - Carga Inicial y Configuración Inicial |  | resources none → Administrador de Contrato - Cliente; Líder Funcional - Usuario Experto - Cliente; Desarrollador PlanERP; Líder del Proyecto/Desarrollo PlanERP; Especialista Base de Datos PlanERP |
| 136 | Revisar la ETAPA del Proyecto |  | resources none → Administrador de Contrato - Cliente; Gerente de Proyecto PlanERP; Líder del Proyecto/Desarrollo PlanERP; Analista de Calidad PlanERP |
| 138 | **ETAPA 5: Despliegue en Producción y Soporte Técnico - Módulos SC y AC** | 0d → 30d |  |

| ID | Task | Duration | Other |
| --- | --- | --- | --- |
| 139 | **Soporte en Producción** | 0d → 30d |  |
| 140 | Soporte durante la Salida a Producción |  | resources none → Funcionarios Técnicos - Cliente; Desarrollador PlanERP; Analista Procesos PlanERP; Especialista Base de Datos PlanERP; Consultor Especialista en Procesos de GADs PlanERP |
| 141 | Resolver incidentes críticos |  | resources none → Funcionarios Técnicos - Cliente; Desarrollador PlanERP; Analista Procesos PlanERP; Especialista Base de Datos PlanERP; Consultor Especialista en Procesos de GADs PlanERP |
| 142 | Entregar el soporte y Administración al cliente |  | resources none → Funcionarios Técnicos - Cliente; Desarrollador PlanERP; Analista Procesos PlanERP; Especialista Base de Datos PlanERP; Consultor Especialista en Procesos de GADs PlanERP |
| 143 | **Mejora Continua** | 0d → 10d |  |
| 144 | Monitoreo del Sistema y Acompañamiento ETAPA1 |  | resources none → Administrador de Contrato - Cliente; Funcionarios Técnicos - Cliente; Líder Funcional - Usuario Experto - Cliente; Especialista Base de Datos PlanERP; Líder del Proyecto/Desarrollo PlanERP; Consultor Especialista en Procesos de GADs PlanERP |
| 145 | Ajustes y Configuraciones finales al Software acorde a necesidades Entidad |  | resources none → Administrador de Contrato - Cliente; Funcionarios Técnicos - Cliente; Líder Funcional - Usuario Experto - Cliente; Especialista Base de Datos PlanERP; Líder del Proyecto/Desarrollo PlanERP; Consultor Especialista en Procesos de GADs PlanERP |
| 146 | **Cierre de la ETAPA 5** | 0d → 0.29d |  |
| 147 | Reunión de Cierre de la ETAPA 5 |  | resources none → Administrador de Contrato - Cliente; Líder Funcional - Usuario Experto - Cliente; Funcionarios Técnicos - Cliente; Gerente de Proyecto PlanERP; Líder del Proyecto/Desarrollo PlanERP; Analista de Calidad PlanERP |
| 149 | **ETAPA 6: Estabilización, Apoyo Emisión 2019 y Desarrollo de funcionalidades no establecidas en el Alcance Contractual** | 0d → 57.29d |  |
| 157 | **Cierre de la FASE 1** | 0d → 0.29d |  |
| 158 | Reunión de Cierre de la FASE 1 |  | resources none → Administrador de Contrato - Cliente; Líder Funcional - Usuario Experto - Cliente; Funcionarios Técnicos - Cliente; Gerente de Proyecto PlanERP; Líder del Proyecto/Desarrollo PlanERP; Analista de Calidad PlanERP |
| 160 | **FASE 2: Implementación de Módulos de Planificación de Recursos Institucionales - PRI** | 0d → 88.29d |  |
| 161 | **ETAPA 1: Instalación del SIIM - Módulos PRI** | 0d → 4.14d |  |
| 162 | **Entrega e Instalación del Software** | 0d → 3.14d |  |
| 163 | **Instalar SIIM en Servidor** | 0d → 2.86d | resources none → Funcionarios Técnicos - Cliente |
| 164 | **Instalar Módulos PRI** | 0d → 2.86d | resources none → Funcionarios Técnicos - Cliente; Desarrollador PlanERP; Líder del Proyecto/Desarrollo PlanERP |
| 175 | Entrega de Software |  | resources none → Gerente de Proyecto PlanERP; Administrador de Contrato - Cliente |
| 176 | Revisar la ETAPA del Proyecto |  | resources none → Administrador de Contrato - Cliente; Gerente de Proyecto PlanERP; Analista de Calidad PlanERP |
| 178 | **ETAPA 2: Levantamiento de Características Institucionales - Módulos PRI** | 0d → 8.57d |  |
| 179 | **Actividades de Gestión del Proyecto** | 0d → 0.57d |  |
| 180 | Revisión del Plan del Proyecto |  | resources none → Administrador de Contrato - Cliente; Gerente de Proyecto PlanERP |
| 181 | Programar talleres de requerimientos de Entidad |  | resources none → Administrador de Contrato - Cliente; Gerente de Proyecto PlanERP |
| 182 | **Sesiones de Requerimientos del Entidad** | 0d → 6d |  |
| 183 | Conducir Sesiones de Requerimientos |  | resources none → Funcionarios Técnicos - Cliente; Analista Procesos PlanERP; Consultor Especialista en Procesos de GADs PlanERP |
| 184 | Crear Documento de Características del Entidad |  | resources none → Analista Procesos PlanERP; Funcionarios Técnicos - Cliente; Consultor Especialista en Procesos de GADs PlanERP |
| 185 | **Revisar el Documento de Características del Entidad** | 0d → 1d |  |
| 186 | Revisar el Documento de Características del Entidad |  | resources none → Administrador de Contrato - Cliente; Gerente de Proyecto PlanERP; Analista de Calidad PlanERP; Consultor Especialista en Procesos de GADs PlanERP; Analista Procesos PlanERP |
| 187 | Revisar el Plan del Proyecto |  | resources none → Administrador de Contrato - Cliente; Gerente de Proyecto PlanERP |
| 188 | Revisar la ETAPA del Proyecto |  | resources none → Administrador de Contrato - Cliente; Gerente de Proyecto PlanERP; Líder del Proyecto/Desarrollo PlanERP; Analista de Calidad PlanERP |
| 190 | **ETAPA 3: Migración de Datos, Configuración y Pruebas de Operación de Módulos - Módulos PRI** | 0d → 33.71d |  |
| 191 | **Gestión General del Proyecto** | 0d → 1.57d |  |
| 192 | Planificar cambio Organizacional |  | resources none → Administrador de Contrato - Cliente; Gerente de Proyecto PlanERP; Líder del Proyecto/Desarrollo PlanERP |
| 193 | Planificar Entrenamiento a Usuarios Finales |  | resources none → Administrador de Contrato - Cliente; Gerente de Proyecto PlanERP; Líder del Proyecto/Desarrollo PlanERP |
| 194 | Definir y Preparar la Migración de Datos |  | resources none → Funcionarios Técnicos - Cliente; Líder del Proyecto/Desarrollo PlanERP; Especialista Base de Datos PlanERP |
| 195 | **Configuración del Sistema en Producción** | 0d → 19.57d |  |
| 196 | Instalar el SIIM en Producción |  | resources none → Funcionarios Técnicos - Cliente; Analista Procesos PlanERP; Desarrollador PlanERP; Líder del Proyecto/Desarrollo PlanERP; Especialista Base de Datos PlanERP |
| 197 | Configurar Inicialización del Sistema |  | resources none → Funcionarios Técnicos - Cliente; Analista Procesos PlanERP; Desarrollador PlanERP; Líder del Proyecto/Desarrollo PlanERP; Especialista Base de Datos PlanERP |
| 198 | Realizar la Migración de Datos |  | resources none → Funcionarios Técnicos - Cliente; Analista Procesos PlanERP; Desarrollador PlanERP; Líder del Proyecto/Desarrollo PlanERP; Especialista Base de Datos PlanERP |
| 199 | Desarrollar Adaptaciones al Software |  | resources none → Funcionarios Técnicos - Cliente; Analista Procesos PlanERP; Desarrollador PlanERP; Líder del Proyecto/Desarrollo PlanERP; Especialista Base de Datos PlanERP |
| 200 | Configuración del Sistema en base al Documento de Características del Entidad |  | resources none → Funcionarios Técnicos - Cliente; Analista Procesos PlanERP; Desarrollador PlanERP; Líder del Proyecto/Desarrollo PlanERP; Especialista Base de Datos PlanERP |
| 201 | Configurar Interfaces |  | resources none → Funcionarios Técnicos - Cliente; Analista Procesos PlanERP; Desarrollador PlanERP; Líder del Proyecto/Desarrollo PlanERP; Especialista Base de Datos PlanERP |
| 202 | Configurar Usuarios y Autorizaciones |  | resources none → Funcionarios Técnicos - Cliente; Analista Procesos PlanERP; Desarrollador PlanERP; Líder del Proyecto/Desarrollo PlanERP; Especialista Base de Datos PlanERP |
| 203 | **Gestión del Cambio Organizacional** | 0d → 0.29d |  |
| 204 | Conducir la comunicación de la Gestión de Cambios (si es aplicable) |  | resources none → Administrador de Contrato - Cliente; Líder Funcional - Usuario Experto - Cliente; Gerente de Proyecto PlanERP; Consultor Especialista en Procesos de GADs PlanERP |
| 205 | **Pruebas de validación del Sistema** | 0d → 4.57d |  |
| 206 | Mantener la Lista Maestra de Procesos de Entidad |  | resources none → Líder Funcional - Usuario Experto - Cliente; Gerente de Proyecto PlanERP; Líder del Proyecto/Desarrollo PlanERP; Analista Procesos PlanERP; Consultor Especialista en Procesos de GADs PlanERP |
| 207 | **Conducir Talleres de Validación** | 0d → 4d | resources none → Líder Funcional - Usuario Experto - Cliente; Analista Procesos PlanERP; Analista de Calidad PlanERP; Consultor Especialista en Procesos de GADs PlanERP |
| 218 | **Pruebas de aceptacion del Sistema** | 0d → 5.43d |  |
| 219 | Definir casos de prueba y alcance |  | resources none → Líder Funcional - Usuario Experto - Cliente; Líder del Proyecto/Desarrollo PlanERP; Analista de Calidad PlanERP; Funcionarios Técnicos - Cliente |
| 220 | Preparar ambiente de pruebas |  | resources none → Funcionarios Técnicos - Cliente; Líder Funcional - Usuario Experto - Cliente; Líder del Proyecto/Desarrollo PlanERP; Analista de Calidad PlanERP |
| 221 | **Ejecutar el plan de pruebas** | 0d → 4d | resources none → Líder Funcional - Usuario Experto - Cliente; Líder del Proyecto/Desarrollo PlanERP; Analista de Calidad PlanERP; Funcionarios Técnicos - Cliente; Consultor Especialista en Procesos de GADs PlanERP |
| 232 | Revisar los resultados de las pruebas y necesidades de cambios |  | resources none → Administrador de Contrato - Cliente; Gerente de Proyecto PlanERP; Analista de Calidad PlanERP; Consultor Especialista en Procesos de GADs PlanERP |
| 233 | **Planificar Salida a Producción y Soporte** | 0d → 1.29d |  |
| 234 | Definir Plan de Salida a Producción |  | resources none → Administrador de Contrato - Cliente; Líder Funcional - Usuario Experto - Cliente; Gerente de Proyecto PlanERP; Líder del Proyecto/Desarrollo PlanERP |
| 235 | Planificar Estrategia de Soporte |  | resources none → Administrador de Contrato - Cliente; Líder Funcional - Usuario Experto - Cliente; Gerente de Proyecto PlanERP; Líder del Proyecto/Desarrollo PlanERP |
| 236 | Planificar Administración del Sistema |  | resources none → Administrador de Contrato - Cliente; Líder Funcional - Usuario Experto - Cliente; Gerente de Proyecto PlanERP; Líder del Proyecto/Desarrollo PlanERP |
| 237 | Revisar la ETAPA del Proyecto |  | resources none → Administrador de Contrato - Cliente; Gerente de Proyecto PlanERP; Líder del Proyecto/Desarrollo PlanERP; Analista de Calidad PlanERP |
| 239 | **ETAPA 4: Preparación Final previo Despliegue en Producción - Módulos PRI** | 0d → 11.43d |  |
| 240 | **Gestión General del Proyecto** | 0d → 1.14d |  |
| 241 | Confirmar el Plan de Entrenamiento |  | resources none → Administrador de Contrato - Cliente; Funcionarios Técnicos - Cliente; Gerente de Proyecto PlanERP; Líder del Proyecto/Desarrollo PlanERP |
| 242 | Finalizar plan de Salida a Producción |  | resources none → Administrador de Contrato - Cliente; Funcionarios Técnicos - Cliente; Gerente de Proyecto PlanERP; Líder del Proyecto/Desarrollo PlanERP; Analista de Calidad PlanERP |
| 243 | **Entrenamiento** | 0d → 6d |  |
| 244 | **Entrenamiento de Usuarios Funcionales y Certificación de Procesos** | 0d → 4d | resources none → Líder Funcional - Usuario Experto - Cliente; Usuarios Finales - Cliente; Funcionarios Técnicos - Cliente; Analista Procesos PlanERP; Desarrollador PlanERP; Consultor Especialista en Procesos de GADs PlanERP |
| 255 | Entrenamiento de Usuario Técnicos |  | resources none → Funcionarios Técnicos - Cliente; Desarrollador PlanERP; Especialista Base de Datos PlanERP; Líder del Proyecto/Desarrollo PlanERP |
| 256 | **Preparación del Sistema** | 0d → 1.43d |  |
| 257 | Completar la Administración del Sistema |  | resources none → Funcionarios Técnicos - Cliente; Desarrollador PlanERP; Analista Procesos PlanERP |
| 258 | Comprobación de la Puesta a Producción |  | resources none → Funcionarios Técnicos - Cliente; Administrador de Contrato - Cliente; Analista de Calidad PlanERP; Líder del Proyecto/Desarrollo PlanERP |
| 259 | **Transición** | 0d → 2.57d |  |
| 260 | Finalizar Procesamiento de Sistemas Legados |  | resources none → Administrador de Contrato - Cliente; Líder Funcional - Usuario Experto - Cliente; Desarrollador PlanERP; Líder del Proyecto/Desarrollo PlanERP; Especialista Base de Datos PlanERP |

| ID | Task | Duration | Other |
| --- | --- | --- | --- |
| 261 | Realizar la Salida a Producción - Carga Inicial y Configuración Inicial |  | resources none → Administrador de Contrato - Cliente; Líder Funcional - Usuario Experto - Cliente; Desarrollador PlanERP; Líder del Proyecto/Desarrollo PlanERP; Especialista Base de Datos PlanERP |
| 262 | Revisar la ETAPA del Proyecto |  | resources none → Administrador de Contrato - Cliente; Gerente de Proyecto PlanERP; Líder del Proyecto/Desarrollo PlanERP; Analista de Calidad PlanERP |
| 264 | **ETAPA 5: Despliegue en Producción y Soporte Técnico - Módulos PRI** | 0d → 30.43d |  |
| 265 | **Soporte en Producción** | 0d → 15d |  |
| 266 | Soporte durante la Salida a Producción |  | resources none → Funcionarios Técnicos - Cliente; Desarrollador PlanERP; Analista Procesos PlanERP; Especialista Base de Datos PlanERP; Consultor Especialista en Procesos de GADs PlanERP |
| 267 | Resolver incidentes críticos |  | resources none → Funcionarios Técnicos - Cliente; Desarrollador PlanERP; Analista Procesos PlanERP; Especialista Base de Datos PlanERP; Consultor Especialista en Procesos de GADs PlanERP |
| 268 | Entregar el soporte y Administración al cliente |  | resources none → Funcionarios Técnicos - Cliente; Desarrollador PlanERP; Analista Procesos PlanERP; Especialista Base de Datos PlanERP; Consultor Especialista en Procesos de GADs PlanERP |
| 269 | **Mejora Continua** | 0d → 15d |  |
| 270 | Monitoreo del Sistema y Acompañamiento ETAPA2 |  | resources none → Administrador de Contrato - Cliente; Funcionarios Técnicos - Cliente; Líder Funcional - Usuario Experto - Cliente; Especialista Base de Datos PlanERP; Líder del Proyecto/Desarrollo PlanERP; Consultor Especialista en Procesos de GADs PlanERP |
| 271 | Ajustes y Configuraciones finales al Software acorde a necesidades Entidad |  | resources none → Administrador de Contrato - Cliente; Funcionarios Técnicos - Cliente; Líder Funcional - Usuario Experto - Cliente; Especialista Base de Datos PlanERP; Líder del Proyecto/Desarrollo PlanERP; Consultor Especialista en Procesos de GADs PlanERP |
| 272 | **Cierre de la FASE 2** | 0d → 0.43d |  |
| 273 | Reunión de Cierre de la FASE 2 |  | resources none → Administrador de Contrato - Cliente; Líder Funcional - Usuario Experto - Cliente; Funcionarios Técnicos - Cliente; Gerente de Proyecto PlanERP; Líder del Proyecto/Desarrollo PlanERP; Analista de Calidad PlanERP |
| 275 | **FASE 3: Implementación de Módulos de Planificación de Recursos Institucionales - PRI** | 0d → 76.86d |  |
| 276 | **ETAPA 1: Instalación del SIIM - Módulos PRI** | 0d → 4.29d |  |
| 277 | **Entrega e Instalación del Software** | 0d → 3.29d |  |
| 278 | **Instalar SIIM en Servidor** | 0d → 3d | resources none → Funcionarios Técnicos - Cliente |
| 279 | Instalar Módulos PRI |  | resources none → Funcionarios Técnicos - Cliente; Desarrollador PlanERP; Líder del Proyecto/Desarrollo PlanERP |
| 280 | Entrega de Software |  | resources none → Gerente de Proyecto PlanERP; Administrador de Contrato - Cliente |
| 281 | Revisar la ETAPA del Proyecto |  | resources none → Administrador de Contrato - Cliente; Gerente de Proyecto PlanERP; Analista de Calidad PlanERP |
| 283 | **ETAPA 2: Levantamiento de Características Institucionales - Módulos PRI** | 0d → 8.57d |  |
| 284 | **Actividades de Gestión del Proyecto** | 0d → 0.57d |  |
| 285 | Revisión del Plan del Proyecto |  | resources none → Administrador de Contrato - Cliente; Gerente de Proyecto PlanERP |
| 286 | Programar talleres de requerimientos de Entidad |  | resources none → Administrador de Contrato - Cliente; Gerente de Proyecto PlanERP |
| 287 | **Sesiones de Requerimientos del Entidad** | 0d → 6d |  |
| 288 | Conducir Sesiones de Requerimientos |  | resources none → Funcionarios Técnicos - Cliente; Analista Procesos PlanERP; Consultor Especialista en Procesos de GADs PlanERP |
| 289 | Crear Documento de Características del Entidad |  | resources none → Analista Procesos PlanERP; Funcionarios Técnicos - Cliente; Consultor Especialista en Procesos de GADs PlanERP |
| 290 | **Revisar el Documento de Características del Entidad** | 0d → 1d |  |
| 291 | Revisar el Documento de Características del Entidad |  | resources none → Administrador de Contrato - Cliente; Gerente de Proyecto PlanERP; Analista de Calidad PlanERP; Consultor Especialista en Procesos de GADs PlanERP; Analista Procesos PlanERP |
| 292 | Revisar el Plan del Proyecto |  | resources none → Administrador de Contrato - Cliente; Gerente de Proyecto PlanERP |
| 293 | Revisar la ETAPA del Proyecto |  | resources none → Administrador de Contrato - Cliente; Gerente de Proyecto PlanERP; Líder del Proyecto/Desarrollo PlanERP; Analista de Calidad PlanERP |
| 295 | **ETAPA 3: Migración de Datos, Configuración y Pruebas de Operación de Módulos - Módulos PRI** | 0d → 33.43d |  |
| 296 | **Gestión General del Proyecto** | 0d → 1.57d |  |
| 297 | Planificar cambio Organizacional |  | resources none → Administrador de Contrato - Cliente; Gerente de Proyecto PlanERP; Líder del Proyecto/Desarrollo PlanERP |
| 298 | Planificar Entrenamiento a Usuarios Finales |  | resources none → Administrador de Contrato - Cliente; Gerente de Proyecto PlanERP; Líder del Proyecto/Desarrollo PlanERP |
| 299 | Definir y Preparar la Migración de Datos |  | resources none → Funcionarios Técnicos - Cliente; Líder del Proyecto/Desarrollo PlanERP; Especialista Base de Datos PlanERP |
| 300 | **Configuración del Sistema en Producción** | 0d → 20.57d |  |
| 301 | Instalar el SIIM en Producción |  | resources none → Funcionarios Técnicos - Cliente; Analista Procesos PlanERP; Desarrollador PlanERP; Líder del Proyecto/Desarrollo PlanERP; Especialista Base de Datos PlanERP |
| 302 | Configurar Inicialización del Sistema |  | resources none → Funcionarios Técnicos - Cliente; Analista Procesos PlanERP; Desarrollador PlanERP; Líder del Proyecto/Desarrollo PlanERP; Especialista Base de Datos PlanERP |
| 303 | Realizar la Migración de Datos |  | resources none → Funcionarios Técnicos - Cliente; Analista Procesos PlanERP; Desarrollador PlanERP; Líder del Proyecto/Desarrollo PlanERP; Especialista Base de Datos PlanERP |
| 304 | Desarrollar Adaptaciones al Software |  | resources none → Funcionarios Técnicos - Cliente; Analista Procesos PlanERP; Desarrollador PlanERP; Líder del Proyecto/Desarrollo PlanERP; Especialista Base de Datos PlanERP |
| 305 | Configuración del Sistema en base al Documento de Características del Entidad |  | resources none → Funcionarios Técnicos - Cliente; Analista Procesos PlanERP; Desarrollador PlanERP; Líder del Proyecto/Desarrollo PlanERP; Especialista Base de Datos PlanERP |
| 306 | Configurar Interfaces |  | resources none → Funcionarios Técnicos - Cliente; Analista Procesos PlanERP; Desarrollador PlanERP; Líder del Proyecto/Desarrollo PlanERP; Especialista Base de Datos PlanERP |
| 307 | Configurar Usuarios y Autorizaciones |  | resources none → Funcionarios Técnicos - Cliente; Analista Procesos PlanERP; Desarrollador PlanERP; Líder del Proyecto/Desarrollo PlanERP; Especialista Base de Datos PlanERP |
| 308 | **Gestión del Cambio Organizacional** | 0d → 2d |  |
| 309 | Conducir la comunicación de la Gestión de Cambios (si es aplicable) |  | resources none → Administrador de Contrato - Cliente; Líder Funcional - Usuario Experto - Cliente; Gerente de Proyecto PlanERP; Consultor Especialista en Procesos de GADs PlanERP |
| 310 | **Pruebas de validación/aceptación del Sistema** | 0d → 2.57d |  |
| 311 | Mantener la Lista Maestra de Procesos de Entidad |  | resources none → Líder Funcional - Usuario Experto - Cliente; Gerente de Proyecto PlanERP; Líder del Proyecto/Desarrollo PlanERP; Analista Procesos PlanERP; Consultor Especialista en Procesos de GADs PlanERP |
| 312 | **Conducir Talleres de Validación** | 0d → 2d | resources none → Líder Funcional - Usuario Experto - Cliente; Analista Procesos PlanERP; Analista de Calidad PlanERP; Consultor Especialista en Procesos de GADs PlanERP |
| 320 | **Pruebas de aceptacion del Sistema** | 0d → 4.43d |  |
| 321 | Definir casos de prueba y alcance |  | resources none → Líder Funcional - Usuario Experto - Cliente; Líder del Proyecto/Desarrollo PlanERP; Analista de Calidad PlanERP; Funcionarios Técnicos - Cliente |
| 322 | Preparar ambiente de pruebas |  | resources none → Funcionarios Técnicos - Cliente; Líder Funcional - Usuario Experto - Cliente; Líder del Proyecto/Desarrollo PlanERP; Analista de Calidad PlanERP |
| 323 | **Ejecutar el plan de pruebas** | 0d → 2d | resources none → Líder Funcional - Usuario Experto - Cliente; Líder del Proyecto/Desarrollo PlanERP; Analista de Calidad PlanERP; Funcionarios Técnicos - Cliente; Consultor Especialista en Procesos de GADs PlanERP |
| 331 | Revisar los resultados de las pruebas y necesidades de cambios |  | resources none → Administrador de Contrato - Cliente; Gerente de Proyecto PlanERP; Analista de Calidad PlanERP; Consultor Especialista en Procesos de GADs PlanERP |
| 332 | **Planificar Salida a Producción y Soporte** | 0d → 1.29d |  |
| 333 | Definir Plan de Salida a Producción |  | resources none → Administrador de Contrato - Cliente; Líder Funcional - Usuario Experto - Cliente; Gerente de Proyecto PlanERP; Líder del Proyecto/Desarrollo PlanERP |
| 334 | Planificar Estrategia de Soporte |  | resources none → Administrador de Contrato - Cliente; Líder Funcional - Usuario Experto - Cliente; Gerente de Proyecto PlanERP; Líder del Proyecto/Desarrollo PlanERP |
| 335 | Planificar Administración del Sistema |  | resources none → Administrador de Contrato - Cliente; Líder Funcional - Usuario Experto - Cliente; Gerente de Proyecto PlanERP; Líder del Proyecto/Desarrollo PlanERP |
| 336 | Revisar la ETAPA del Proyecto |  | resources none → Administrador de Contrato - Cliente; Gerente de Proyecto PlanERP; Líder del Proyecto/Desarrollo PlanERP; Analista de Calidad PlanERP |
| 338 | **ETAPA 4: Preparación Final previo Despliegue en Producción - Módulos PRI** | 0d → 12.43d |  |
| 339 | **Gestión General del Proyecto** | 0d → 1.14d |  |
| 340 | Confirmar el Plan de Entrenamiento |  | resources none → Administrador de Contrato - Cliente; Funcionarios Técnicos - Cliente; Gerente de Proyecto PlanERP; Líder del Proyecto/Desarrollo PlanERP |
| 341 | Finalizar plan de Salida a Producción |  | resources none → Administrador de Contrato - Cliente; Funcionarios Técnicos - Cliente; Gerente de Proyecto PlanERP; Líder del Proyecto/Desarrollo PlanERP; Analista de Calidad PlanERP |
| 342 | **Entrenamiento** | 0d → 7d |  |
| 343 | **Entrenamiento de Usuarios Funcionales y Certificación de Procesos** | 0d → 4d | resources none → Líder Funcional - Usuario Experto - Cliente; Usuarios Finales - Cliente; Funcionarios Técnicos - Cliente; Analista Procesos PlanERP; Desarrollador PlanERP; Consultor Especialista en Procesos de GADs PlanERP |
| 351 | Entrenamiento de Usuario Técnicos |  | resources none → Funcionarios Técnicos - Cliente; Desarrollador PlanERP; Especialista Base de Datos PlanERP; Líder del Proyecto/Desarrollo PlanERP |
| 352 | **Preparación del Sistema** | 0d → 1.43d |  |
| 353 | Completar la Administración del Sistema |  | resources none → Funcionarios Técnicos - Cliente; Desarrollador PlanERP; Analista Procesos PlanERP |
| 354 | Comprobación de la Puesta a Producción |  | resources none → Funcionarios Técnicos - Cliente; Administrador de Contrato - Cliente; Analista de Calidad PlanERP; Líder del Proyecto/Desarrollo PlanERP |
| 355 | **Transición** | 0d → 2.57d |  |
| 356 | Finalizar Procesamiento de Sistemas Legados |  | resources none → Administrador de Contrato - Cliente; Líder Funcional - Usuario Experto - Cliente; Desarrollador PlanERP; Líder del Proyecto/Desarrollo PlanERP; Especialista Base de Datos PlanERP |

| ID | Task | Duration | Other |
| --- | --- | --- | --- |
| 357 | Realizar la Salida a Producción - Carga Inicial y Configuración Inicial |  | resources none → Administrador de Contrato - Cliente; Líder Funcional - Usuario Experto - Cliente; Desarrollador PlanERP; Líder del Proyecto/Desarrollo PlanERP; Especialista Base de Datos PlanERP |
| 358 | Revisar la ETAPA del Proyecto |  | resources none → Administrador de Contrato - Cliente; Gerente de Proyecto PlanERP; Líder del Proyecto/Desarrollo PlanERP; Analista de Calidad PlanERP |
| 360 | **ETAPA 5: Despliegue en Producción y Soporte Técnico - Módulos PRI** | 0d → 15.43d |  |
| 361 | **Soporte en Producción** | 0d → 10d |  |
| 362 | Soporte durante la Salida a Producción |  | resources none → Funcionarios Técnicos - Cliente; Desarrollador PlanERP; Analista Procesos PlanERP; Especialista Base de Datos PlanERP; Consultor Especialista en Procesos de GADs PlanERP |
| 363 | Resolver incidentes críticos |  | resources none → Funcionarios Técnicos - Cliente; Desarrollador PlanERP; Analista Procesos PlanERP; Especialista Base de Datos PlanERP; Consultor Especialista en Procesos de GADs PlanERP |
| 364 | Entregar el soporte y Administración al cliente |  | resources none → Funcionarios Técnicos - Cliente; Desarrollador PlanERP; Analista Procesos PlanERP; Especialista Base de Datos PlanERP; Consultor Especialista en Procesos de GADs PlanERP |
| 365 | **Mejora Continua** | 0d → 15d |  |
| 366 | Monitoreo del Sistema y Acompañamiento |  | resources none → Administrador de Contrato - Cliente; Funcionarios Técnicos - Cliente; Líder Funcional - Usuario Experto - Cliente; Especialista Base de Datos PlanERP; Líder del Proyecto/Desarrollo PlanERP; Consultor Especialista en Procesos de GADs PlanERP |
| 367 | Ajustes y Configuraciones finales al Software acorde a necesidades Entidad |  | resources none → Administrador de Contrato - Cliente; Funcionarios Técnicos - Cliente; Líder Funcional - Usuario Experto - Cliente; Especialista Base de Datos PlanERP; Líder del Proyecto/Desarrollo PlanERP; Consultor Especialista en Procesos de GADs PlanERP |
| 368 | **Cierre de la FASE 3 y Proyecto** | 0d → 0.43d |  |
| 369 | Reunión de Cierre de la FASE 3 y Proyecto |  | resources none → Administrador de Contrato - Cliente; Líder Funcional - Usuario Experto - Cliente; Funcionarios Técnicos - Cliente; Gerente de Proyecto PlanERP; Líder del Proyecto/Desarrollo PlanERP; Analista de Calidad PlanERP |

## Version 4 (saved 2019-08-30, file archivo.xml)

Last finish none → 2019-07-10. Complete tasks 0 → 183.

Added:

| ID | Task | Duration | Start | Finish |
| --- | --- | --- | --- | --- |
| 1 | 20190122- Plan del Proyecto de Implementacion del SIIM Daule | 294.29d | 2018-07-16 08:30 A | 2019-07-10 13:30 |

Changed:

| ID | Task | Start | Finish | Complete | Other |
| --- | --- | --- | --- | --- | --- |
| 2 | **Programa de Implementación SIIM** | none → 2018-07-16 08:30 A | none → 2019-07-10 13:30 | 0% → 82% |  |
| 3 | **FASE 1: Implementación de Módulos de Servicio al Cliente (SC) y Atención al Ciudadano (AC)** | none → 2018-07-16 08:30 A | none → 2019-01-25 14:30 A | 0% → 100% |  |
| 4 | **ETAPA 1: Preparación del Proyecto e Instalación del SIIM - Módulos SC y AC** | none → 2018-07-16 08:30 A | none → 2018-07-25 16:30 A | 0% → 100% |  |
| 5 | **Actividades de Gestión del Proyecto** | none → 2018-07-16 08:30 A | none → 2018-07-18 08:30 A | 0% → 100% |  |
| 6 | Revisión de Información de Contrato y Anexos | none → 2018-07-16 08:30 A | none → 2018-07-16 15:30 A | 0% → 100% | constraint none → start no earlier than 2018-07-16 08:30; resources Gerente de Proyecto PlanERP; Líder del Proyecto/Desarrollo PlanERP → none |
| 7 | Definir la Organización del Proyecto | none → 2018-07-16 15:30 A | none → 2018-07-17 10:30 A | 0% → 100% | resources Gerente de Proyecto PlanERP; Líder del Proyecto/Desarrollo PlanERP → none |
| 8 | Kick-off Interno del Proyecto | none → 2018-07-17 10:30 A | none → 2018-07-18 08:30 A | 0% → 100% | resources Gerente de Proyecto PlanERP; Líder del Proyecto/Desarrollo PlanERP → none |
| 9 | **Preparación del kick-off del Proyecto** | none → 2018-07-18 08:30 A | none → 2018-07-19 08:30 A | 0% → 100% |  |
| 10 | Comunicación con el Cliente | none → 2018-07-18 08:30 A | none → 2018-07-18 13:30 A | 0% → 100% | resources Administrador de Contrato - Cliente; Gerente de Proyecto PlanERP → none |
| 11 | Crear la presentación del kick-off | none → 2018-07-18 13:30 A | none → 2018-07-19 08:30 A | 0% → 100% | resources Gerente de Proyecto PlanERP; Líder del Proyecto/Desarrollo PlanERP → none |
| 12 | **Reunión de Kick-off** | none → 2018-07-19 08:30 A | none → 2018-07-19 10:30 A | 0% → 100% |  |
| 13 | Realizar la reunión de kick-off | none → 2018-07-19 08:30 A | none → 2018-07-19 10:30 A | 0% → 100% | resources Administrador de Contrato - Cliente; Líder Funcional - Usuario Experto - Cliente; Gerente de Proyecto PlanERP; Líder Técnico - Cliente; Líder del Proyecto/Desarrollo PlanERP → none |
| 14 | **Entrega e Instalación del Software** | none → 2018-07-19 10:30 A | none → 2018-07-25 08:30 A | 0% → 100% |  |
| 15 | **Instalar SIIM en Servidor** | none → 2018-07-19 10:30 A | none → 2018-07-24 15:30 A | 0% → 100% | resources Funcionarios Técnicos - Cliente → none |
| 16 | 1 Dirección de Desarrollo Territorial (No incluye Catastro) | none → 2018-07-19 10:30 A | none → 2018-07-19 13:30 A | 0% → 100% |  |
| 17 | 4 Dirección de Justicia y Vigilancia | none → 2018-07-19 13:30 A | none → 2018-07-19 15:30 A | 0% → 100% |  |
| 18 | 5 Dirección de Desarrollo Humano y Social | none → 2018-07-19 15:30 A | none → 2018-07-20 08:30 A | 0% → 100% |  |
| 19 | 8.3 Rentas | none → 2018-07-20 08:30 A | none → 2018-07-20 10:30 A | 0% → 100% |  |
| 20 | 8.4 Tesorería | none → 2018-07-20 10:30 A | none → 2018-07-20 13:30 A | 0% → 100% |  |
| 21 | 9.1 Mercados | none → 2018-07-20 13:30 A | none → 2018-07-20 14:30 A | 0% → 100% |  |
| 22 | 9.2 Cementerio | none → 2018-07-20 14:30 A | none → 2018-07-20 15:30 A | 0% → 100% |  |
| 23 | 9.3 Camal | none → 2018-07-20 15:30 A | none → 2018-07-20 16:30 A | 0% → 100% |  |
| 24 | 10 Registro de la Propiedad y Mercantil | none → 2018-07-20 16:30 A | none → 2018-07-23 09:30 A | 0% → 100% |  |
| 25 | 11 Administración de bomberos | none → 2018-07-23 09:30 A | none → 2018-07-23 10:30 A | 0% → 100% |  |
| 26 | 12 CRM para ciudadanos. Ventanilla Única | none → 2018-07-23 10:30 A | none → 2018-07-23 13:30 A | 0% → 100% |  |
| 27 | 15.1 BI Desarrollo Territorial | none → 2018-07-23 13:30 A | none → 2018-07-23 15:30 A | 0% → 100% |  |
| 28 | 15.5 BI Obras Públicas Municipales | none → 2018-07-23 15:30 A | none → 2018-07-24 08:30 A | 0% → 100% |  |
| 29 | 15.7 BI Registro de la Propiedad y Mercantil | none → 2018-07-24 08:30 A | none → 2018-07-24 10:30 A | 0% → 100% |  |
| 30 | 16.1 Consultas Portal Web | none → 2018-07-24 10:30 A | none → 2018-07-24 13:30 A | 0% → 100% |  |
| 31 | 16.2 Aplicación para móviles (APP) | none → 2018-07-24 13:30 A | none → 2018-07-24 15:30 A | 0% → 100% |  |
| 32 | Entrega de Software | none → 2018-07-24 15:30 A | none → 2018-07-25 08:30 A | 0% → 100% | resources Gerente de Proyecto PlanERP; Administrador de Contrato - Cliente → none |
| 33 | Revisar la ETAPA del Proyecto | none → 2018-07-25 08:30 A | none → 2018-07-25 16:30 A | 0% → 100% | resources Administrador de Contrato - Cliente; Gerente de Proyecto PlanERP; Analista de Calidad PlanERP → none |
| 34 | HITO: FINALIZACION ETAPA 1 | none → 2018-07-25 16:30 A | none → 2018-07-25 16:30 A | 0% → 100% |  |
| 35 | **ETAPA 2: Levantamiento de Características Institucionales - Módulos SC y AC** | none → 2018-07-25 16:30 A | none → 2018-08-13 15:30 A | 0% → 100% |  |
| 36 | **Actividades de Gestión del Proyecto** | none → 2018-07-25 16:30 A | none → 2018-07-26 16:30 A | 0% → 100% |  |
| 37 | Revisión del Plan del Proyecto | none → 2018-07-25 16:30 A | none → 2018-07-26 11:30 A | 0% → 100% | resources Administrador de Contrato - Cliente; Gerente de Proyecto PlanERP → none |
| 38 | Programar talleres de requerimientos de Entidad | none → 2018-07-26 11:30 A | none → 2018-07-26 16:30 A | 0% → 100% | resources Administrador de Contrato - Cliente; Gerente de Proyecto PlanERP → none |
| 39 | **Sesiones de Requerimientos del Entidad** | none → 2018-07-26 16:30 A | none → 2018-08-10 11:30 A | 0% → 100% |  |
| 40 | Conducir Sesiones de Requerimientos | none → 2018-07-26 16:30 A | none → 2018-08-08 14:30 A | 0% → 100% | resources Funcionarios Técnicos - Cliente; Analista Procesos PlanERP; Consultor Especialista en Procesos de GADs PlanERP → none |
| 41 | Crear Documento de Características del Entidad | none → 2018-08-08 14:30 A | none → 2018-08-10 11:30 A | 0% → 100% | resources Analista Procesos PlanERP; Funcionarios Técnicos - Cliente; Consultor Especialista en Procesos de GADs PlanERP → none |
| 42 | **Revisar el Documento de Características del Entidad** | none → 2018-08-10 11:30 A | none → 2018-08-10 16:30 A | 0% → 100% |  |
| 43 | Revisar el Documento de Características del Entidad | none → 2018-08-10 11:30 A | none → 2018-08-10 14:30 A | 0% → 100% | resources Administrador de Contrato - Cliente; Gerente de Proyecto PlanERP; Analista de Calidad PlanERP; Consultor Especialista en Procesos de GADs PlanERP; Analista Procesos PlanERP → none |
| 44 | Revisar el Plan del Proyecto | none → 2018-08-10 14:30 A | none → 2018-08-10 16:30 A | 0% → 100% | resources Administrador de Contrato - Cliente; Gerente de Proyecto PlanERP → none |
| 45 | Revisar la ETAPA del Proyecto | none → 2018-08-10 16:30 A | none → 2018-08-13 15:30 A | 0% → 100% | resources Administrador de Contrato - Cliente; Gerente de Proyecto PlanERP; Líder del Proyecto/Desarrollo PlanERP; Analista de Calidad PlanERP → none |
| 46 | HITO: FINALIZACION ETAPA 2 | none → 2018-08-13 15:30 A | none → 2018-08-13 15:30 A | 0% → 100% |  |
| 47 | **ETAPA 3: Migración de Datos, Configuración y Pruebas de Operación - Módulos SC y AC** | none → 2018-08-13 15:30 A | none → 2018-10-22 10:30 A | 0% → 100% |  |
| 48 | **Gestión General del Proyecto** | none → 2018-08-13 15:30 A | none → 2018-08-14 10:30 A | 0% → 100% |  |
| 49 | Planificar cambio Organizacional | none → 2018-08-13 15:30 A | none → 2018-08-14 08:30 A | 0% → 100% | resources Administrador de Contrato - Cliente; Gerente de Proyecto PlanERP; Líder del Proyecto/Desarrollo PlanERP → none |
| 50 | Planificar Entrenamiento a Usuarios Finales | none → 2018-08-14 08:30 A | none → 2018-08-14 10:30 A | 0% → 100% | resources Administrador de Contrato - Cliente; Gerente de Proyecto PlanERP; Líder del Proyecto/Desarrollo PlanERP → none |
| 51 | Definir y Preparar la Migración de Datos | none → 2018-08-14 08:30 A | none → 2018-08-14 10:30 A | 0% → 100% | resources Funcionarios Técnicos - Cliente; Líder del Proyecto/Desarrollo PlanERP; Especialista Base de Datos PlanERP → none |
| 52 | **Configuración del Sistema en Producción** | none → 2018-08-14 10:30 A | none → 2018-10-22 10:30 A | 0% → 100% |  |
| 53 | Instalar el SIIM en Producción | none → 2018-08-14 10:30 A | none → 2018-08-15 09:30 A | 0% → 100% | resources Funcionarios Técnicos - Cliente; Analista Procesos PlanERP; Desarrollador PlanERP; Líder del Proyecto/Desarrollo PlanERP; Especialista Base de Datos PlanERP → none |
| 54 | Configurar Inicialización del Sistema | none → 2018-08-15 09:30 A | none → 2018-08-16 08:30 A | 0% → 100% | resources Funcionarios Técnicos - Cliente; Analista Procesos PlanERP; Desarrollador PlanERP; Líder del Proyecto/Desarrollo PlanERP; Especialista Base de Datos PlanERP → none |
| 55 | Realizar la Migración de Datos | none → 2018-08-16 08:30 A | none → 2018-10-22 10:30 A | 0% → 100% | resources Funcionarios Técnicos - Cliente; Analista Procesos PlanERP; Desarrollador PlanERP; Líder del Proyecto/Desarrollo PlanERP; Especialista Base de Datos PlanERP → none |
| 56 | Desarrollar Adaptaciones al Software | none → 2018-08-16 08:30 A | none → 2018-08-28 15:30 A | 0% → 100% | resources Funcionarios Técnicos - Cliente; Analista Procesos PlanERP; Desarrollador PlanERP; Líder del Proyecto/Desarrollo PlanERP; Especialista Base de Datos PlanERP → none |
| 57 | Configuración del Sistema en base al Documento de Características del Entidad | none → 2018-08-28 15:30 A | none → 2018-08-31 11:30 A | 0% → 100% | resources Funcionarios Técnicos - Cliente; Analista Procesos PlanERP; Desarrollador PlanERP; Líder del Proyecto/Desarrollo PlanERP; Especialista Base de Datos PlanERP → none |
| 58 | Configurar Interfaces | none → 2018-08-31 11:30 A | none → 2018-09-03 10:30 A | 0% → 100% | resources Funcionarios Técnicos - Cliente; Analista Procesos PlanERP; Desarrollador PlanERP; Líder del Proyecto/Desarrollo PlanERP; Especialista Base de Datos PlanERP → none |
| 59 | Configurar Usuarios y Autorizaciones | none → 2018-09-03 10:30 A | none → 2018-09-04 09:30 A | 0% → 100% | resources Funcionarios Técnicos - Cliente; Analista Procesos PlanERP; Desarrollador PlanERP; Líder del Proyecto/Desarrollo PlanERP; Especialista Base de Datos PlanERP → none |
| 60 | **Gestión del Cambio Organizacional** | none → 2018-09-04 09:30 A | none → 2018-09-05 08:30 A | 0% → 100% |  |
| 61 | Conducir la comunicación de la Gestión de Cambios (si es aplicable) | none → 2018-09-04 09:30 A | none → 2018-09-05 08:30 A | 0% → 100% | resources Administrador de Contrato - Cliente; Líder Funcional - Usuario Experto - Cliente; Gerente de Proyecto PlanERP; Consultor Especialista en Procesos de GADs PlanERP → none |
| 62 | **Pruebas de validación/aceptación del Sistema** | none → 2018-09-05 08:30 A | none → 2018-09-10 08:30 A | 0% → 100% |  |
| 63 | Mantener la Lista Maestra de Procesos de Entidad | none → 2018-09-05 08:30 A | none → 2018-09-05 10:30 A | 0% → 100% | resources Líder Funcional - Usuario Experto - Cliente; Gerente de Proyecto PlanERP; Líder del Proyecto/Desarrollo PlanERP; Analista Procesos PlanERP; Consultor Especialista en Procesos de GADs PlanERP → none |
| 64 | **Conducir Talleres de Validación** | none → 2018-09-05 10:30 A | none → 2018-09-10 08:30 A | 0% → 100% | resources Líder Funcional - Usuario Experto - Cliente; Analista Procesos PlanERP; Analista de Calidad PlanERP; Consultor Especialista en Procesos de GADs PlanERP → none |
| 65 | 1 Dirección de Desarrollo Territorial (No incluye Catastro) | none → 2018-09-05 10:30 A | none → 2018-09-05 13:30 A | 0% → 100% |  |
| 66 | 4 Dirección de Justicia y Vigilancia | none → 2018-09-05 13:30 A | none → 2018-09-05 15:30 A | 0% → 100% |  |
| 67 | 5 Dirección de Desarrollo Humano y Social | none → 2018-09-05 15:30 A | none → 2018-09-05 16:30 A | 0% → 100% |  |
| 68 | 8.3 Rentas | none → 2018-09-05 16:30 A | none → 2018-09-06 09:30 A | 0% → 100% |  |
| 69 | 8.4 Tesorería | none → 2018-09-06 09:30 A | none → 2018-09-06 11:30 A | 0% → 100% |  |
| 70 | 9.1 Mercados | none → 2018-09-06 11:30 A | none → 2018-09-06 13:30 A | 0% → 100% |  |
| 71 | 9.2 Cementerio | none → 2018-09-06 13:30 A | none → 2018-09-06 14:30 A | 0% → 100% |  |

| ID | Task | Start | Finish | Complete | Other |
| --- | --- | --- | --- | --- | --- |
| 72 | 9.3 Camal | none → 2018-09-06 14:30 A | none → 2018-09-06 15:30 A | 0% → 100% |  |
| 73 | 10 Registro de la Propiedad y Mercantil | none → 2018-09-06 15:30 A | none → 2018-09-07 08:30 A | 0% → 100% |  |
| 74 | 11 Administración de bomberos | none → 2018-09-07 08:30 A | none → 2018-09-07 09:30 A | 0% → 100% |  |
| 75 | 12 CRM para ciudadanos. Ventanilla Única | none → 2018-09-07 09:30 A | none → 2018-09-07 11:30 A | 0% → 100% |  |
| 76 | 15.1 BI Desarrollo Territorial | none → 2018-09-07 11:30 A | none → 2018-09-07 13:30 A | 0% → 100% |  |
| 77 | 15.5 BI Obras Públicas Municipales | none → 2018-09-07 13:30 A | none → 2018-09-07 14:30 A | 0% → 100% |  |
| 78 | 15.7 BI Registro de la Propiedad y Mercantil | none → 2018-09-07 14:30 A | none → 2018-09-07 15:30 A | 0% → 100% |  |
| 79 | 16.1 Consultas Portal Web | none → 2018-09-07 15:30 A | none → 2018-09-07 16:30 A | 0% → 100% |  |
| 80 | 16.2 Aplicación para móviles (APP) | none → 2018-09-07 16:30 A | none → 2018-09-10 08:30 A | 0% → 100% |  |
| 81 | **Pruebas de Aceptacion Sistema** | none → 2018-09-10 08:30 A | none → 2018-09-14 15:30 A | 0% → 100% |  |
| 82 | Definir casos de prueba y alcance | none → 2018-09-10 08:30 A | none → 2018-09-10 10:30 A | 0% → 100% | resources Líder Funcional - Usuario Experto - Cliente; Líder del Proyecto/Desarrollo PlanERP; Analista de Calidad PlanERP; Funcionarios Técnicos - Cliente → none |
| 83 | Preparar ambiente de pruebas | none → 2018-09-10 10:30 A | none → 2018-09-11 09:30 A | 0% → 100% | resources Funcionarios Técnicos - Cliente; Líder Funcional - Usuario Experto - Cliente; Líder del Proyecto/Desarrollo PlanERP; Analista de Calidad PlanERP → none |
| 84 | **Ejecutar el plan de pruebas de Aceptacion del Sistema** | none → 2018-09-11 09:30 A | none → 2018-09-13 16:30 A | 0% → 100% | resources Líder Funcional - Usuario Experto - Cliente; Líder del Proyecto/Desarrollo PlanERP; Analista de Calidad PlanERP; Funcionarios Técnicos - Cliente; Consultor Especialista en Procesos de GADs PlanERP → none |
| 85 | 1 Dirección de Desarrollo Territorial (No incluye Catastro) | none → 2018-09-11 09:30 A | none → 2018-09-11 11:30 A | 0% → 100% |  |
| 86 | 4 Dirección de Justicia y Vigilancia | none → 2018-09-11 11:30 A | none → 2018-09-11 14:30 A | 0% → 100% |  |
| 87 | 5 Dirección de Desarrollo Humano y Social | none → 2018-09-11 14:30 A | none → 2018-09-11 15:30 A | 0% → 100% |  |
| 88 | 8.3 Rentas | none → 2018-09-11 15:30 A | none → 2018-09-12 08:30 A | 0% → 100% |  |
| 89 | 8.4 Tesorería | none → 2018-09-12 08:30 A | none → 2018-09-12 10:30 A | 0% → 100% |  |
| 90 | 9.1 Mercados | none → 2018-09-12 10:30 A | none → 2018-09-12 11:30 A | 0% → 100% |  |
| 91 | 9.2 Cementerio | none → 2018-09-12 11:30 A | none → 2018-09-12 13:30 A | 0% → 100% |  |
| 92 | 9.3 Camal | none → 2018-09-12 13:30 A | none → 2018-09-12 14:30 A | 0% → 100% |  |
| 93 | 10 Registro de la Propiedad y Mercantil | none → 2018-09-12 14:30 A | none → 2018-09-12 16:30 A | 0% → 100% |  |
| 94 | 11 Administración de bomberos | none → 2018-09-12 16:30 A | none → 2018-09-13 08:30 A | 0% → 100% |  |
| 95 | 12 CRM para ciudadanos. Ventanilla Única | none → 2018-09-13 08:30 A | none → 2018-09-13 10:30 A | 0% → 100% |  |
| 96 | 15.1 BI Desarrollo Territorial | none → 2018-09-13 10:30 A | none → 2018-09-13 11:30 A | 0% → 100% |  |
| 97 | 15.5 BI Obras Públicas Municipales | none → 2018-09-13 11:30 A | none → 2018-09-13 13:30 A | 0% → 100% |  |
| 98 | 15.7 BI Registro de la Propiedad y Mercantil | none → 2018-09-13 13:30 A | none → 2018-09-13 14:30 A | 0% → 100% |  |
| 99 | 16.1 Consultas Portal Web | none → 2018-09-13 14:30 A | none → 2018-09-13 15:30 A | 0% → 100% |  |
| 100 | 16.2 Aplicación para móviles (APP) | none → 2018-09-13 15:30 A | none → 2018-09-13 16:30 A | 0% → 100% |  |
| 101 | Revisar los resultados de las pruebas y necesidades de cambios | none → 2018-09-13 16:30 A | none → 2018-09-14 15:30 A | 0% → 100% | resources Administrador de Contrato - Cliente; Gerente de Proyecto PlanERP; Analista de Calidad PlanERP; Consultor Especialista en Procesos de GADs PlanERP → none |
| 102 | **Planificar Salida a Producción y Soporte** | none → 2018-09-14 15:30 A | none → 2018-09-17 08:30 A | 0% → 100% |  |
| 103 | Definir Plan de Salida a Producción | none → 2018-09-14 15:30 A | none → 2018-09-17 08:30 A | 0% → 100% | resources Administrador de Contrato - Cliente; Líder Funcional - Usuario Experto - Cliente; Gerente de Proyecto PlanERP; Líder del Proyecto/Desarrollo PlanERP → none |
| 104 | Planificar Estrategia de Soporte | none → 2018-09-14 15:30 A | none → 2018-09-17 08:30 A | 0% → 100% | resources Administrador de Contrato - Cliente; Líder Funcional - Usuario Experto - Cliente; Gerente de Proyecto PlanERP; Líder del Proyecto/Desarrollo PlanERP → none |
| 105 | Planificar Administración del Sistema | none → 2018-09-14 15:30 A | none → 2018-09-17 08:30 A | 0% → 100% | resources Administrador de Contrato - Cliente; Líder Funcional - Usuario Experto - Cliente; Gerente de Proyecto PlanERP; Líder del Proyecto/Desarrollo PlanERP → none |
| 106 | Revisar la ETAPA del Proyecto | none → 2018-09-17 08:30 A | none → 2018-09-17 16:30 A | 0% → 100% | resources Administrador de Contrato - Cliente; Gerente de Proyecto PlanERP; Líder del Proyecto/Desarrollo PlanERP; Analista de Calidad PlanERP → none |
| 107 | HITO: FINALIZACION ETAPA 3 | none → 2018-09-17 16:30 A | none → 2018-09-17 16:30 A | 0% → 100% |  |
| 108 | **ETAPA 4: Preparación Final previo Despliegue en Producción - Módulos SC y AC** | none → 2018-09-17 16:30 A | none → 2018-10-11 10:30 A | 0% → 100% |  |
| 109 | **Gestión General del Proyecto** | none → 2018-09-17 16:30 A | none → 2018-09-18 11:30 A | 0% → 100% |  |
| 110 | Confirmar el Plan de Entrenamiento | none → 2018-09-17 16:30 A | none → 2018-09-18 09:30 A | 0% → 100% | resources Administrador de Contrato - Cliente; Funcionarios Técnicos - Cliente; Gerente de Proyecto PlanERP; Líder del Proyecto/Desarrollo PlanERP → none |
| 111 | Finalizar plan de Salida a Producción | none → 2018-09-18 09:30 A | none → 2018-09-18 11:30 A | 0% → 100% | resources Administrador de Contrato - Cliente; Funcionarios Técnicos - Cliente; Gerente de Proyecto PlanERP; Líder del Proyecto/Desarrollo PlanERP; Analista de Calidad PlanERP → none |
| 112 | **Entrenamiento en Modulos de Areas Funcionales Fase 1** | none → 2018-09-18 11:30 A | none → 2018-10-08 11:30 A | 0% → 100% |  |
| 113 | **Entrenamiento de Usuarios Funcionales y Certificación de Procesos** | none → 2018-09-18 11:30 A | none → 2018-10-02 16:30 A | 0% → 100% | resources Líder Funcional - Usuario Experto - Cliente; Usuarios Finales - Cliente; Funcionarios Técnicos - Cliente; Analista Procesos PlanERP; Desarrollador PlanERP; Consultor Especialista en Procesos de GADs PlanERP → none |
| 114 | 1 Dirección de Desarrollo Territorial (No incluye Catastro) | none → 2018-09-18 11:30 A | none → 2018-09-19 10:30 A | 0% → 100% |  |
| 115 | 4 Dirección de Justicia y Vigilancia | none → 2018-09-19 10:30 A | none → 2018-09-20 09:30 A | 0% → 100% |  |
| 116 | 5 Dirección de Desarrollo Humano y Social | none → 2018-09-20 09:30 A | none → 2018-09-21 08:30 A | 0% → 100% |  |
| 117 | 8.3 Rentas | none → 2018-09-21 08:30 A | none → 2018-09-21 16:30 A | 0% → 100% |  |
| 118 | 8.4 Tesorería | none → 2018-09-21 16:30 A | none → 2018-09-24 15:30 A | 0% → 100% |  |
| 119 | 9.1 Mercados | none → 2018-09-24 15:30 A | none → 2018-09-25 10:00 A | 0% → 100% |  |
| 120 | 9.2 Cementerio | none → 2018-09-25 10:00 A | none → 2018-09-25 14:30 A | 0% → 100% |  |
| 121 | 9.3 Camal | none → 2018-09-25 14:30 A | none → 2018-09-26 09:00 A | 0% → 100% |  |
| 122 | 10 Registro de la Propiedad y Mercantil | none → 2018-09-26 09:00 A | none → 2018-09-26 17:00 A | 0% → 100% |  |
| 123 | 11 Administración de bomberos | none → 2018-09-27 08:00 A | none → 2018-09-27 11:30 A | 0% → 100% |  |
| 124 | 12 CRM para ciudadanos. Ventanilla Única | none → 2018-09-27 11:30 A | none → 2018-09-28 10:30 A | 0% → 100% |  |
| 125 | 15.1 BI Desarrollo Territorial | none → 2018-09-28 10:30 A | none → 2018-09-28 15:00 A | 0% → 100% |  |
| 126 | 15.5 BI Obras Públicas Municipales | none → 2018-09-28 15:00 A | none → 2018-10-01 09:30 A | 0% → 100% |  |
| 127 | 15.7 BI Registro de la Propiedad y Mercantil | none → 2018-10-01 09:30 A | none → 2018-10-01 14:00 A | 0% → 100% |  |
| 128 | 16.1 Consultas Portal Web | none → 2018-10-01 14:00 A | none → 2018-10-02 12:00 A | 0% → 100% |  |
| 129 | 16.2 Aplicación para móviles (APP) | none → 2018-10-02 13:00 A | none → 2018-10-02 16:30 A | 0% → 100% |  |
| 130 | Entrenamiento de Usuario Técnicos | none → 2018-10-02 16:30 A | none → 2018-10-08 11:30 A | 0% → 100% | resources Funcionarios Técnicos - Cliente; Desarrollador PlanERP; Especialista Base de Datos PlanERP; Líder del Proyecto/Desarrollo PlanERP → none |
| 131 | **Preparación del Sistema** | none → 2018-10-08 11:30 A | none → 2018-10-09 09:30 A | 0% → 100% |  |
| 132 | Completar la Administración del Sistema | none → 2018-10-08 11:30 A | none → 2018-10-08 15:30 A | 0% → 100% | resources Funcionarios Técnicos - Cliente; Desarrollador PlanERP; Analista Procesos PlanERP → none |
| 133 | Comprobación de la Puesta a Producción | none → 2018-10-08 15:30 A | none → 2018-10-09 09:30 A | 0% → 100% | resources Funcionarios Técnicos - Cliente; Administrador de Contrato - Cliente; Analista de Calidad PlanERP; Líder del Proyecto/Desarrollo PlanERP → none |
| 134 | **Transición** | none → 2018-10-09 09:30 A | none → 2018-10-11 08:30 A | 0% → 100% |  |
| 135 | Finalizar Procesamiento de Sistemas Legados | none → 2018-10-09 09:30 A | none → 2018-10-09 10:30 A | 0% → 100% | resources Administrador de Contrato - Cliente; Líder Funcional - Usuario Experto - Cliente; Desarrollador PlanERP; Líder del Proyecto/Desarrollo PlanERP; Especialista Base de Datos PlanERP → none |
| 136 | Realizar la Salida a Producción - Carga Inicial y Configuración Inicial | none → 2018-10-09 10:30 A | none → 2018-10-11 08:30 A | 0% → 100% | resources Administrador de Contrato - Cliente; Líder Funcional - Usuario Experto - Cliente; Desarrollador PlanERP; Líder del Proyecto/Desarrollo PlanERP; Especialista Base de Datos PlanERP → none |
| 137 | Revisar la ETAPA del Proyecto | none → 2018-10-11 08:30 A | none → 2018-10-11 10:30 A | 0% → 100% | resources Administrador de Contrato - Cliente; Gerente de Proyecto PlanERP; Líder del Proyecto/Desarrollo PlanERP; Analista de Calidad PlanERP → none |
| 138 | HITO: FINALIZACION ETAPA 4 | none → 2018-10-11 10:30 A | none → 2018-10-11 10:30 A | 0% → 100% |  |
| 139 | **ETAPA 5: Despliegue en Producción y Soporte Técnico - Módulos SC y AC** | none → 2018-10-11 10:30 A | none → 2018-11-16 13:30 A | 0% → 100% |  |
| 140 | **Soporte en Producción** | none → 2018-10-11 10:30 A | none → 2018-11-16 13:30 A | 0% → 100% |  |
| 141 | Soporte durante la Salida a Producción | none → 2018-10-11 10:30 A | none → 2018-11-16 13:30 A | 0% → 100% | resources Funcionarios Técnicos - Cliente; Desarrollador PlanERP; Analista Procesos PlanERP; Especialista Base de Datos PlanERP; Consultor Especialista en Procesos de GADs PlanERP → none |

| ID | Task | Start | Finish | Complete | Other |
| --- | --- | --- | --- | --- | --- |
| 142 | Resolver incidentes críticos | none → 2018-10-11 10:30 A | none → 2018-11-05 15:30 A | 0% → 100% | resources Funcionarios Técnicos - Cliente; Desarrollador PlanERP; Analista Procesos PlanERP; Especialista Base de Datos PlanERP; Consultor Especialista en Procesos de GADs PlanERP → none |
| 143 | Entregar el soporte y Administración al cliente | none → 2018-10-11 10:30 A | none → 2018-10-12 09:30 A | 0% → 100% | resources Funcionarios Técnicos - Cliente; Desarrollador PlanERP; Analista Procesos PlanERP; Especialista Base de Datos PlanERP; Consultor Especialista en Procesos de GADs PlanERP → none |
| 144 | **Mejora Continua** | none → 2018-10-11 10:30 A | none → 2018-10-24 08:30 A | 0% → 100% |  |
| 145 | Monitoreo del Sistema y Acompañamiento ETAPA1 | none → 2018-10-11 10:30 A | none → 2018-10-24 08:30 A | 0% → 100% | resources Administrador de Contrato - Cliente; Funcionarios Técnicos - Cliente; Líder Funcional - Usuario Experto - Cliente; Especialista Base de Datos PlanERP; Líder del Proyecto/Desarrollo PlanERP; Consultor Especialista en Procesos de GADs PlanERP → none |
| 146 | Ajustes y Configuraciones finales al Software acorde a necesidades Entidad | none → 2018-10-11 10:30 A | none → 2018-10-24 08:30 A | 0% → 100% | resources Administrador de Contrato - Cliente; Funcionarios Técnicos - Cliente; Líder Funcional - Usuario Experto - Cliente; Especialista Base de Datos PlanERP; Líder del Proyecto/Desarrollo PlanERP; Consultor Especialista en Procesos de GADs PlanERP → none |
| 147 | **Cierre de la ETAPA 5** | none → 2018-10-24 08:30 A | none → 2018-10-24 10:30 A | 0% → 100% |  |
| 148 | Reunión de Cierre de la ETAPA 5 | none → 2018-10-24 08:30 A | none → 2018-10-24 10:30 A | 0% → 100% | resources Administrador de Contrato - Cliente; Líder Funcional - Usuario Experto - Cliente; Funcionarios Técnicos - Cliente; Gerente de Proyecto PlanERP; Líder del Proyecto/Desarrollo PlanERP; Analista de Calidad PlanERP → none |
| 149 | HITO: FIN DE LA ETAPA 5 | none → 2018-10-24 10:30 A | none → 2018-10-24 10:30 A | 0% → 100% |  |
| 150 | **ETAPA 6: Estabilización, Apoyo Emisión 2019 y Desarrollo de funcionalidades no establecidas en el Alcance Contractual** | none → 2018-11-16 13:30 A | none → 2019-01-25 14:30 A | 0% → 100% |  |
| 151 | Depuración de Errores de Calidad de Información fuente migrada (Base Oracle) | none → 2018-11-16 13:30 A | none → 2018-12-24 15:30 A | 0% → 100% |  |
| 152 | Soporte y Mantenimiento de Módulos de la Fase 1 | none → 2018-11-16 13:30 A | none → 2018-12-24 15:30 A | 0% → 100% |  |
| 153 | Adaptaciones a Software para incluir Nuevas funcionalidades no contempladas en alcance proyecto | none → 2018-11-16 13:30 A | none → 2018-12-24 15:30 A | 0% → 100% |  |
| 154 | Implementación de Licencia temporal de Modulo de Catastro Urbano SIIM | none → 2018-12-03 08:30 A | none → 2018-12-26 13:30 A | 0% → 100% | constraint none → start no earlier than 2018-12-03 08:30 |
| 155 | Migración de información de Emisión de Impuestos de Catastro Urbano 2019 | none → 2018-12-03 08:30 A | none → 2018-12-26 13:30 A | 0% → 100% | constraint none → start no earlier than 2018-12-03 08:30 |
| 156 | Creación de interfaces mediante ETLs para integración entre Sistema Oracle y SIIM para la recaudación de Impuestos 2019 de Catastro Urbano | none → 2018-12-03 08:30 A | none → 2018-12-26 13:30 A | 0% → 100% | constraint none → start no earlier than 2018-12-03 08:30 |
| 157 | Soporte en Recaudación de Impuestos de Catastro urbano y mejoras 2019 | none → 2018-12-26 13:30 A | none → 2019-01-25 11:30 A | 0% → 100% |  |
| 158 | **Cierre de la FASE 1** | none → 2019-01-25 11:30 A | none → 2019-01-25 14:30 A | 0% → 100% |  |
| 159 | Reunión de Cierre de la FASE 1 | none → 2019-01-25 11:30 A | none → 2019-01-25 14:30 A | 0% → 100% | resources Administrador de Contrato - Cliente; Líder Funcional - Usuario Experto - Cliente; Funcionarios Técnicos - Cliente; Gerente de Proyecto PlanERP; Líder del Proyecto/Desarrollo PlanERP; Analista de Calidad PlanERP → none |
| 160 | HITO: FIN DE LA FASE 1 | none → 2019-01-25 14:30 A | none → 2019-01-25 14:30 A | 0% → 100% |  |
| 161 | **FASE 2: Implementación de Módulos de Planificación de Recursos Institucionales - PRI** | none → 2019-01-25 14:30 A | none → 2019-05-14 16:30 | 0% → 74% |  |
| 162 | **ETAPA 1: Instalación del SIIM - Módulos PRI** | none → 2019-01-25 14:30 A | none → 2019-01-31 10:30 | 0% → 99% |  |
| 163 | **Entrega e Instalación del Software** | none → 2019-01-25 14:30 A | none → 2019-01-30 11:30 A | 0% → 100% |  |
| 164 | **Instalar SIIM en Servidor** | none → 2019-01-25 14:30 A | none → 2019-01-30 09:30 A | 0% → 100% | resources Funcionarios Técnicos - Cliente → none |
| 165 | **Instalar Módulos PRI** | none → 2019-01-25 14:30 A | none → 2019-01-30 09:30 A | 0% → 100% | resources Funcionarios Técnicos - Cliente; Desarrollador PlanERP; Líder del Proyecto/Desarrollo PlanERP → none |
| 166 | 2.1 Administración Técnica | none → 2019-01-25 14:30 A | none → 2019-01-25 16:30 A | 0% → 100% |  |
| 167 | 2.2 Salud Ocupacional y Riesgos | none → 2019-01-25 16:30 A | none → 2019-01-28 09:30 A | 0% → 100% |  |
| 168 | 3.2 Adquisiciones | none → 2019-01-28 09:30 A | none → 2019-01-28 11:30 A | 0% → 100% |  |
| 169 | 6.1 Administración de Bienes | none → 2019-01-28 11:30 A | none → 2019-01-28 14:30 A | 0% → 100% |  |
| 170 | 8.1 Contabilidad | none → 2019-01-28 14:30 A | none → 2019-01-28 16:30 A | 0% → 100% |  |
| 171 | 8.2 Presupuestos | none → 2019-01-28 16:30 A | none → 2019-01-29 09:30 A | 0% → 100% |  |
| 172 | 13 CRM para Urbanizaciones | none → 2019-01-29 09:30 A | none → 2019-01-29 11:30 A | 0% → 100% |  |
| 173 | 14 Dirección de Planificación Institucional (Incluye control de proyectos de Obras Públicas | none → 2019-01-29 11:30 A | none → 2019-01-29 14:30 A | 0% → 100% |  |
| 174 | 15.6 Servicios Corporativos | none → 2019-01-29 14:30 A | none → 2019-01-29 16:30 A | 0% → 100% |  |
| 175 | 15.8 BI Planificación Institucional | none → 2019-01-29 16:30 A | none → 2019-01-30 09:30 A | 0% → 100% |  |
| 176 | Entrega de Software | none → 2019-01-30 09:30 A | none → 2019-01-30 11:30 A | 0% → 100% | constraint none → finish no earlier than 2018-04-10 05:30; resources Gerente de Proyecto PlanERP; Administrador de Contrato - Cliente → none |
| 177 | Revisar la ETAPA del Proyecto | none → 2019-01-30 11:30 A | none → 2019-01-31 10:30 A | 0% → 100% | constraint none → finish no earlier than 2018-04-10 05:30; resources Administrador de Contrato - Cliente; Gerente de Proyecto PlanERP; Analista de Calidad PlanERP → none |
| 178 | HITO: FINALIZACION ETAPA 1 | none → 2019-01-31 10:30 | none → 2019-01-31 10:30 |  | constraint none → finish no earlier than 2018-04-10 05:30 |
| 179 | **ETAPA 2: Levantamiento de Características Institucionales - Módulos PRI** | none → 2019-01-31 10:30 A | none → 2019-02-11 15:30 | 0% → 99% |  |
| 180 | **Actividades de Gestión del Proyecto** | none → 2019-01-31 10:30 A | none → 2019-01-31 15:30 A | 0% → 100% |  |
| 181 | Revisión del Plan del Proyecto | none → 2019-01-31 10:30 A | none → 2019-01-31 13:30 A | 0% → 100% | constraint none → finish no earlier than 2018-04-11 05:30; resources Administrador de Contrato - Cliente; Gerente de Proyecto PlanERP → none |
| 182 | Programar talleres de requerimientos de Entidad | none → 2019-01-31 13:30 A | none → 2019-01-31 15:30 A | 0% → 100% | constraint none → finish no earlier than 2018-04-11 05:30; resources Administrador de Contrato - Cliente; Gerente de Proyecto PlanERP → none |
| 183 | **Sesiones de Requerimientos del Entidad** | none → 2019-01-31 15:30 A | none → 2019-02-08 08:30 A | 0% → 100% |  |
| 184 | Conducir Sesiones de Requerimientos | none → 2019-01-31 15:30 A | none → 2019-02-07 09:30 A | 0% → 100% | constraint none → finish no earlier than 2018-04-17 05:30; resources Funcionarios Técnicos - Cliente; Analista Procesos PlanERP; Consultor Especialista en Procesos de GADs PlanERP → none |
| 185 | Crear Documento de Características del Entidad | none → 2019-02-07 09:30 A | none → 2019-02-08 08:30 A | 0% → 100% | constraint none → finish no earlier than 2018-04-18 05:30; resources Analista Procesos PlanERP; Funcionarios Técnicos - Cliente; Consultor Especialista en Procesos de GADs PlanERP → none |
| 186 | **Revisar el Documento de Características del Entidad** | none → 2019-02-08 08:30 A | none → 2019-02-08 16:30 A | 0% → 100% |  |
| 187 | Revisar el Documento de Características del Entidad | none → 2019-02-08 08:30 A | none → 2019-02-08 13:30 A | 0% → 100% | constraint none → finish no earlier than 2018-04-19 05:30; resources Administrador de Contrato - Cliente; Gerente de Proyecto PlanERP; Analista de Calidad PlanERP; Consultor Especialista en Procesos de GADs PlanERP; Analista Procesos PlanERP → none |
| 188 | Revisar el Plan del Proyecto | none → 2019-02-08 13:30 A | none → 2019-02-08 16:30 A | 0% → 100% | constraint none → finish no earlier than 2018-04-19 05:30; resources Administrador de Contrato - Cliente; Gerente de Proyecto PlanERP → none |
| 189 | Revisar la ETAPA del Proyecto | none → 2019-02-08 16:30 A | none → 2019-02-11 15:30 A | 0% → 100% | constraint none → finish no earlier than 2018-04-20 05:30; resources Administrador de Contrato - Cliente; Gerente de Proyecto PlanERP; Líder del Proyecto/Desarrollo PlanERP; Analista de Calidad PlanERP → none |
| 190 | HITO: FINALIZACION ETAPA 2 | none → 2019-02-11 15:30 | none → 2019-02-11 15:30 |  | constraint none → finish no earlier than 2018-04-20 05:30 |
| 191 | **ETAPA 3: Migración de Datos, Configuración y Pruebas de Operación de Módulos - Módulos PRI** | none → 2019-02-11 15:30 A | none → 2019-03-25 10:30 | 0% → 50% |  |
| 192 | **Gestión General del Proyecto** | none → 2019-02-11 15:30 A | none → 2019-02-13 09:30 A | 0% → 100% |  |
| 193 | Planificar cambio Organizacional | none → 2019-02-11 15:30 A | none → 2019-02-12 09:30 A | 0% → 100% | constraint none → finish no earlier than 2018-04-20 05:30; resources Administrador de Contrato - Cliente; Gerente de Proyecto PlanERP; Líder del Proyecto/Desarrollo PlanERP → none |
| 194 | Planificar Entrenamiento a Usuarios Finales | none → 2019-02-12 09:30 A | none → 2019-02-12 14:30 A | 0% → 100% | constraint none → finish no earlier than 2018-04-20 05:30; resources Administrador de Contrato - Cliente; Gerente de Proyecto PlanERP; Líder del Proyecto/Desarrollo PlanERP → none |
| 195 | Definir y Preparar la Migración de Datos | none → 2019-02-12 14:30 A | none → 2019-02-13 09:30 A | 0% → 100% | constraint none → finish no earlier than 2018-04-20 05:30; resources Funcionarios Técnicos - Cliente; Líder del Proyecto/Desarrollo PlanERP; Especialista Base de Datos PlanERP → none |
| 196 | **Configuración del Sistema en Producción** | none → 2019-02-13 09:30 A | none → 2019-03-08 10:30 | 0% → 62% |  |
| 197 | Instalar el SIIM en Producción | none → 2019-02-13 09:30 A | none → 2019-02-13 14:30 A | 0% → 100% | constraint none → finish no earlier than 2018-04-20 05:30; resources Funcionarios Técnicos - Cliente; Analista Procesos PlanERP; Desarrollador PlanERP; Líder del Proyecto/Desarrollo PlanERP; Especialista Base de Datos PlanERP → none |
| 198 | Configurar Inicialización del Sistema | none → 2019-02-13 14:30 A | none → 2019-02-14 13:30 A | 0% → 100% | constraint none → finish no earlier than 2018-04-23 05:30; resources Funcionarios Técnicos - Cliente; Analista Procesos PlanERP; Desarrollador PlanERP; Líder del Proyecto/Desarrollo PlanERP; Especialista Base de Datos PlanERP → none |
| 199 | Realizar la Migración de Datos | none → 2019-02-14 13:30 A | none → 2019-03-01 16:30 | 0% → 50% | constraint none → finish no earlier than 2018-05-23 05:30; resources Funcionarios Técnicos - Cliente; Analista Procesos PlanERP; Desarrollador PlanERP; Líder del Proyecto/Desarrollo PlanERP; Especialista Base de Datos PlanERP → none |
| 200 | Desarrollar Adaptaciones al Software | none → 2019-03-01 16:30 A | none → 2019-03-05 14:30 | 0% → 50% | constraint none → finish no earlier than 2018-04-27 05:30; resources Funcionarios Técnicos - Cliente; Analista Procesos PlanERP; Desarrollador PlanERP; Líder del Proyecto/Desarrollo PlanERP; Especialista Base de Datos PlanERP → none |
| 201 | Configuración del Sistema en base al Documento de Características del Entidad | none → 2019-03-05 14:30 A | none → 2019-03-06 13:30 A | 0% → 100% | constraint none → finish no earlier than 2018-05-01 05:30; resources Funcionarios Técnicos - Cliente; Analista Procesos PlanERP; Desarrollador PlanERP; Líder del Proyecto/Desarrollo PlanERP; Especialista Base de Datos PlanERP → none |
| 202 | Configurar Interfaces | none → 2019-03-06 13:30 A | none → 2019-03-07 11:30 A | 0% → 100% | constraint none → finish no earlier than 2018-05-02 05:30; resources Funcionarios Técnicos - Cliente; Analista Procesos PlanERP; Desarrollador PlanERP; Líder del Proyecto/Desarrollo PlanERP; Especialista Base de Datos PlanERP → none |
| 203 | Configurar Usuarios y Autorizaciones | none → 2019-03-07 11:30 A | none → 2019-03-08 10:30 A | 0% → 100% | constraint none → finish no earlier than 2018-05-03 05:30; resources Funcionarios Técnicos - Cliente; Analista Procesos PlanERP; Desarrollador PlanERP; Líder del Proyecto/Desarrollo PlanERP; Especialista Base de Datos PlanERP → none |
| 204 | **Gestión del Cambio Organizacional** | none → 2019-03-08 10:30 A | none → 2019-03-08 13:30 A | 0% → 100% |  |
| 205 | Conducir la comunicación de la Gestión de Cambios (si es aplicable) | none → 2019-03-08 10:30 A | none → 2019-03-08 13:30 A | 0% → 100% | constraint none → finish no earlier than 2018-05-04 05:30; resources Administrador de Contrato - Cliente; Líder Funcional - Usuario Experto - Cliente; Gerente de Proyecto PlanERP; Consultor Especialista en Procesos de GADs PlanERP → none |
| 206 | **Pruebas de validación del Sistema** | none → 2019-03-08 13:30 A | none → 2019-03-14 13:30 | 0% → 13% |  |
| 207 | Mantener la Lista Maestra de Procesos de Entidad | none → 2019-03-08 13:30 A | none → 2019-03-11 08:30 A | 0% → 100% | constraint none → finish no earlier than 2018-05-04 05:30; resources Líder Funcional - Usuario Experto - Cliente; Gerente de Proyecto PlanERP; Líder del Proyecto/Desarrollo PlanERP; Analista Procesos PlanERP; Consultor Especialista en Procesos de GADs PlanERP → none |
| 208 | **Conducir Talleres de Validación** | none → 2019-03-11 08:30 | none → 2019-03-14 13:30 |  | resources Líder Funcional - Usuario Experto - Cliente; Analista Procesos PlanERP; Analista de Calidad PlanERP; Consultor Especialista en Procesos de GADs PlanERP → none |
| 209 | 2.1 Administración Técnica | none → 2019-03-11 08:30 | none → 2019-03-11 13:30 |  |  |
| 210 | 2.2 Salud Ocupacional y Riesgos | none → 2019-03-11 13:30 | none → 2019-03-11 15:30 |  |  |
| 211 | 3.2 Adquisiciones | none → 2019-03-11 15:30 | none → 2019-03-12 10:30 |  |  |

| ID | Task | Start | Finish | Complete | Other |
| --- | --- | --- | --- | --- | --- |
| 212 | 6.1 Administración de Bienes | none → 2019-03-12 10:30 | none → 2019-03-12 13:30 |  |  |
| 213 | 8.1 Contabilidad | none → 2019-03-12 13:30 | none → 2019-03-13 08:30 |  |  |
| 214 | 8.2 Presupuestos | none → 2019-03-13 08:30 | none → 2019-03-13 13:30 |  |  |
| 215 | 13 CRM para Urbanizaciones | none → 2019-03-13 13:30 | none → 2019-03-13 15:30 |  |  |
| 216 | 14 Dirección de Planificación Institucional (Incluye control de proyectos de Obras Públicas) | none → 2019-03-13 15:30 | none → 2019-03-14 08:30 |  |  |
| 217 | 15.6 BI Servicios Corporativos | none → 2019-03-14 08:30 | none → 2019-03-14 10:30 |  |  |
| 218 | 15.8 BI Planificación Institucional | none → 2019-03-14 10:30 | none → 2019-03-14 13:30 |  |  |
| 219 | **Pruebas de aceptacion del Sistema** | none → 2019-03-14 13:30 A | none → 2019-03-21 10:30 | 0% → 11% |  |
| 220 | Definir casos de prueba y alcance | none → 2019-03-14 13:30 A | none → 2019-03-14 16:30 | 0% → 50% | constraint none → finish no earlier than 2018-05-09 05:30; resources Líder Funcional - Usuario Experto - Cliente; Líder del Proyecto/Desarrollo PlanERP; Analista de Calidad PlanERP; Funcionarios Técnicos - Cliente → none |
| 221 | Preparar ambiente de pruebas | none → 2019-03-14 16:30 A | none → 2019-03-15 15:30 | 0% → 50% | constraint none → finish no earlier than 2018-05-10 05:30; resources Funcionarios Técnicos - Cliente; Líder Funcional - Usuario Experto - Cliente; Líder del Proyecto/Desarrollo PlanERP; Analista de Calidad PlanERP → none |
| 222 | **Ejecutar el plan de pruebas** | none → 2019-03-15 15:30 | none → 2019-03-21 10:30 |  | resources Líder Funcional - Usuario Experto - Cliente; Líder del Proyecto/Desarrollo PlanERP; Analista de Calidad PlanERP; Funcionarios Técnicos - Cliente; Consultor Especialista en Procesos de GADs PlanERP → none |
| 223 | 2.1 Administración Técnica | none → 2019-03-15 15:30 | none → 2019-03-18 10:30 |  |  |
| 224 | 2.2 Salud Ocupacional y Riesgos | none → 2019-03-18 10:30 | none → 2019-03-18 13:30 |  |  |
| 225 | 3.2 Adquisiciones | none → 2019-03-18 13:30 | none → 2019-03-19 08:30 |  |  |
| 226 | 6.1 Administración de Bienes | none → 2019-03-19 08:30 | none → 2019-03-19 10:30 |  |  |
| 227 | 8.1 Contabilidad | none → 2019-03-19 10:30 | none → 2019-03-19 15:30 |  |  |
| 228 | 8.2 Presupuestos | none → 2019-03-19 15:30 | none → 2019-03-20 10:30 |  |  |
| 229 | 13 CRM para Urbanizaciones | none → 2019-03-20 10:30 | none → 2019-03-20 13:30 |  |  |
| 230 | 14 Dirección de Planificación Institucional (Incluye control de proyectos de Obras Públicas) | none → 2019-03-20 13:30 | none → 2019-03-20 15:30 |  |  |
| 231 | 15.6 BI Servicios Corporativos | none → 2019-03-20 15:30 | none → 2019-03-21 08:30 |  |  |
| 232 | 15.8 BI Planificación Institucional | none → 2019-03-21 08:30 | none → 2019-03-21 10:30 |  |  |
| 233 | Revisar los resultados de las pruebas y necesidades de cambios | none → 2019-03-14 13:30 | none → 2019-03-15 11:30 |  | constraint none → finish no earlier than 2018-05-14 05:30; resources Administrador de Contrato - Cliente; Gerente de Proyecto PlanERP; Analista de Calidad PlanERP; Consultor Especialista en Procesos de GADs PlanERP → none |
| 234 | **Planificar Salida a Producción y Soporte** | none → 2019-03-21 10:30 A | none → 2019-03-22 11:30 A | 0% → 100% |  |
| 235 | Definir Plan de Salida a Producción | none → 2019-03-21 10:30 A | none → 2019-03-21 14:30 A | 0% → 100% | constraint none → finish no earlier than 2018-05-15 05:30; resources Administrador de Contrato - Cliente; Líder Funcional - Usuario Experto - Cliente; Gerente de Proyecto PlanERP; Líder del Proyecto/Desarrollo PlanERP → none |
| 236 | Planificar Estrategia de Soporte | none → 2019-03-21 14:30 A | none → 2019-03-22 08:30 A | 0% → 100% | constraint none → finish no earlier than 2018-05-15 05:30; resources Administrador de Contrato - Cliente; Líder Funcional - Usuario Experto - Cliente; Gerente de Proyecto PlanERP; Líder del Proyecto/Desarrollo PlanERP → none |
| 237 | Planificar Administración del Sistema | none → 2019-03-22 08:30 A | none → 2019-03-22 11:30 A | 0% → 100% | constraint none → finish no earlier than 2018-05-15 05:30; resources Administrador de Contrato - Cliente; Líder Funcional - Usuario Experto - Cliente; Gerente de Proyecto PlanERP; Líder del Proyecto/Desarrollo PlanERP → none |
| 238 | Revisar la ETAPA del Proyecto | none → 2019-03-22 11:30 A | none → 2019-03-25 10:30 A | 0% → 100% | constraint none → finish no earlier than 2018-05-15 05:30; resources Administrador de Contrato - Cliente; Gerente de Proyecto PlanERP; Líder del Proyecto/Desarrollo PlanERP; Analista de Calidad PlanERP → none |
| 239 | HITO: FINALIZACION ETAPA 3 | none → 2019-03-25 10:30 | none → 2019-03-25 10:30 |  | constraint none → finish no earlier than 2018-05-15 05:30 |
| 240 | **ETAPA 4: Preparación Final previo Despliegue en Producción - Módulos PRI** | none → 2019-03-25 10:30 A | none → 2019-04-08 10:30 | 0% → 19% |  |
| 241 | **Gestión General del Proyecto** | none → 2019-03-25 10:30 A | none → 2019-03-26 10:30 | 0% → 50% |  |
| 242 | Confirmar el Plan de Entrenamiento | none → 2019-03-25 10:30 A | none → 2019-03-25 15:30 | 0% → 50% | constraint none → finish no earlier than 2018-05-16 05:30; resources Administrador de Contrato - Cliente; Funcionarios Técnicos - Cliente; Gerente de Proyecto PlanERP; Líder del Proyecto/Desarrollo PlanERP → none |
| 243 | Finalizar plan de Salida a Producción | none → 2019-03-25 15:30 A | none → 2019-03-26 10:30 | 0% → 50% | constraint none → finish no earlier than 2018-05-16 05:30; resources Administrador de Contrato - Cliente; Funcionarios Técnicos - Cliente; Gerente de Proyecto PlanERP; Líder del Proyecto/Desarrollo PlanERP; Analista de Calidad PlanERP → none |
| 244 | **Entrenamiento** | none → 2019-03-26 10:30 | none → 2019-04-02 13:30 |  |  |
| 245 | **Entrenamiento de Usuarios Funcionales y Certificación de Procesos** | none → 2019-03-26 10:30 | none → 2019-03-29 15:30 |  | resources Líder Funcional - Usuario Experto - Cliente; Usuarios Finales - Cliente; Funcionarios Técnicos - Cliente; Analista Procesos PlanERP; Desarrollador PlanERP; Consultor Especialista en Procesos de GADs PlanERP → none |
| 246 | 2.1 Administración Técnica | none → 2019-03-26 10:30 | none → 2019-03-26 15:30 |  |  |
| 247 | 2.2 Salud Ocupacional y Riesgos | none → 2019-03-26 15:30 | none → 2019-03-27 08:30 |  |  |
| 248 | 3.2 Adquisiciones | none → 2019-03-27 08:30 | none → 2019-03-27 13:30 |  |  |
| 249 | 6.1 Administración de Bienes | none → 2019-03-27 13:30 | none → 2019-03-27 15:30 |  |  |
| 250 | 8.1 Contabilidad | none → 2019-03-27 15:30 | none → 2019-03-28 10:30 |  |  |
| 251 | 8.2 Presupuestos | none → 2019-03-28 10:30 | none → 2019-03-28 15:30 |  |  |
| 252 | 13 CRM para Urbanizaciones | none → 2019-03-28 15:30 | none → 2019-03-29 08:30 |  |  |
| 253 | 14 Dirección de Planificación Institucional (Incluye control de proyectos de Obras Públicas) | none → 2019-03-29 08:30 | none → 2019-03-29 10:30 |  |  |
| 254 | 15.6 BI Servicios Corporativos | none → 2019-03-29 10:30 | none → 2019-03-29 13:30 |  |  |
| 255 | 15.8 BI Planificación Institucional | none → 2019-03-29 13:30 | none → 2019-03-29 15:30 |  |  |
| 256 | Entrenamiento de Usuario Técnicos | none → 2019-03-26 10:30 | none → 2019-04-02 13:30 |  | constraint none → finish no earlier than 2018-05-21 05:30; resources Funcionarios Técnicos - Cliente; Desarrollador PlanERP; Especialista Base de Datos PlanERP; Líder del Proyecto/Desarrollo PlanERP → none |
| 257 | **Preparación del Sistema** | none → 2019-04-02 13:30 A | none → 2019-04-03 15:30 | 0% → 50% |  |
| 258 | Completar la Administración del Sistema | none → 2019-04-02 13:30 A | none → 2019-04-03 09:30 | 0% → 50% | constraint none → finish no earlier than 2018-05-29 05:30; resources Funcionarios Técnicos - Cliente; Desarrollador PlanERP; Analista Procesos PlanERP → none |
| 259 | Comprobación de la Puesta a Producción | none → 2019-04-03 09:30 A | none → 2019-04-03 15:30 | 0% → 50% | constraint none → finish no earlier than 2018-05-29 05:30; resources Funcionarios Técnicos - Cliente; Administrador de Contrato - Cliente; Analista de Calidad PlanERP; Líder del Proyecto/Desarrollo PlanERP → none |
| 260 | **Transición** | none → 2019-04-03 15:30 A | none → 2019-04-08 08:30 | 0% → 50% |  |
| 261 | Finalizar Procesamiento de Sistemas Legados | none → 2019-04-03 15:30 A | none → 2019-04-04 10:30 | 0% → 50% | constraint none → finish no earlier than 2018-05-30 05:30; resources Administrador de Contrato - Cliente; Líder Funcional - Usuario Experto - Cliente; Desarrollador PlanERP; Líder del Proyecto/Desarrollo PlanERP; Especialista Base de Datos PlanERP → none |
| 262 | Realizar la Salida a Producción - Carga Inicial y Configuración Inicial | none → 2019-04-04 10:30 A | none → 2019-04-08 08:30 | 0% → 50% | constraint none → finish no earlier than 2018-05-31 05:30; resources Administrador de Contrato - Cliente; Líder Funcional - Usuario Experto - Cliente; Desarrollador PlanERP; Líder del Proyecto/Desarrollo PlanERP; Especialista Base de Datos PlanERP → none |
| 263 | Revisar la ETAPA del Proyecto | none → 2019-04-08 08:30 A | none → 2019-04-08 10:30 A | 0% → 100% | constraint none → finish no earlier than 2018-06-01 05:30; resources Administrador de Contrato - Cliente; Gerente de Proyecto PlanERP; Líder del Proyecto/Desarrollo PlanERP; Analista de Calidad PlanERP → none |
| 264 | HITO: FINALIZACION ETAPA 4 | none → 2019-04-08 10:30 | none → 2019-04-08 10:30 |  | constraint none → finish no earlier than 2018-06-01 05:30 |
| 265 | **ETAPA 5: Despliegue en Producción y Soporte Técnico - Módulos PRI** | none → 2019-04-08 10:30 A | none → 2019-05-14 16:30 | 0% → 96% |  |
| 266 | **Soporte en Producción** | none → 2019-04-08 10:30 A | none → 2019-04-25 11:30 | 0% → 94% |  |
| 267 | Soporte durante la Salida a Producción | none → 2019-04-08 10:30 A | none → 2019-04-25 11:30 A | 0% → 100% | constraint none → finish no earlier than 2018-06-06 05:30; resources Funcionarios Técnicos - Cliente; Desarrollador PlanERP; Analista Procesos PlanERP; Especialista Base de Datos PlanERP; Consultor Especialista en Procesos de GADs PlanERP → none |
| 268 | Resolver incidentes críticos | none → 2019-04-08 10:30 A | none → 2019-04-25 11:30 A | 0% → 100% | constraint none → finish no earlier than 2018-06-08 05:30; resources Funcionarios Técnicos - Cliente; Desarrollador PlanERP; Analista Procesos PlanERP; Especialista Base de Datos PlanERP; Consultor Especialista en Procesos de GADs PlanERP → none |
| 269 | Entregar el soporte y Administración al cliente | none → 2019-04-08 10:30 | none → 2019-04-10 08:30 |  | constraint none → finish no earlier than 2018-06-01 05:30; resources Funcionarios Técnicos - Cliente; Desarrollador PlanERP; Analista Procesos PlanERP; Especialista Base de Datos PlanERP; Consultor Especialista en Procesos de GADs PlanERP → none |
| 270 | **Mejora Continua** | none → 2019-04-25 11:30 A | none → 2019-05-14 13:30 A | 0% → 100% |  |
| 271 | Monitoreo del Sistema y Acompañamiento ETAPA2 | none → 2019-04-25 11:30 A | none → 2019-05-14 13:30 A | 0% → 100% | constraint none → finish no earlier than 2018-06-13 05:30; resources Administrador de Contrato - Cliente; Funcionarios Técnicos - Cliente; Líder Funcional - Usuario Experto - Cliente; Especialista Base de Datos PlanERP; Líder del Proyecto/Desarrollo PlanERP; Consultor Especialista en Procesos de GADs PlanERP → none |
| 272 | Ajustes y Configuraciones finales al Software acorde a necesidades Entidad | none → 2019-04-25 11:30 A | none → 2019-05-14 13:30 A | 0% → 100% | constraint none → finish no earlier than 2018-06-13 05:30; resources Administrador de Contrato - Cliente; Funcionarios Técnicos - Cliente; Líder Funcional - Usuario Experto - Cliente; Especialista Base de Datos PlanERP; Líder del Proyecto/Desarrollo PlanERP; Consultor Especialista en Procesos de GADs PlanERP → none |
| 273 | **Cierre de la FASE 2** | none → 2019-05-14 13:30 A | none → 2019-05-14 16:30 | 0% → 50% |  |
| 274 | Reunión de Cierre de la FASE 2 | none → 2019-05-14 13:30 A | none → 2019-05-14 16:30 | 0% → 50% | constraint none → finish no earlier than 2018-06-14 05:30; resources Administrador de Contrato - Cliente; Líder Funcional - Usuario Experto - Cliente; Funcionarios Técnicos - Cliente; Gerente de Proyecto PlanERP; Líder del Proyecto/Desarrollo PlanERP; Analista de Calidad PlanERP → none |
| 275 | HITO: FIN DE LA FASE 2 | none → 2019-05-14 16:30 | none → 2019-05-14 16:30 |  | constraint none → finish no earlier than 2018-06-14 05:30 |
| 276 | **FASE 3: Implementación de Módulos de Planificación de Recursos Institucionales - PRI** | none → 2019-04-08 10:30 A | none → 2019-07-10 13:30 | 0% → 24% |  |
| 277 | **ETAPA 1: Instalación del SIIM - Módulos PRI** | none → 2019-04-08 10:30 A | none → 2019-04-12 08:30 | 0% → 99% |  |
| 278 | **Entrega e Instalación del Software** | none → 2019-04-08 10:30 A | none → 2019-04-11 09:30 A | 0% → 100% |  |
| 279 | **Instalar SIIM en Servidor** | none → 2019-04-08 10:30 A | none → 2019-04-10 16:30 A | 0% → 100% | resources Funcionarios Técnicos - Cliente → none |
| 280 | Instalar Módulos PRI | none → 2019-04-08 10:30 A | none → 2019-04-10 16:30 A | 0% → 100% | constraint none → finish no earlier than 2018-10-16 05:30; resources Funcionarios Técnicos - Cliente; Desarrollador PlanERP; Líder del Proyecto/Desarrollo PlanERP → none |
| 281 | Entrega de Software | none → 2019-04-10 16:30 A | none → 2019-04-11 09:30 A | 0% → 100% | constraint none → finish no earlier than 2018-10-17 05:30; resources Gerente de Proyecto PlanERP; Administrador de Contrato - Cliente → none |

| ID | Task | Start | Finish | Complete | Other |
| --- | --- | --- | --- | --- | --- |
| 282 | Revisar la ETAPA del Proyecto | none → 2019-04-11 09:30 A | none → 2019-04-12 08:30 A | 0% → 100% | constraint none → finish no earlier than 2018-10-17 05:30; resources Administrador de Contrato - Cliente; Gerente de Proyecto PlanERP; Analista de Calidad PlanERP → none |
| 283 | HITO: FINALIZACION ETAPA 1 | none → 2019-04-12 08:30 | none → 2019-04-12 08:30 |  | constraint none → finish no earlier than 2018-10-17 05:30 |
| 284 | **ETAPA 2: Levantamiento de Características Institucionales - Módulos PRI** | none → 2019-04-12 08:30 A | none → 2019-04-23 13:30 | 0% → 99% |  |
| 285 | **Actividades de Gestión del Proyecto** | none → 2019-04-12 08:30 A | none → 2019-04-12 13:30 A | 0% → 100% |  |
| 286 | Revisión del Plan del Proyecto | none → 2019-04-12 08:30 A | none → 2019-04-12 10:30 A | 0% → 100% | constraint none → finish no earlier than 2018-10-18 05:30; resources Administrador de Contrato - Cliente; Gerente de Proyecto PlanERP → none |
| 287 | Programar talleres de requerimientos de Entidad | none → 2019-04-12 10:30 A | none → 2019-04-12 13:30 A | 0% → 100% | constraint none → finish no earlier than 2018-10-18 05:30; resources Administrador de Contrato - Cliente; Gerente de Proyecto PlanERP → none |
| 288 | **Sesiones de Requerimientos del Entidad** | none → 2019-04-12 13:30 A | none → 2019-04-19 15:30 A | 0% → 100% |  |
| 289 | Conducir Sesiones de Requerimientos | none → 2019-04-12 13:30 A | none → 2019-04-17 09:30 A | 0% → 100% | constraint none → finish no earlier than 2018-11-12 05:30; resources Funcionarios Técnicos - Cliente; Analista Procesos PlanERP; Consultor Especialista en Procesos de GADs PlanERP → none |
| 290 | Crear Documento de Características del Entidad | none → 2019-04-17 09:30 A | none → 2019-04-19 15:30 A | 0% → 100% | constraint none → finish no earlier than 2018-11-15 05:30; resources Analista Procesos PlanERP; Funcionarios Técnicos - Cliente; Consultor Especialista en Procesos de GADs PlanERP → none |
| 291 | **Revisar el Documento de Características del Entidad** | none → 2019-04-19 15:30 A | none → 2019-04-22 14:30 A | 0% → 100% |  |
| 292 | Revisar el Documento de Características del Entidad | none → 2019-04-19 15:30 A | none → 2019-04-22 10:30 A | 0% → 100% | constraint none → finish no earlier than 2018-11-16 05:30; resources Administrador de Contrato - Cliente; Gerente de Proyecto PlanERP; Analista de Calidad PlanERP; Consultor Especialista en Procesos de GADs PlanERP; Analista Procesos PlanERP → none |
| 293 | Revisar el Plan del Proyecto | none → 2019-04-22 10:30 A | none → 2019-04-22 14:30 A | 0% → 100% | constraint none → finish no earlier than 2018-11-16 05:30; resources Administrador de Contrato - Cliente; Gerente de Proyecto PlanERP → none |
| 294 | Revisar la ETAPA del Proyecto | none → 2019-04-22 14:30 A | none → 2019-04-23 13:30 A | 0% → 100% | constraint none → finish no earlier than 2018-11-19 05:30; resources Administrador de Contrato - Cliente; Gerente de Proyecto PlanERP; Líder del Proyecto/Desarrollo PlanERP; Analista de Calidad PlanERP → none |
| 295 | HITO: FINALIZACION ETAPA 2 | none → 2019-04-23 13:30 | none → 2019-04-23 13:30 |  | constraint none → finish no earlier than 2018-11-19 05:30 |
| 296 | **ETAPA 3: Migración de Datos, Configuración y Pruebas de Operación de Módulos - Módulos PRI** | none → 2019-04-23 13:30 A | none → 2019-06-03 15:30 | 0% → 34% |  |
| 297 | **Gestión General del Proyecto** | none → 2019-04-23 13:30 A | none → 2019-04-24 16:30 A | 0% → 100% |  |
| 298 | Planificar cambio Organizacional | none → 2019-04-23 13:30 A | none → 2019-04-23 16:30 A | 0% → 100% | constraint none → finish no earlier than 2018-11-19 05:30; resources Administrador de Contrato - Cliente; Gerente de Proyecto PlanERP; Líder del Proyecto/Desarrollo PlanERP → none |
| 299 | Planificar Entrenamiento a Usuarios Finales | none → 2019-04-23 16:30 A | none → 2019-04-24 11:30 A | 0% → 100% | constraint none → finish no earlier than 2018-11-20 05:30; resources Administrador de Contrato - Cliente; Gerente de Proyecto PlanERP; Líder del Proyecto/Desarrollo PlanERP → none |
| 300 | Definir y Preparar la Migración de Datos | none → 2019-04-24 11:30 A | none → 2019-04-24 16:30 A | 0% → 100% | constraint none → finish no earlier than 2018-11-20 05:30; resources Funcionarios Técnicos - Cliente; Líder del Proyecto/Desarrollo PlanERP; Especialista Base de Datos PlanERP → none |
| 301 | **Configuración del Sistema en Producción** | none → 2019-04-24 16:30 A | none → 2019-05-20 16:30 | 0% → 34% |  |
| 302 | Instalar el SIIM en Producción | none → 2019-04-24 16:30 A | none → 2019-04-25 11:30 A | 0% → 100% | constraint none → finish no earlier than 2018-11-21 05:30; resources Funcionarios Técnicos - Cliente; Analista Procesos PlanERP; Desarrollador PlanERP; Líder del Proyecto/Desarrollo PlanERP; Especialista Base de Datos PlanERP → none |
| 303 | Configurar Inicialización del Sistema | none → 2019-04-25 11:30 A | none → 2019-04-26 10:30 A | 0% → 100% | constraint none → finish no earlier than 2018-11-23 05:30; resources Funcionarios Técnicos - Cliente; Analista Procesos PlanERP; Desarrollador PlanERP; Líder del Proyecto/Desarrollo PlanERP; Especialista Base de Datos PlanERP → none |
| 304 | Realizar la Migración de Datos | none → 2019-04-26 10:30 | none → 2019-05-09 08:30 |  | constraint none → finish no earlier than 2019-03-01 05:30; resources Funcionarios Técnicos - Cliente; Analista Procesos PlanERP; Desarrollador PlanERP; Líder del Proyecto/Desarrollo PlanERP; Especialista Base de Datos PlanERP → none |
| 305 | Desarrollar Adaptaciones al Software | none → 2019-05-09 08:30 A | none → 2019-05-15 11:30 | 0% → 50% | constraint none → finish no earlier than 2019-03-20 05:30; resources Funcionarios Técnicos - Cliente; Analista Procesos PlanERP; Desarrollador PlanERP; Líder del Proyecto/Desarrollo PlanERP; Especialista Base de Datos PlanERP → none |
| 306 | Configuración del Sistema en base al Documento de Características del Entidad | none → 2019-05-15 11:30 A | none → 2019-05-17 09:30 | 0% → 50% | constraint none → finish no earlier than 2019-03-27 05:30; resources Funcionarios Técnicos - Cliente; Analista Procesos PlanERP; Desarrollador PlanERP; Líder del Proyecto/Desarrollo PlanERP; Especialista Base de Datos PlanERP → none |
| 307 | Configurar Interfaces | none → 2019-05-17 09:30 A | none → 2019-05-20 08:30 A | 0% → 100% | constraint none → finish no earlier than 2019-03-29 05:30; resources Funcionarios Técnicos - Cliente; Analista Procesos PlanERP; Desarrollador PlanERP; Líder del Proyecto/Desarrollo PlanERP; Especialista Base de Datos PlanERP → none |
| 308 | Configurar Usuarios y Autorizaciones | none → 2019-05-20 08:30 A | none → 2019-05-20 16:30 A | 0% → 100% | constraint none → finish no earlier than 2019-04-01 05:30; resources Funcionarios Técnicos - Cliente; Analista Procesos PlanERP; Desarrollador PlanERP; Líder del Proyecto/Desarrollo PlanERP; Especialista Base de Datos PlanERP → none |
| 309 | **Gestión del Cambio Organizacional** | none → 2019-05-20 16:30 A | none → 2019-05-22 14:30 A | 0% → 100% |  |
| 310 | Conducir la comunicación de la Gestión de Cambios (si es aplicable) | none → 2019-05-20 16:30 A | none → 2019-05-22 14:30 A | 0% → 100% | constraint none → finish no earlier than 2019-04-03 05:30; resources Administrador de Contrato - Cliente; Líder Funcional - Usuario Experto - Cliente; Gerente de Proyecto PlanERP; Consultor Especialista en Procesos de GADs PlanERP → none |
| 311 | **Pruebas de validación/aceptación del Sistema** | none → 2019-05-22 14:30 A | none → 2019-05-24 16:30 | 0% → 22% |  |
| 312 | Mantener la Lista Maestra de Procesos de Entidad | none → 2019-05-22 14:30 A | none → 2019-05-23 09:30 A | 0% → 100% | constraint none → finish no earlier than 2019-04-04 05:30; resources Líder Funcional - Usuario Experto - Cliente; Gerente de Proyecto PlanERP; Líder del Proyecto/Desarrollo PlanERP; Analista Procesos PlanERP; Consultor Especialista en Procesos de GADs PlanERP → none |
| 313 | **Conducir Talleres de Validación** | none → 2019-05-23 09:30 | none → 2019-05-24 16:30 |  | resources Líder Funcional - Usuario Experto - Cliente; Analista Procesos PlanERP; Analista de Calidad PlanERP; Consultor Especialista en Procesos de GADs PlanERP → none |
| 314 | 3.1 Compras Públicas | none → 2019-05-23 09:30 | none → 2019-05-23 11:30 |  |  |
| 315 | 6.2 Servicios Generales | none → 2019-05-23 11:30 | none → 2019-05-23 14:30 |  |  |
| 316 | 8.5 Gestión Jurídica - Financiera | none → 2019-05-23 14:30 | none → 2019-05-23 16:30 |  |  |
| 317 | 15.2 BI Financiero | none → 2019-05-23 16:30 | none → 2019-05-24 09:30 |  |  |
| 318 | 15.3 BI Administración del Talento Humano | none → 2019-05-24 09:30 | none → 2019-05-24 11:30 |  |  |
| 319 | 15.4 BI Compras Públicas | none → 2019-05-24 11:30 | none → 2019-05-24 14:30 |  |  |
| 320 | 15.9 Tablero de Control | none → 2019-05-24 14:30 | none → 2019-05-24 16:30 |  |  |
| 321 | **Pruebas de aceptacion del Sistema** | none → 2019-05-24 16:30 | none → 2019-05-30 15:30 |  |  |
| 322 | Definir casos de prueba y alcance | none → 2019-05-24 16:30 | none → 2019-05-27 10:30 |  | constraint none → finish no earlier than 2019-04-17 05:30; resources Líder Funcional - Usuario Experto - Cliente; Líder del Proyecto/Desarrollo PlanERP; Analista de Calidad PlanERP; Funcionarios Técnicos - Cliente → none |
| 323 | Preparar ambiente de pruebas | none → 2019-05-27 10:30 | none → 2019-05-28 09:30 |  | constraint none → finish no earlier than 2019-04-19 05:30; resources Funcionarios Técnicos - Cliente; Líder Funcional - Usuario Experto - Cliente; Líder del Proyecto/Desarrollo PlanERP; Analista de Calidad PlanERP → none |
| 324 | **Ejecutar el plan de pruebas** | none → 2019-05-28 09:30 | none → 2019-05-29 16:30 |  | resources Líder Funcional - Usuario Experto - Cliente; Líder del Proyecto/Desarrollo PlanERP; Analista de Calidad PlanERP; Funcionarios Técnicos - Cliente; Consultor Especialista en Procesos de GADs PlanERP → none |
| 325 | 3.1 Compras Públicas | none → 2019-05-28 09:30 | none → 2019-05-28 11:30 |  |  |
| 326 | 6.2 Servicios Generales | none → 2019-05-28 11:30 | none → 2019-05-28 14:30 |  |  |
| 327 | 8.5 Gestión Jurídica - Financiera | none → 2019-05-28 14:30 | none → 2019-05-28 16:30 |  |  |
| 328 | 15.2 BI Financiero | none → 2019-05-28 16:30 | none → 2019-05-29 09:30 |  |  |
| 329 | 15.3 BI Administración del Talento Humano | none → 2019-05-29 09:30 | none → 2019-05-29 11:30 |  |  |
| 330 | 15.4 BI Compras Públicas | none → 2019-05-29 11:30 | none → 2019-05-29 14:30 |  |  |
| 331 | 15.9 Tablero de Control | none → 2019-05-29 14:30 | none → 2019-05-29 16:30 |  |  |
| 332 | Revisar los resultados de las pruebas y necesidades de cambios | none → 2019-05-29 16:30 | none → 2019-05-30 15:30 |  | constraint none → finish no earlier than 2019-05-07 05:30; resources Administrador de Contrato - Cliente; Gerente de Proyecto PlanERP; Analista de Calidad PlanERP; Consultor Especialista en Procesos de GADs PlanERP → none |
| 333 | **Planificar Salida a Producción y Soporte** | none → 2019-05-30 15:30 | none → 2019-05-31 16:30 |  |  |
| 334 | Definir Plan de Salida a Producción | none → 2019-05-30 15:30 | none → 2019-05-31 09:30 |  | constraint none → finish no earlier than 2019-05-07 05:30; resources Administrador de Contrato - Cliente; Líder Funcional - Usuario Experto - Cliente; Gerente de Proyecto PlanERP; Líder del Proyecto/Desarrollo PlanERP → none |
| 335 | Planificar Estrategia de Soporte | none → 2019-05-31 09:30 | none → 2019-05-31 13:30 |  | constraint none → finish no earlier than 2019-05-07 05:30; resources Administrador de Contrato - Cliente; Líder Funcional - Usuario Experto - Cliente; Gerente de Proyecto PlanERP; Líder del Proyecto/Desarrollo PlanERP → none |
| 336 | Planificar Administración del Sistema | none → 2019-05-31 13:30 | none → 2019-05-31 16:30 |  | constraint none → finish no earlier than 2019-05-08 05:30; resources Administrador de Contrato - Cliente; Líder Funcional - Usuario Experto - Cliente; Gerente de Proyecto PlanERP; Líder del Proyecto/Desarrollo PlanERP → none |
| 337 | Revisar la ETAPA del Proyecto | none → 2019-05-31 16:30 | none → 2019-06-03 15:30 |  | constraint none → finish no earlier than 2019-05-09 05:30; resources Administrador de Contrato - Cliente; Gerente de Proyecto PlanERP; Líder del Proyecto/Desarrollo PlanERP; Analista de Calidad PlanERP → none |
| 338 | HITO: FINALIZACION ETAPA 3 | none → 2019-06-03 15:30 | none → 2019-06-03 15:30 |  | constraint none → finish no earlier than 2019-05-09 05:30 |
| 339 | **ETAPA 4: Preparación Final previo Despliegue en Producción - Módulos PRI** | none → 2019-06-03 15:30 | none → 2019-06-18 14:30 |  |  |
| 340 | **Gestión General del Proyecto** | none → 2019-06-03 15:30 | none → 2019-06-04 15:30 |  |  |
| 341 | Confirmar el Plan de Entrenamiento | none → 2019-06-03 15:30 | none → 2019-06-04 10:30 |  | constraint none → finish no earlier than 2019-05-09 05:30; resources Administrador de Contrato - Cliente; Funcionarios Técnicos - Cliente; Gerente de Proyecto PlanERP; Líder del Proyecto/Desarrollo PlanERP → none |
| 342 | Finalizar plan de Salida a Producción | none → 2019-06-04 10:30 | none → 2019-06-04 15:30 |  | constraint none → finish no earlier than 2019-05-10 05:30; resources Administrador de Contrato - Cliente; Funcionarios Técnicos - Cliente; Gerente de Proyecto PlanERP; Líder del Proyecto/Desarrollo PlanERP; Analista de Calidad PlanERP → none |
| 343 | **Entrenamiento** | none → 2019-06-04 15:30 | none → 2019-06-12 16:30 |  |  |
| 344 | **Entrenamiento de Usuarios Funcionales y Certificación de Procesos** | none → 2019-06-04 15:30 | none → 2019-06-10 10:30 |  | resources Líder Funcional - Usuario Experto - Cliente; Usuarios Finales - Cliente; Funcionarios Técnicos - Cliente; Analista Procesos PlanERP; Desarrollador PlanERP; Consultor Especialista en Procesos de GADs PlanERP → none |
| 345 | 3.1 Compras Públicas | none → 2019-06-04 15:30 | none → 2019-06-05 10:30 |  |  |
| 346 | 6.2 Servicios Generales | none → 2019-06-05 10:30 | none → 2019-06-05 15:30 |  |  |
| 347 | 8.5 Gestión Jurídica - Financiera | none → 2019-06-05 15:30 | none → 2019-06-06 10:30 |  |  |
| 348 | 15.2 BI Financiero | none → 2019-06-06 10:30 | none → 2019-06-06 15:30 |  |  |
| 349 | 15.3 BI Administración del Talento Humano | none → 2019-06-06 15:30 | none → 2019-06-07 10:30 |  |  |
| 350 | 15.4 BI Compras Públicas | none → 2019-06-07 10:30 | none → 2019-06-07 15:30 |  |  |
| 351 | 15.9 Tablero de Control | none → 2019-06-07 15:30 | none → 2019-06-10 10:30 |  |  |

| ID | Task | Start | Finish | Other |
| --- | --- | --- | --- | --- |
| 352 | Entrenamiento de Usuario Técnicos | none → 2019-06-10 10:30 | none → 2019-06-12 16:30 | constraint none → finish no earlier than 2019-05-31 05:30; resources Funcionarios Técnicos - Cliente; Desarrollador PlanERP; Especialista Base de Datos PlanERP; Líder del Proyecto/Desarrollo PlanERP → none |
| 353 | **Preparación del Sistema** | none → 2019-06-12 16:30 | none → 2019-06-14 09:30 |  |
| 354 | Completar la Administración del Sistema | none → 2019-06-12 16:30 | none → 2019-06-13 13:30 | constraint none → finish no earlier than 2019-06-03 05:30; resources Funcionarios Técnicos - Cliente; Desarrollador PlanERP; Analista Procesos PlanERP → none |
| 355 | Comprobación de la Puesta a Producción | none → 2019-06-13 13:30 | none → 2019-06-14 09:30 | constraint none → finish no earlier than 2019-06-04 05:30; resources Funcionarios Técnicos - Cliente; Administrador de Contrato - Cliente; Analista de Calidad PlanERP; Líder del Proyecto/Desarrollo PlanERP → none |
| 356 | **Transición** | none → 2019-06-14 09:30 | none → 2019-06-18 11:30 |  |
| 357 | Finalizar Procesamiento de Sistemas Legados | none → 2019-06-14 09:30 | none → 2019-06-14 14:30 | constraint none → finish no earlier than 2019-06-04 05:30; resources Administrador de Contrato - Cliente; Líder Funcional - Usuario Experto - Cliente; Desarrollador PlanERP; Líder del Proyecto/Desarrollo PlanERP; Especialista Base de Datos PlanERP → none |
| 358 | Realizar la Salida a Producción - Carga Inicial y Configuración Inicial | none → 2019-06-14 14:30 | none → 2019-06-18 11:30 | constraint none → finish no earlier than 2019-06-11 05:30; resources Administrador de Contrato - Cliente; Líder Funcional - Usuario Experto - Cliente; Desarrollador PlanERP; Líder del Proyecto/Desarrollo PlanERP; Especialista Base de Datos PlanERP → none |
| 359 | Revisar la ETAPA del Proyecto | none → 2019-06-18 11:30 | none → 2019-06-18 14:30 | constraint none → finish no earlier than 2019-06-11 05:30; resources Administrador de Contrato - Cliente; Gerente de Proyecto PlanERP; Líder del Proyecto/Desarrollo PlanERP; Analista de Calidad PlanERP → none |
| 360 | HITO: FINALIZACION ETAPA 4 | none → 2019-06-18 14:30 | none → 2019-06-18 14:30 | constraint none → finish no earlier than 2019-06-11 05:30 |
| 361 | **ETAPA 5: Despliegue en Producción y Soporte Técnico - Módulos PRI** | none → 2019-06-21 08:30 | none → 2019-07-10 13:30 |  |
| 362 | **Soporte en Producción** | none → 2019-06-21 14:00 | none → 2019-07-04 11:00 |  |
| 363 | Soporte durante la Salida a Producción | none → 2019-06-21 14:00 | none → 2019-06-28 05:30 | constraint none → finish no earlier than 2019-06-28 05:30; resources Funcionarios Técnicos - Cliente; Desarrollador PlanERP; Analista Procesos PlanERP; Especialista Base de Datos PlanERP; Consultor Especialista en Procesos de GADs PlanERP → none |
| 364 | Resolver incidentes críticos | none → 2019-06-28 08:00 | none → 2019-07-02 14:00 | constraint none → finish no earlier than 2019-06-28 05:30; resources Funcionarios Técnicos - Cliente; Desarrollador PlanERP; Analista Procesos PlanERP; Especialista Base de Datos PlanERP; Consultor Especialista en Procesos de GADs PlanERP → none |
| 365 | Entregar el soporte y Administración al cliente | none → 2019-07-02 14:00 | none → 2019-07-04 11:00 | constraint none → finish no earlier than 2019-06-13 05:30; resources Funcionarios Técnicos - Cliente; Desarrollador PlanERP; Analista Procesos PlanERP; Especialista Base de Datos PlanERP; Consultor Especialista en Procesos de GADs PlanERP → none |
| 366 | **Mejora Continua** | none → 2019-06-21 08:30 | none → 2019-07-10 09:30 |  |
| 367 | Monitoreo del Sistema y Acompañamiento | none → 2019-06-21 08:30 | none → 2019-07-10 09:30 | constraint none → start no earlier than 2019-06-21 08:30; resources Administrador de Contrato - Cliente; Funcionarios Técnicos - Cliente; Líder Funcional - Usuario Experto - Cliente; Especialista Base de Datos PlanERP; Líder del Proyecto/Desarrollo PlanERP; Consultor Especialista en Procesos de GADs PlanERP → none |
| 368 | Ajustes y Configuraciones finales al Software acorde a necesidades Entidad | none → 2019-06-21 08:30 | none → 2019-07-10 09:30 | constraint none → start no earlier than 2019-06-21 08:30; resources Administrador de Contrato - Cliente; Funcionarios Técnicos - Cliente; Líder Funcional - Usuario Experto - Cliente; Especialista Base de Datos PlanERP; Líder del Proyecto/Desarrollo PlanERP; Consultor Especialista en Procesos de GADs PlanERP → none |
| 369 | **Cierre de la FASE 3 y Proyecto** | none → 2019-07-10 09:30 | none → 2019-07-10 13:30 |  |
| 370 | Reunión de Cierre de la FASE 3 y Proyecto | none → 2019-07-10 09:30 | none → 2019-07-10 13:30 | constraint none → start no earlier than 2019-07-10 08:30; resources Administrador de Contrato - Cliente; Líder Funcional - Usuario Experto - Cliente; Funcionarios Técnicos - Cliente; Gerente de Proyecto PlanERP; Líder del Proyecto/Desarrollo PlanERP; Analista de Calidad PlanERP → none |
| 371 | HITO: FIN DE LA FASE 3 y Proyecto | none → 2019-07-10 09:30 | none → 2019-07-10 09:30 | constraint none → start no earlier than 2019-07-10 08:30 |
